# C:\Users\chogu\Downloads\qualicenter

How a schedule from MS Project changed from version to version. A marks actual dates.

## Version 1 (saved 2024-05-13, file Qualicenter 85.mpp)

| ID | WBS | Task | Duration | Start | Finish | Predecessors | Complete | Total float | Constraint |
| --- | --- | --- | --- | --- | --- | --- | --- | --- | --- |
| 1 | 1 | **Sprint 85%** | 19d | 2024-04-24 A | 2024-05-15 |  | 94% | 0d |  |
| 2 | 1.1 | **Cliente** | 17.6d | 2024-04-24 A | 2024-05-14 A |  | 100% |  |  |
| 3 | 1.1.1 | **El sistema debe ser capaz de registrar el tiempo acumulado de la llamada desde el momento en que el cliente marca al número de atención.** | 14.6d | 2024-04-29 A | 2024-05-14 A |  | 100% |  |  |
| 4 | 1.1.1.1 | **Recibir la llamada con Amazon Connect.** | 1d | 2024-04-29 A | 2024-04-29 A |  | 100% |  |  |
| 5 |  | Crear la instancia de Amazon Connect en una cuenta de AWS. | 1d | 2024-04-29 A | 2024-04-29 A |  | 100% |  | start no earlier than 2024-04-29 |
| 6 |  | Reclamar un número de teléfono y asignarlo a la instancia | 0d | 2024-04-29 A | 2024-04-29 A |  | 100% |  | start no earlier than 2024-04-29 |
| 7 |  | Configurar la instancia de Amazon Connect para recibir llamadas entrantes con un flujo predeterminado. | 1d | 2024-04-29 A | 2024-04-29 A | 6 | 100% |  |  |
| 8 | 1.1.1.2 | **Tener el control de la llamada.** | 2.1d | 2024-04-30 A | 2024-05-02 A |  | 100% |  |  |
| 9 |  | Crear las cuentas de agentes y administradores, con sus atributos respectivos como nombres y horarios. | 0.5d | 2024-04-30 A | 2024-04-30 A | 7 | 100% |  |  |
| 10 |  | Implementar funcionalidades de colas | 0.5d | 2024-04-30 A | 2024-04-30 A | 9 | 100% |  |  |
| 11 |  | Implementar ruteos y prioridades de colas. | 0d | 2024-04-30 A | 2024-04-30 A | 10 | 100% |  |  |
| 12 |  | Crear un flujo propio de control de llamadas | 1d | 2024-05-01 A | 2024-05-01 A | 11 | 100% |  |  |
| 13 |  | Asignar el flujo al número reclamado y asignado a la instancia | 0.1d | 2024-05-02 A | 2024-05-02 A | 12 | 100% |  |  |
| 14 | 1.1.1.3 | **Indicarle a Connect iniciar el registro del tiempo de la llamada.** | 7.5d | 2024-05-02 A | 2024-05-09 A | 13 | 100% |  |  |
| 15 |  | Asignar permisos a Amazon Connect de acceso a Lambda mediante un perfil de IAM | 0.5d | 2024-05-02 A | 2024-05-02 A | 13 | 100% |  |  |
| 16 |  | Implementar un atributo de Amazon Connect de duración de llamada para las llamadas finalizadas, el cual utilizará la API de Amazon Connect Flow para en cualquier momento obtener la duración total de una llamada finalizada. | 3d | 2024-05-02 A | 2024-05-05 A | 15 | 100% |  |  |
| 17 |  | Adicionalmente para cada llamada capturar detalles importantes como el número del llamante, el tiempo y el asunto. Guardarlos como atributos en el flujo de llamada en la instancia de Amazon Connect. | 0d | 2024-05-06 A | 2024-05-06 A | 16 | 100% |  |  |
| 18 |  | Iniciar un temporizador para cada llamada que se reciba, para así implementar una función Lambda en el flujo de llamadas, el cual podrá ser llamada en cualquier momento para obtener la duración en tiempo real de manera precisa para cada llamada. | 3d | 2024-05-06 A | 2024-05-09 A | 17 | 100% |  |  |
| 19 | 1.1.1.4 | **Recuperar el tiempo registrado por connect.** | 4d | 2024-05-09 A | 2024-05-14 A |  | 100% |  |  |
| 20 |  | Implementar en la interfaz de usuario la duración acumulada de la llamada para los agentes y administradores relevantes | 3d | 2024-05-09 A | 2024-05-13 A | 18 | 100% |  |  |
| 21 |  | Realizar pruebas exhaustivas invocando al API desde la interfaz, para garantizar el seguimiento correcto de la duración y la recuperación de datos de llamada. Validar contra diferentes escenarios como transferencias de llamada | 1d | 2024-05-13 A | 2024-05-14 A | 20 | 100% |  |  |
| 22 | 1.1.2 | **El sistema debe buscar un agente disponible para atender la llamada, si no hay uno entonces se deberá colocar la llamada en una cola de esperal. . El sistema debe identificar al cliente mediante su número de teléfono, si el cliente está registrado con una** | 14.5d | 2024-04-29 A | 2024-05-14 A |  | 100% |  |  |
| 23 | 1.1.2.1 | **Recuperar el número del cliente.** | 1d | 2024-04-29 A | 2024-04-29 A |  | 100% |  |  |
| 24 |  | Asignar un atributo en el flujo de Amazon Connect que guarde el número del cliente para cada llamada | 1d | 2024-04-29 A | 2024-04-29 A |  | 100% |  |  |
| 25 | 1.1.2.2 | **Comparar el número con los clientes para encontrar al cliente.** | 5d | 2024-05-03 A | 2024-05-07 A | 13 | 100% |  |  |
| 26 |  | Montar y llenar una base de datos para relacionar números telefónicos de los clientes a datos individuales como nombre y número de póliza | 2d | 2024-05-03 A | 2024-05-04 A | 13 | 100% |  |  |
| 27 |  | Implementar una función Lambda en el flujo de la instancia de Amazon Connect, el cual comparará el número de un cliente guardado en un atributo con los números guardados en la base de datos. | 1d | 2024-05-07 A | 2024-05-07 A | 26 | 100% |  |  |
| 28 | 1.1.2.3 | **Recuperar la información de ese cliente.** | 1d | 2024-05-10 A | 2024-05-10 A |  | 100% |  |  |
| 29 |  | Dentro de la función Lambda en el flujo de la instancia de Amazon Connect, después de hacer un match con los datos de un cliente y su número, regresará los datos del cliente de la base de datos para así guardarlos como atributo en la instancia. | 1d | 2024-05-10 A | 2024-05-10 A | 27 | 100% |  |  |
| 30 | 1.1.2.4 | **Si todos los agentes están ocupados, notificarle al cliente que está en la cola de espera.** | 0.5d | 2024-05-14 A | 2024-05-14 A |  | 100% |  |  |
| 31 |  | Modificar las colas de espera de la instancia de Amazon Connect para que ocurran distintos escenarios si la cola está llena. | 0d | 2024-05-14 A | 2024-05-14 A | 29 | 100% |  |  |
| 32 |  | Si la cola está llena o no hay agentes disponibles, entonces reproducir un audio que indique que no hay un agente disponible reproducido en un loop. | 0d | 2024-05-14 A | 2024-05-14 A | 31 | 100% |  |  |
| 33 |  | Si la cola no está llena y hay agentes disponibles, rutear la llamada al flujo propio de la instancia | 0.5d | 2024-05-14 A | 2024-05-14 A | 32 | 100% |  |  |
| 34 | 1.1.3 | **El sistema debe mostrar al agente los datos del cliente, incluyendo nombre, edad, datos de póliza y tiempo acumulado de llamada .l agente debe recibir una notificación de la llamada entrante junto con una cuenta regresiva antes de que pueda volver a reali** | 10.5d | 2024-05-03 A | 2024-05-14 A | 13 | 100% |  |  |
| 35 | 1.1.3.1 | **Desplegar toda la información del cliente.** | 4d | 2024-05-03 A | 2024-05-06 A | 13 | 100% |  |  |
| 36 |  | Configurar el API de Amazon Connect y las funciones Lambda asignadas al flujo de llamada para recuperar datos del cliente | 1d | 2024-05-03 A | 2024-05-03 A | 13 | 100% |  |  |
| 37 |  | Implementar una interfaz de usuario en la aplicación del agente para mostrar los datos del cliente, incluyendo nombre, edad, datos de póliza y tiempo acumulado de llamada. | 1d | 2024-05-06 A | 2024-05-06 A | 36 | 100% |  |  |
| 38 | 1.1.3.2 | **Generar una alerta en la pantalla del agente sobre una llamada entrante** | 3.5d | 2024-05-09 A | 2024-05-13 A |  | 100% |  |  |
| 39 |  | Configurar el API de Amazon Connect para crear una interfaz “Agent Workspace” dentro de la aplicación | 1d | 2024-05-09 A | 2024-05-09 A | 37 | 100% |  |  |
| 40 |  | Generar una alerta en la pantalla del agente sobre una llamada entrante, utilizando mensajes emergentes y sonidos audibles. | 0.5d | 2024-05-13 A | 2024-05-13 A | 39 | 100% |  |  |
| 41 | 1.1.3.3 | **Establecer la conexión entre el agente y el cliente.** | 1d | 2024-05-13 A | 2024-05-14 A |  | 100% |  |  |
| 42 |  | Implementar la funcionalidad de conexión entre el agente y el cliente, utilizando las funcionalidades del API de Amazon Connect y la interfaz “Agent Workspace”. | 0.5d | 2024-05-13 A | 2024-05-13 A | 40 | 100% |  |  |
| 43 |  | Asignar a cada perfil de Agente en la instancia de Amazon Connect un tiempo “After-Call-Work” | 0d | 2024-05-14 A | 2024-05-14 A | 42 | 100% |  |  |
| 44 |  | Mostrar el temporizador “After-Call-Work” en la aplicación después de desconectar cada llamada. | 0.5d | 2024-05-14 A | 2024-05-14 A | 43 | 100% |  |  |
| 45 | 1.1.4 | **Se registra, por llamada, el analisis sentimental y la transcripción en tiempo real cuando la conexión entre el cliente y el agente comienza** | 15d | 2024-04-24 A | 2024-05-10 A |  | 100% |  |  |
| 46 | 1.1.4.1 | **Inicio una llamada entre agente y cliente** | 8d | 2024-04-24 A | 2024-05-03 A |  | 100% |  |  |
| 47 |  | Configurar Amazon Connect par amanejar llamadas entrantes | 5d | 2024-04-24 A | 2024-04-30 A |  | 100% |  |  |
| 48 |  | Hacer que el sistema pueda identificar usuarios y conectar las llamadas correctamente entre agente y cliente | 1d | 2024-05-01 A | 2024-05-01 A | 47 | 100% |  |  |
| 49 |  | Integrar el API necesario para capturar el audio de la llamada en tiempo real | 1d | 2024-05-03 A | 2024-05-03 A |  | 100% |  |  |
| 50 | 1.1.4.2 | **Se registra el análisis sentimental del cliente** | 6d | 2024-05-03 A | 2024-05-08 A |  | 100% |  |  |
| 51 |  | Aprender a obtener el analisis sentimental | 1d | 2024-05-03 A | 2024-05-03 A |  | 100% |  |  |
| 52 |  | Desarrollar el backend para enviar texto transcrito (del audio) al servicio de análisis de sentimientos | 3d | 2024-05-06 A | 2024-05-08 A |  | 100% |  |  |
| 53 |  | Configurar la integración para que cada segmento de texto transcrito se envíe al servicio de análisis tan pronto como esté disponible. | 2d | 2024-05-07 A | 2024-05-08 A |  | 100% |  |  |
| 54 | 1.1.4.3 | **Se registra la transcripción en tiempo real** | 3d | 2024-05-08 A | 2024-05-10 A |  | 100% |  |  |
| 55 |  | Verificar si se necesita usar Amazon Transcribe y aprenderlo, o si basta con Amazon Comprehend | 1d | 2024-05-08 A | 2024-05-08 A |  | 100% |  |  |
| 56 |  | Configurar Amazon Connect para enviar un audio | 1d | 2024-05-09 A | 2024-05-09 A | 55 | 100% |  |  |
| 57 |  | Crear función para recibir y procesar el texto transcrito. | 1d | 2024-05-10 A | 2024-05-10 A | 56 | 100% |  |  |
| 58 | 1.2 | **Agente** | 18d | 2024-04-25 A | 2024-05-15 |  | 96% | 0d |  |
| 59 | 1.2.1 | **El agente visualiza un script del dialogo que va a tener con el cliente:** | 18d | 2024-04-25 A | 2024-05-15 |  | 98% | 0d |  |
| 60 | 1.2.1.1 | **Tener un panel visible donde se colocara el script.** | 2d | 2024-04-25 A | 2024-04-26 A |  | 100% |  |  |
| 61 |  | Realizar el front-end del panel donde se colocara el script. | 2d | 2024-04-25 A | 2024-04-26 A |  | 100% |  |  |
| 62 | 1.2.1.2 | **Colocar un script dummy en el panel** | 2d | 2024-04-30 A | 2024-05-01 A |  | 100% |  |  |
| 63 |  | Crear un script con datos dummy directo en el front-end | 2d | 2024-04-30 A | 2024-05-01 A | 61 | 100% |  |  |
| 64 | 1.2.1.3 | **Visualizar datos reales en el script.** | 8d | 2024-05-03 A | 2024-05-10 A |  | 100% |  |  |
| 65 |  | Crear una conexión a la Base de Datos para traer por la API los datos del cliente y colocarlos en tiempo real en el script. | 8d | 2024-05-03 A | 2024-05-10 A | 63 | 100% |  |  |
| 66 | 1.2.1.4 | **Colocar los campos de registro** | 4d | 2024-05-12 A | 2024-05-15 |  | 90% | 0d |  |
| 67 |  | Crear y hacer funcionales los campos de registro de la información del cliente | 4d | 2024-05-12 A | 2024-05-15 | 65 | 90% | 0d |  |
| 68 | 1.2.2 | **Para que el agente, durante la llamada, conozca la información del cliente, existe un apartado de información del cliente que será desplegado tal y como se especifica EN EL REQUERIMIENTO NUMERO 3 DE HERRAMIENTAS EXTERNAS** | 6d | 2024-04-29 A | 2024-05-04 A |  | 100% |  |  |
| 69 | 1.2.2.1 | **Visualiza un apartado con datos dummy del cliente** | 3d | 2024-04-29 A | 2024-05-01 A |  | 100% |  |  |
| 70 |  | Los datos dummy del cliente se visualizan en el Frontend del panel | 3d | 2024-04-29 A | 2024-05-01 A |  | 100% |  |  |

| ID | WBS | Task | Duration | Start | Finish | Predecessors | Complete | Total float | Constraint |
| --- | --- | --- | --- | --- | --- | --- | --- | --- | --- |
| 71 | 1.2.2.2 | **Visualiza un apartado con los datos reales del cliente en tiempo real** | 3d | 2024-05-02 A | 2024-05-04 A |  | 100% |  |  |
| 72 |  | Se crea una conexión a la base de datos y los datos del cliente se visualizan en tiempo real | 3d | 2024-05-02 A | 2024-05-04 A | 70 | 100% |  |  |
| 73 | 1.2.3 | **Para facilitar el envío de los diferentes servicios (grúa, ambulancia y ajustador), el agente tiene un espacio en su pantalla principal para ingresar la ubicación del cliente para que el envío de los servicios se hagan a esa dirección.** | 5d | 2024-04-29 A | 2024-05-03 A |  | 100% |  |  |
| 74 | 1.2.3.1 | **Espacio para escribir la dirección del cliente:** | 5d | 2024-04-29 A | 2024-05-03 A |  | 100% |  |  |
| 75 |  | Crear archivo CSS | 0.5d | 2024-04-29 A | 2024-04-29 A |  | 100% |  |  |
| 76 |  | Crear archivo JS | 0.5d | 2024-04-29 A | 2024-04-29 A | 75 | 100% |  |  |
| 77 |  | Diseñar el componente en el espacio designado de la aplicación | 1d | 2024-04-30 A | 2024-04-30 A | 76 | 100% |  |  |
| 78 |  | Programar la funcionalidad del FrontEnd | 3d | 2024-05-01 A | 2024-05-03 A | 77 | 100% |  |  |
| 79 | 1.2.4 | **Con los datos del cliente y a partir de sus pólizas, se despliega un menú que muestra los vehículos registrados del cliente.** | 18d | 2024-04-25 A | 2024-05-15 |  | 94% | 0d |  |
| 80 | 1.2.4.1 | **Visualiza un apartado con datos dummy del cliente** | 4d | 2024-04-25 A | 2024-04-30 A |  | 100% |  |  |
| 81 |  | Los datos dummy del cliente se visualizan en el Frontend del panel | 4d | 2024-04-25 A | 2024-04-30 A |  | 100% |  |  |
| 82 | 1.2.4.2 | **Visualiza un apartado con los datos reales del cliente en tiempo rea** | 12d | 2024-05-03 A | 2024-05-15 |  | 93% | 0d |  |
| 83 |  | Se crea una conexión a la base de datos. | 6d | 2024-05-03 A | 2024-05-08 A |  | 100% |  |  |
| 84 |  | Dependiendo de la póliza del cliente con un condicional despliega información sobre sus autos | 6d | 2024-05-09 A | 2024-05-15 | 83 | 85% | 0d |  |
| 85 | 1.2.5 | **En caso de necesitar proveer una ayuda rápida al cliente, el agente tiene una sección en su pantalla principal con 2 botones, uno para mandar ambulancia y otro para enviar grúa.** | 1d | 2024-05-04 A | 2024-05-04 A | 78 | 100% |  |  |
| 86 | 1.2.5.1 | **Diseñar y posicionar los botones correctamente:** | 1d | 2024-05-04 A | 2024-05-04 A |  | 100% |  |  |
| 87 |  | Crear archivo CSS | 0.5d | 2024-05-04 A | 2024-05-04 A |  | 100% |  |  |
| 88 |  | Crear archivo JS | 0.3d | 2024-05-04 A | 2024-05-04 A | 87 | 100% |  |  |
| 89 |  | Diseñar los componentes en el espacio designado de la aplicación | 0.2d | 2024-05-04 A | 2024-05-04 A | 88 | 100% |  |  |
| 90 | 1.2.6 | **Durante su conversación con el cliente, el agente le pregunta al cliente si necesita el servicio de una grúa, si el cliente dice que sí, deberá oprimir el botón "Mandar Grúa", este botón mandará una alerta con la ubicación del cliente y el agente le dirá** | 9d | 2024-05-05 A | 2024-05-14 A | 89 | 100% |  |  |
| 91 | 1.2.6.1 | **Recuperar el número del cliente:** | 2d | 2024-05-05 A | 2024-05-06 A |  | 100% |  |  |
| 92 |  | API para recuperar el número del cliente | 1d | 2024-05-05 A | 2024-05-05 A |  | 100% |  |  |
| 93 |  | Conexión de la funcionalidad del botón con el BackEnd | 1d | 2024-05-06 A | 2024-05-06 A | 92 | 100% |  |  |
| 94 | 1.2.6.2 | **Recuperar la dirección del cliente** | 1d | 2024-05-07 A | 2024-05-07 A |  | 100% |  |  |
| 95 |  | Funciónalidad que reciba la dirección desde el FrontEnd | 1d | 2024-05-07 A | 2024-05-07 A | 93 | 100% |  |  |
| 96 | 1.2.6.3 | **Mandar un SMS con la alerta** | 6d | 2024-05-08 A | 2024-05-14 A |  | 100% |  |  |
| 97 |  | Configurar instancia Amazon SNS | 2d | 2024-05-08 A | 2024-05-09 A | 95 | 100% |  |  |
| 98 |  | API para mandar el mensaje | 2d | 2024-05-10 A | 2024-05-12 A | 97 | 100% |  |  |
| 99 |  | Función Lambda para mandar el mensaje | 2d | 2024-05-13 A | 2024-05-14 A | 98 | 100% |  |  |
| 100 | 1.2.7 | **Durante su conversación con el cliente, el agente le pregunta al cliente si necesita asistencia médica, si el cliente dice que sí, deberá oprimir el botón "Mandar Ambulancia", este botón mandará una alerta con la ubicación del cliente y el agente le dirá** | 9d | 2024-05-05 A | 2024-05-14 A | 89 | 100% |  |  |
| 101 | 1.2.7.1 | **Recuperar el número del cliente:** | 2d | 2024-05-05 A | 2024-05-06 A |  | 100% |  |  |
| 102 |  | API para recuperar el número del cliente | 1d | 2024-05-05 A | 2024-05-05 A |  | 100% |  |  |
| 103 |  | Conexión de la funcionalidad del botón con el BackEnd | 1d | 2024-05-06 A | 2024-05-06 A | 102 | 100% |  |  |
| 104 | 1.2.7.2 | **Recuperar la dirección del cliente** | 1d | 2024-05-07 A | 2024-05-07 A |  | 100% |  |  |
| 105 |  | Funciónalidad que reciba la dirección desde el FrontEnd | 1d | 2024-05-07 A | 2024-05-07 A | 103 | 100% |  |  |
| 106 | 1.2.7.3 | **Mandar un SMS con la alerta** | 6d | 2024-05-08 A | 2024-05-14 A |  | 100% |  |  |
| 107 |  | Configurar instancia Amazon SNS | 2d | 2024-05-08 A | 2024-05-09 A | 105 | 100% |  |  |
| 108 |  | API para mandar el mensaje | 2d | 2024-05-10 A | 2024-05-12 A | 107 | 100% |  |  |
| 109 |  | Función Lambda para mandar el mensaje | 2d | 2024-05-13 A | 2024-05-14 A | 108 | 100% |  |  |
| 110 | 1.2.8 | **Cuando se selecciona la opción de enviar ayuda (requerimiento 5, 6), automáticamente se manda un mensaje de texto al número del cliente en llamada con la alerta de ayuda en camino.** | 10d | 2024-05-04 A | 2024-05-14 |  | 93% | 1d |  |
| 111 | 1.2.8.1 | **Ser capaz de generar una liga de un servicio de mapas (Como google maps) que contenga una dirección.** | 1d | 2024-05-04 A | 2024-05-04 A |  | 100% |  |  |
| 112 |  | Investigar al respecto, ya sea una API u otra forma de saberlo. | 1d | 2024-05-04 A | 2024-05-04 A | 73 | 100% |  |  |
| 113 |  | Generar enlaces a partir de un script que reciba como input una dirección y retorne un enlace. | 1d | 2024-05-04 A | 2024-05-04 A | 73 | 100% |  |  |
| 114 | 1.2.8.2 | **Ser capaz de enviar mensajes de texto a través de un script de JS.** | 2d | 2024-05-04 A | 2024-05-05 A |  | 100% |  |  |
| 115 |  | Investigar sobre alguna librería o API que me permita enviar mensajes a un número dado. | 1d | 2024-05-04 A | 2024-05-04 A | 73 | 100% |  |  |
| 116 |  | Escribir un código capaz de enviar mensajes a un número dado. | 1d | 2024-05-05 A | 2024-05-05 A | 115 | 100% |  |  |
| 117 |  | Incluir un mensaje predeterminado e incluir el enlace alcanzado con el milestone | 1d | 2024-05-05 A | 2024-05-05 A | 115 | 100% |  |  |
| 118 | 1.2.8.3 | **Enviar automáticamente mensajes al ingresar la dirección desde la página durante la llamada.** | 10d | 2024-05-04 A | 2024-05-14 |  | 90% | 1d |  |
| 119 |  | A partir de la finalización del requerimiento 3 con el ingreso de la dirección en la página final, enlazar el script de mensaje de la milestone 2 con la funcionalidad de un botón de submit. | 10d | 2024-05-04 A | 2024-05-14 | 73 | 90% | 1d |  |
| 120 | 1.2.9 | **En la sección izquierda, de la pantalla del agente, se muestra una transcripción en tiempo real de la llamada en curso** | 11d | 2024-04-30 A | 2024-05-10 |  | 99% |  |  |
| 121 | 1.2.9.1 | **Se recupera la transcripción registrada de la llamada** | 8d | 2024-04-30 A | 2024-05-07 A |  | 100% |  |  |
| 122 |  | Recuperar la transcripción de la llamada | 1d | 2024-04-30 A | 2024-04-30 A |  | 100% |  |  |
| 123 |  | Desarrollar un sistema de bufferización para almacenar temporalmente las transcripciones mientras son procesadas y antes de ser mostradas. | 6d | 2024-05-01 A | 2024-05-06 A | 122 | 100% |  |  |
| 124 | 1.2.9.2 | **Se muestra la transcripción de la llamada** | 10d | 2024-04-30 A | 2024-05-09 A |  | 100% |  |  |
| 125 |  | Diseñar la interfaz donde se mostrarán las transcripciones | 1d | 2024-04-30 A | 2024-04-30 A |  | 100% |  |  |
| 126 |  | Crear una aplicación en React para crear los componentes funcionales necesarios y para actualizaciones en tiempo real | 1d | 2024-05-01 A | 2024-05-01 A | 125 | 100% |  |  |
| 127 |  | La transcripción mostrada esté sincronizada con el audio de la llamada, actualizando la pantalla a medida que se disponga | 8d | 2024-05-02 A | 2024-05-09 A | 126 | 100% |  | finish no earlier than 2024-05-09 |
| 128 |  | Crear API endpoints para recuperar las transcripciones desde el almacenamiento temporal o buffer y enviarlas al frontend de la aplicación del agente. | 9d | 2024-05-01 A | 2024-05-09 A | 122 | 100% |  | finish no earlier than 2024-05-09 |
| 129 | 1.2.9.3 | **Se anima la transcripción para que sea claramente legible** | 2d | 2024-05-03 A | 2024-05-04 A |  | 100% |  |  |
| 130 |  | Crear y diseñar el archivo CSS o bibliotecas de JavaScript para animar el scroll del texto | 2d | 2024-05-03 A | 2024-05-04 A |  | 100% |  |  |
| 131 | 1.2.10 | **Al estar dentro de una llamada con el cliente, el agente puede ver los botones que le dan la opción de silenciar o colgar la llamada. Al silenciarla, el cliente no será posible de escuchar al agente hasta que este deshabilite esta opción. Al colgar la lla** | 4d | 2024-05-02 A | 2024-05-06 |  | 98% | 8.9d |  |
| 132 | 1.2.10.1 | **Visualizar la llamada al conectar Amazon Connect con la página.** | 3d | 2024-05-02 A | 2024-05-05 A |  | 100% |  |  |
| 133 |  | Una vez finalizado el funcionamiento y flujo de nuestra instancia de Connect, incluirla en nuestra página web en las pantallas correspondientes. | 1d | 2024-05-02 A | 2024-05-03 A | 8 | 100% |  |  |
| 134 |  | Verificar el funcionamiento deseado de la llamada al realizar pruebas. | 1d | 2024-05-03 A | 2024-05-04 A | 133 | 100% |  |  |
| 135 |  | Observar el comportamiento del flujo de la llamada establecido. | 1d | 2024-05-04 A | 2024-05-05 A | 134 | 100% |  |  |
| 136 | 1.2.10.2 | **Utilizar eficientemente los botones incluidos en Amazon Connect para finalizar y silenciar llamadas.** | 1d | 2024-05-05 A | 2024-05-06 |  | 95% | 8.9d |  |
| 137 |  | Al ver la llamada, se visualizan los botones de colgar y silenciar. | 1d | 2024-05-05 A | 2024-05-06 | 135 | 90% | 8.9d |  |
| 138 |  | los botones cumplen con su función. | 1d | 2024-05-05 A | 2024-05-06 A | 135 | 100% |  |  |
| 139 | 1.2.11 | **Botón de solicitud de ayuda en la pantalla principal. Al dar tap sobre él se desplegará un cuadro de texto para ingresar la descripción del problema y un botón que enviará la solicitud de ayuda, y un mensaje de confirmación al dar tap sobre el botón.** | 13d | 2024-05-01 A | 2024-05-14 | 77 | 96% | 1d |  |
| 140 | 1.2.11.1 | **Mostrar el botón de ayuda en la pantalla principal del agente** | 13d | 2024-05-01 A | 2024-05-14 A |  | 100% |  |  |

| ID | WBS | Task | Duration | Start | Finish | Predecessors | Complete | Total float | Constraint |
| --- | --- | --- | --- | --- | --- | --- | --- | --- | --- |
| 141 |  | Implementar la interfaz de usuario para incluir el botón de ayuda en la pantalla principal. | 9d | 2024-05-01 A | 2024-05-14 A |  | 100% |  |  |
| 142 |  | Verificar que el botón sea visible y esté correctamente ubicado. | 0d | 2024-05-01 A | 2024-05-01 A | 141 | 100% |  |  |
| 143 |  | Confirmar que el botón responda a eventos de tap o clic. | 0d | 2024-05-01 A | 2024-05-01 A | 142 | 100% |  |  |
| 144 |  | Agregar un controlador de eventos al botón de ayuda. | 1d | 2024-05-02 A | 2024-05-02 A | 143 | 100% |  |  |
| 145 |  | Cuando el usuario toque el botón, enviar un mensaje a la consola para indicar que se ha activado el botón de ayuda. | 0d | 2024-05-02 A | 2024-05-02 A | 144 | 100% |  |  |
| 146 | 1.2.11.2 | **Desplegar una ventana emergente al darle tap al botón:** | 2d | 2024-05-03 A | 2024-05-04 A |  | 100% |  |  |
| 147 |  | Crear una ventana emergente que se muestre al tocar el botón de ayuda. | 1d | 2024-05-03 A | 2024-05-03 A | 145 | 100% |  |  |
| 148 |  | Diseñar la interfaz de la ventana emergente para incluir un cuadro de texto y un botón de enviar. | 2d | 2024-05-03 A | 2024-05-04 A | 145 | 100% |  |  |
| 149 | 1.2.11.3 | **Guardar un mensaje escrito por el usuario en el cuadro de texto:** | 2d | 2024-05-05 A | 2024-05-06 A |  | 100% |  |  |
| 150 |  | Implementar la lógica para capturar el texto ingresado por el usuario en el cuadro detexto. | 1d | 2024-05-05 A | 2024-05-05 A | 148 | 100% |  |  |
| 151 |  | Verificar que el texto se almacene correctamente en una variable o estructura de datos. | 1d | 2024-05-05 A | 2024-05-05 A | 148 | 100% |  |  |
| 152 |  | Agregar un controlador de eventos al botón de enviar en la ventana emergente. | 1d | 2024-05-06 A | 2024-05-06 A | 151 | 100% |  |  |
| 153 |  | Al tocar el botón de enviar, enviar el mensaje almacenado en la consola. | 1d | 2024-05-06 A | 2024-05-06 A | 151 | 100% |  |  |
| 154 | 1.2.11.4 | **Registrar el mensaje guardado en la base de datos:** | 3d | 2024-05-07 A | 2024-05-09 A |  | 100% |  |  |
| 155 |  | Configurar el controlador en el API para insertar el mensaje en la BD. | 2d | 2024-05-07 A | 2024-05-08 A | 153 | 100% |  |  |
| 156 |  | Configurar la conexión al endpoint, en la aplicación | 1d | 2024-05-09 A | 2024-05-09 A | 155 | 100% |  |  |
| 157 |  | Escribir la lógica para insertar el mensaje en la base de datos haciendo uso del endpoint. | 1d | 2024-05-09 A | 2024-05-09 A | 155 | 100% |  |  |
| 158 | 1.2.11.5 | **Desplegar un mensaje de confirmación al terminar este proceso:** | 1d | 2024-05-10 A | 2024-05-10 |  | 50% | 4d |  |
| 159 |  | Diseñar un mensaje de confirmación que se muestre al usuario después de guardar el mensaje en la base de datos. | 1d | 2024-05-10 A | 2024-05-10 | 157 | 50% | 4d |  |
| 160 |  | Mostrar el mensaje de confirmación en la pantalla principal del agente una vez que se utilice el botón de enviar. | 1d | 2024-05-10 A | 2024-05-10 | 157 | 50% | 4d |  |
| 161 | 1.2.12 | **Ícono que cambia de color de acuerdo a los resultados del análisis sentimental del cliente. Se mantiene en verde si el cliente está feliz y tranquilo, amarillo si empieza a ponerse impaciente, y rojo si está enojado o frustrado.** | 6d | 2024-04-30 A | 2024-05-05 A | 7 | 100% |  |  |
| 162 | 1.2.12.1 | **El ícono se muestra con sus 3 colores (verde, amarillo, rojo).** | 1d | 2024-04-30 A | 2024-04-30 A |  | 100% |  |  |
| 163 |  | Se crea el componente para el ícono. | 1d | 2024-04-30 A | 2024-04-30 A | 7 | 100% |  |  |
| 164 |  | Se posiciona el componente dentro de la página. | 1d | 2024-04-30 A | 2024-04-30 A | 7 | 100% |  |  |
| 165 |  | El componente se puede mostrar en 3 colores (verde, rojo, amarillo). | 1d | 2024-04-30 A | 2024-04-30 A | 7 | 100% |  |  |
| 166 |  | El componente no presenta ningún fallo. | 1d | 2024-04-30 A | 2024-04-30 A | 7 | 100% |  |  |
| 167 | 1.2.12.2 | **El componente se ha vinculado con éxito a consultas en la base de datos y puede comunicarse con ella.** | 2d | 2024-05-01 A | 2024-05-02 A |  | 100% |  |  |
| 168 |  | Se implementa función para hacer que el componente cambie de color. | 0.5d | 2024-05-01 A | 2024-05-01 A | 166 | 100% |  |  |
| 169 |  | Se establecen parámetros dentro de la función según la información que se va a adquirir. | 1d | 2024-05-01 A | 2024-05-01 A | 166 | 100% |  |  |
| 170 |  | Se crea una rutina para recibir la información pertinente de la base de datos. | 1d | 2024-05-02 A | 2024-05-02 A | 169 | 100% |  |  |
| 171 |  | Se reciben los datos que necesita la función sin errores. | 1d | 2024-05-02 A | 2024-05-02 A | 169 | 100% |  |  |
| 172 | 1.2.12.3 | **El componente cumple con todas sus funcionalidades al usar datos pre-fabricados.** | 1d | 2024-05-03 A | 2024-05-03 A |  | 100% |  |  |
| 173 |  | Se generan datos pre-fabricados de prueba. 3.2 La función del componente recibe los datos. | 1d | 2024-05-03 A | 2024-05-03 A | 171 | 100% |  |  |
| 174 |  | La función del componente hace que el ícono cambie de color a partir de los datos. | 1d | 2024-05-03 A | 2024-05-03 A | 171 | 100% |  |  |
| 175 |  | No hay errores en el color mostrado. | 1d | 2024-05-03 A | 2024-05-03 A | 171 | 100% |  |  |
| 176 | 1.2.12.4 | **El componente cumple con todas sus funcionalidades en una llamada de prueba en tiempo real.** | 2d | 2024-05-04 A | 2024-05-05 A |  | 100% |  |  |
| 177 |  | Se realizan llamadas en tiempo real. | 1d | 2024-05-04 A | 2024-05-04 A | 175 | 100% |  |  |
| 178 |  | El componente recibe información adecuadamente. | 1d | 2024-05-05 A | 2024-05-05 A | 177 | 100% |  |  |
| 179 |  | El componente cambia de color adecuadamente. | 1d | 2024-05-05 A | 2024-05-05 A | 177 | 100% |  |  |
| 180 |  | No hay errores en el color mostrado. | 1d | 2024-05-05 A | 2024-05-05 A | 177 | 100% |  |  |
| 181 | 1.2.13 | **Apartado de tiempo que muestra la duración de la llamada en tiempo real. Cambia de color de acuerdo a que tan cercano está al límite pre-establecido. Verde si está debajo del límite (2 minutos y medio o menos), amarillo si empieza a acercarse (2 minutos y** | 15d | 2024-04-30 A | 2024-05-15 A |  | 100% |  |  |
| 182 | 1.2.13.1 | **El componente se muestra con sus 3 colores (verde, amarillo, rojo).** | 2d | 2024-04-30 A | 2024-05-01 A |  | 100% |  |  |
| 183 |  | Se crea el componente para el contador de tiempo de la llamada. | 1d | 2024-04-30 A | 2024-04-30 A |  | 100% |  | start no earlier than 2024-04-30 |
| 184 |  | Se posiciona el componente dentro de la página. | 1d | 2024-05-01 A | 2024-05-01 A | 183 | 100% |  |  |
| 185 |  | El componente se puede mostrar en 3 colores (verde, rojo, amarillo). | 1d | 2024-05-01 A | 2024-05-01 A | 183 | 100% |  |  |
| 186 |  | El componente no presenta ningún fallo. | 1d | 2024-05-01 A | 2024-05-01 A | 183 | 100% |  |  |
| 187 | 1.2.13.2 | **El componente se ha vincluado con éxito a consultas en la base de datos y se comunica con ella.** | 4d | 2024-05-02 A | 2024-05-05 A |  | 100% |  |  |
| 188 |  | Se implementa función para hacer que el componente cambie de color. | 1d | 2024-05-02 A | 2024-05-02 A | 186 | 100% |  |  |
| 189 |  | Se establecen parámetros dentro de la función según la información que se va a adquirir. | 1d | 2024-05-03 A | 2024-05-03 A | 188 | 100% |  |  |
| 190 |  | Se crea una rutina para recibir la información pertinente de la base de datos. | 1d | 2024-05-04 A | 2024-05-04 A | 189 | 100% |  |  |
| 191 |  | Se reciben los datos que necesita la función sin errores. | 1d | 2024-05-05 A | 2024-05-05 A | 190 | 100% |  |  |
| 192 | 1.2.13.3 | **El componente despliega el tiempo de la llamada exitósamente.** | 4d | 2024-05-06 A | 2024-05-09 A |  | 100% |  |  |
| 193 |  | Se realizan llamadas de prueba. | 1d | 2024-05-06 A | 2024-05-06 A | 191 | 100% |  |  |
| 194 |  | La función del componente recibe los datos. | 1d | 2024-05-07 A | 2024-05-07 A | 193 | 100% |  |  |
| 195 |  | La función del componente hace que muestre el tiempo actual de la llamada. | 1d | 2024-05-08 A | 2024-05-08 A | 194 | 100% |  |  |
| 196 |  | No hay errores en el tiempo mostrado. | 1d | 2024-05-09 A | 2024-05-09 A | 195 | 100% |  |  |
| 197 | 1.2.13.4 | **El color del componente cambia de acuerdo al tiempo de la llamada y cuánto se ha acercado al límite en una llamada en tiempo real.** | 4d | 2024-05-12 A | 2024-05-15 A |  | 100% |  |  |
| 198 |  | Se realizan llamadas de prueba. | 1d | 2024-05-12 A | 2024-05-12 A | 196 | 100% |  | start no earlier than 2024-05-12 |
| 199 |  | El componente recibe información adecuadamente. | 1d | 2024-05-13 A | 2024-05-13 A | 198 | 100% |  |  |
| 200 |  | El componente cambia de color adecuadamente (verde si está debajo de 2 minutos y medio, amarillo di se está en 2 minutos y medio hasta 3, rojo si se ha pasado de 3). | 1d | 2024-05-14 A | 2024-05-14 A | 199 | 100% |  |  |
| 201 |  | No hay errores en el tiempo o color mostrado. | 1d | 2024-05-15 A | 2024-05-15 A | 200 | 100% |  |  |
| 202 | 1.2.14 | **El agente podrá acceder a un apartado en donde podrá verificar la evaluación y en caso de haberlos esccrito comentarios específicos de su supervisor** | 15d | 2024-04-30 A | 2024-05-15 |  | 95% |  |  |
| 203 | 1.2.14.1 | **Diseñar un botón que describa correctamente la sección.** | 1d | 2024-04-30 A | 2024-04-30 A | 238 | 100% |  |  |
| 204 |  | Agregar dentro del la interfaz del agente un botón con la descripción del apartado. | 0.5d | 2024-04-30 A | 2024-04-30 A |  | 100% |  |  |
| 205 |  | El botón debe de seguir la fuente y los colores de la empresa. | 0.5d | 2024-04-30 A | 2024-04-30 A | 204 | 100% |  |  |
| 206 | 1.2.14.2 | **Recuperar los datos y comentarios de la evaluación del supervisor.** | 1d | 2024-05-01 A | 2024-05-01 |  | 80% | 13d |  |
| 207 |  | Acceder a la base de datos para jalar los resultados de la encuesta del respectivo agente | 1d | 2024-05-01 A | 2024-05-01 | 205 | 80% | 13d |  |
| 208 | 1.2.14.3 | **Mostrar los datos y comentarios del supervisor de una forma clara.** | 7d | 2024-05-03 A | 2024-05-09 A |  | 100% |  |  |
| 209 |  | Mostrar los puntajes en un apartado de la pantalla | 1d | 2024-05-03 A | 2024-05-03 A |  | 100% |  |  |
| 210 |  | Mostrar los comentarios específicos a la par de los puntajes | 1d | 2024-05-09 A | 2024-05-09 A | 209 | 100% |  | finish no earlier than 2024-05-09 |

| ID | WBS | Task | Duration | Start | Finish | Predecessors | Complete | Total float | Constraint |
| --- | --- | --- | --- | --- | --- | --- | --- | --- | --- |
| 211 | 1.2.15 | **Los agentes podrán ver las respuestas a sus solicitudes de ayuda, enviadas por el supervisor, en un centro de notificaciones en la pantalla principal. Para poder aplicar las medidas sugeridas por el supervisor.** | 15d | 2024-04-30 A | 2024-05-15 |  | 50% |  |  |
| 212 | 1.2.15.1 | **Creación de la pantalla para el centro de notificaciones.** | 0.5d | 2024-04-30 A | 2024-04-30 A |  | 100% |  |  |
| 213 |  | Diseñar la interfaz de usuario para el centro de notificaciones. | 0.5d | 2024-04-30 A | 2024-04-30 A |  | 100% |  |  |
| 214 |  | Desarrollar la funcionalidad básica de la pantalla de notificaciones. | 0.5d | 2024-04-30 A | 2024-04-30 A |  | 100% |  |  |
| 215 | 1.2.15.2 | **Implementación del cuadro de mensaje para mostrar el texto del supervisor.** | 1d | 2024-05-15 | 2024-05-15 |  |  | 0d |  |
| 216 |  | Diseñar la apariencia del cuadro de mensaje. | 0.5d | 2024-05-15 | 2024-05-15 | 220 |  | 0d |  |
| 217 |  | Programar la funcionalidad para mostrar el texto del supervisor en el cuadro de mensaje. | 0.5d | 2024-05-15 | 2024-05-15 | 216 |  | 0d |  |
| 218 | 1.2.15.3 | **Integración de texto de sugerencia o ayuda con datos dummy en la pantalla de notificaciones.** | 2d | 2024-05-13 A | 2024-05-14 A |  | 100% |  |  |
| 219 |  | Establecer un canal de comunicación para recibir el texto del supervisor. | 1d | 2024-05-13 A | 2024-05-13 A | 223 | 100% |  |  |
| 220 |  | Desarrollar la lógica para dirigir el texto del supervisor a la pantalla de notificaciones. | 1d | 2024-05-14 A | 2024-05-14 A | 219 | 100% |  |  |
| 221 | 1.2.15.4 | **Implementación exitosa de los mensajes dummy en el centro de notificaciones.** | 1d | 2024-05-09 | 2024-05-09 |  |  | 5d |  |
| 222 |  | Probar la visualización de los mensajes en el centro de notificaciones. | 1d | 2024-05-09 | 2024-05-09 | 268 |  | 5d |  |
| 223 |  | Probar el funcionamiento del cuadro del centro de notificaciones. | 1d | 2024-05-09 | 2024-05-09 | 268 |  | 5d |  |
| 224 | 1.3 | **Supervisor** | 18d | 2024-04-25 A | 2024-05-15 |  | 90% | 0d |  |
| 225 | 1.3.1 | **En la pantalla principal, se mostrará un listado de llamadas activas que serán escaladas, ordenadas por prioridad, donde se evaluara principalmente el estado emocional del cliente. Por ejemplo: Si el cliente se encuentra estresado, la llamada con el agent** | 8d | 2024-04-29 A | 2024-05-06 A |  | 100% |  |  |
| 226 | 1.3.1.1 | **Recuperar los datos del analisis sentimental y duración de la llamada de Amazon Connect** | 2d | 2024-05-01 A | 2024-05-02 A |  | 100% |  |  |
| 227 |  | Investigar y seleccionar algoritmos adecuados para cada tarea. | 1d | 2024-05-01 A | 2024-05-01 A |  | 100% |  | start no earlier than 2024-05-01 |
| 228 |  | Implementar y probar los algoritmos para garantizar su precisión y eficacia. | 1d | 2024-05-02 A | 2024-05-02 A | 227 | 100% |  |  |
| 229 | 1.3.1.2 | **Desarrollo completo de los algoritmos para análisis sentimental del cliente, cálculo de duración acumulada de la llamada y detección de solicitud de asistencia del agente.** | 1d | 2024-05-03 A | 2024-05-03 A |  | 100% |  |  |
| 230 |  | Recuperar información del estado de la solicitud de asistencia. | 1d | 2024-05-03 A | 2024-05-03 A | 228 | 100% |  |  |
| 231 |  | Generar funciones de cálculo de duración de llamada, calculo del análisis sentimental del agente y detección solicitud de asistencia e iniciar pruebas de visualización. | 1d | 2024-05-03 A | 2024-05-03 A | 228 | 100% |  |  |
| 232 | 1.3.1.3 | **Diseño finalizado de la interfaz de usuario para visualizar las llamadas activas con prioridad.** | 1d | 2024-05-04 A | 2024-05-04 A |  | 100% |  |  |
| 233 |  | Diseñar la disposición y la apariencia de la interfaz de usuario. | 1d | 2024-05-04 A | 2024-05-04 A | 231 | 100% |  |  |
| 234 |  | Crear prototipos y realizar pruebas de usabilidad para asegurar una experiencia de usuario óptima. | 1d | 2024-05-04 A | 2024-05-04 A | 231 | 100% |  |  |
| 235 | 1.3.2 | **En la sección designada para mostrar las llamadas activas, en la pantalla principal, por cada llamada activa se tendrá el nombre del agente, el nombre del cliente, el tiempo desde que comenzó la llamada y un análisis sentimental, el cuál a través de una f** | 7d | 2024-05-07 A | 2024-05-14 |  | 70% |  |  |
| 236 | 1.3.2.1 | **Se recupera la información de una llamada** | 7d | 2024-05-07 A | 2024-05-14 |  | 59% |  |  |
| 237 |  | Configurar endpoints que recuperen los datos en tiempo real de las llamadas activas | 1d | 2024-05-07 A | 2024-05-07 | 123 | 70% | 3d | finish no earlier than 2024-05-07 |
| 238 |  | Utilizar Amazon Connect para actualizar los datos continuamente | 1d | 2024-05-08 A | 2024-05-08 A | 237 | 100% |  |  |
| 239 |  | Verifica que la API recupere todos los datos | 6d | 2024-05-08 A | 2024-05-14 | 237 | 50% | 1d | finish no earlier than 2024-05-14 |
| 240 | 1.3.2.2 | **Se visualiza el nombre del agente, el nombre del cliente, el tiempo acumulado y análisis sentimental** | 5d | 2024-05-09 A | 2024-05-14 |  | 87% |  |  |
| 241 |  | Crear una aplicacion React con los respectivos componentes | 1d | 2024-05-09 A | 2024-05-09 A |  | 100% |  |  |
| 242 |  | Permitir que la interfaz se actualice a medida que cambian los datos | 2d | 2024-05-09 A | 2024-05-14 |  | 80% | 1d | finish no earlier than 2024-05-14 |
| 243 | 1.3.2.3 | **Hay un botón que dice transcripción de la llamada** | 3d | 2024-05-12 A | 2024-05-14 |  | 83% |  |  |
| 244 |  | Crear y diseñar el componente en React | 1d | 2024-05-12 A | 2024-05-12 A |  | 100% |  |  |
| 245 |  | Obtener datos actualizados de la transcripción | 1d | 2024-05-12 A | 2024-05-12 A |  | 100% |  |  |
| 246 |  | Verifica que la API recupere todos los datos | 1d | 2024-05-14 A | 2024-05-14 |  | 50% | 1d | finish no earlier than 2024-05-14 |
| 247 | 1.3.3 | **Por cada llamada activa, ícono que cambia de color si un agente pide ayuda, al presionarlo, se mostrara el problema escrito por el agente y los datos del cliente, un botón para responder directamente, así como un botón para acceder a la transcripción de l** | 10d | 2024-05-05 | 2024-05-15 |  | 75% |  |  |
| 248 | 1.3.3.1 | **Cambiar los colores de un ícono a partir de datos dummies:** | 1d | 2024-05-05 | 2024-05-05 A |  | 100% |  |  |
| 249 |  | Implementar la lógica para generar datos dummy que indiquen el estado de un agente | 1d | 2024-05-05 A | 2024-05-05 A |  | 100% |  |  |
| 250 |  | Utilizar estos datos para cambiar dinámicamente el color del ícono en la interfaz de | 1d | 2024-04-25 A | 2024-04-25 A |  | 100% |  |  |
| 251 | 1.3.3.2 | **Desplegar una ventana emergente al dar tap sobre el ícono de ayuda:** | 3d | 2024-05-05 A | 2024-05-07 A |  | 100% |  |  |
| 252 |  | Implementar un controlador de eventos para que el ícono de ayuda abra una ventana emergente al presionarlo. | 1d | 2024-05-05 A | 2024-05-05 A |  | 100% |  |  |
| 253 |  | Diseñar la interfaz de la ventana emergente para mostrar el mensaje recuperado del agente. | 1d | 2024-05-05 A | 2024-05-05 A | 154 | 100% |  |  |
| 254 | 1.3.3.3 | **Reutilizar los botones del requerimiento 2 y desplegarlos en la misma ventana emergente:** | 2d | 2024-05-13 | 2024-05-14 |  |  | 1d |  |
| 255 |  | Identificar y reutilizar el código y los elementos de interfaz de usuario del requerimiento 2 que correspondan a los botones necesarios. | 1d | 2024-05-13 | 2024-05-13 | 244 |  | 1d |  |
| 256 |  | Integrar estos botones en la ventana emergente creada en el milestone 4. | 1d | 2024-05-14 | 2024-05-14 | 255 |  | 1d |  |
| 257 | 1.3.3.4 | **Crear un botón de responder y desplegar una ventana emergente al darle tap:** | 1d | 2024-05-06 A | 2024-05-06 A |  | 100% |  |  |
| 258 |  | Agregar un botón de responder a la ventana emergente creada en el milestone 4. | 1d | 2024-05-06 A | 2024-05-06 A | 253 | 100% |  |  |
| 259 |  | Implementar un controlador de eventos para este botón que abra otra ventana emergente al presionarlo. | 1d | 2024-05-06 A | 2024-05-06 A | 253 | 100% |  |  |
| 260 | 1.3.4 | **Al dar tap sobre el botón de responder del requerimiento 3, se desplegará una ventana con un cuadro de texto para escribir la respuesta, y un botón para enviarla. Y un mensaje de confirmación al finalizar.** | 11d | 2024-04-30 A | 2024-05-10 A |  | 100% |  |  |
| 261 | 1.3.4.1 | **Poder recuperar un mensaje escrito por el supervisor a través del cuadro de texto, una vez que se le de a enviar:** | 11d | 2024-04-30 A | 2024-05-10 A |  | 100% |  |  |
| 262 |  | Implementar la interfaz de usuario para incluir un cuadro de texto y un botón de enviar en la ventana emergente creada en el requerimiento 3 del supervisor. | 1d | 2024-05-10 A | 2024-05-10 A | 259 | 100% |  | finish no earlier than 2024-05-10 |
| 263 |  | Configurar un controlador de eventos para el botón de enviar. | 1d | 2024-04-30 A | 2024-04-30 A | 259 | 100% |  |  |
| 264 |  | Capturar el texto ingresado por el supervisor en el cuadro de texto al presionar el botón de enviar. | 1d | 2024-04-30 A | 2024-04-30 A | 259 | 100% |  |  |
| 265 | 1.3.4.2 | **Registrar el mensaje guardado en la base de datos:** | 2d | 2024-05-07 A | 2024-05-08 A |  | 100% |  |  |
| 266 |  | Configurar el controlador en el API para insertar el mensaje en la BD. | 1d | 2024-05-07 A | 2024-05-07 A | 259 | 100% |  |  |
| 267 |  | Configurar la conexión al endpoint, en la aplicación. | 1d | 2024-05-07 A | 2024-05-07 A | 259 | 100% |  |  |
| 268 |  | Escribir la lógica para insertar el mensaje escrito por el supervisor en la base de datos al presionar el botón de enviar a través del endpoint configurado en la actividad anterior. | 2d | 2024-05-07 A | 2024-05-08 A | 259 | 100% |  |  |
| 269 | 1.3.4.3 | **Mostrar un mensaje de confirmación al finalizar este proceso:** | 7.5d | 2024-04-30 A | 2024-05-07 A |  | 100% |  |  |
| 270 |  | Diseñar un mensaje de confirmación que se muestre al supervisor una vez que el mensaje haya sido correctamente guardado en la base de datos. | 1d | 2024-04-30 A | 2024-05-07 A | 259 | 100% |  |  |
| 271 |  | Implementar la lógica para mostrar este mensaje de confirmación en la interfaz de usuario. | 1d | 2024-04-30 A | 2024-05-07 A | 259 | 100% |  |  |
| 272 | 1.3.5 | **En la pantalla principal se visualizará el nombre del cliente y el tiempo de espera de manera cronológica, con las llamadas que tienen más tiempo de espera ubicadas en la parte superior de la lista.** | 6d | 2024-04-29 A | 2024-05-04 A |  | 100% |  |  |
| 273 | 1.3.5.1 | **Visualizar el nombre del cliente y el tiempo de espera de cada llamada en espera en la pantalla principal.** | 6d | 2024-04-29 A | 2024-05-04 A |  | 100% |  |  |
| 274 |  | Extraer datos de llamadas en espera desde Connect. | 5d | 2024-04-29 A | 2024-05-03 A |  | 100% |  | start no earlier than 2024-04-29 |
| 275 |  | Diseñar la interfaz de usuario en la pantalla principal para mostrar el nombre del cliente y el tiempo de espera de cada llamada. | 1d | 2024-05-04 A | 2024-05-04 A |  | 100% |  | start no earlier than 2024-05-04 |
| 276 | 1.3.6 | **La pantalla principal contara con un menú lateral en el que se visualicen las pantallas de navegación. En la pantalla principal se muestran los agentes del grupo, cada uno con un indicador acerca de su estado (disponible, en llamada, descanso o ausente).** | 17d | 2024-04-26 A | 2024-05-15 A |  | 100% |  |  |
| 277 | 1.3.6.1 | **Ver el menú lateral con las opciones de navegación del supervisor. Generar el diseño del menú** | 6d | 2024-04-26 A | 2024-05-03 A |  | 100% |  |  |
| 278 |  | Crear las referencias a las páginas del menú | 3d | 2024-04-26 A | 2024-04-30 A |  | 100% |  | finish no earlier than 2024-04-30 |
| 279 |  | Colocar las referencias | 2d | 2024-05-01 A | 2024-05-02 A |  | 100% |  | finish no earlier than 2024-05-02 |
| 280 |  | Realizar el diseño adecuado al resto de la interfaz | 1d | 2024-05-03 A | 2024-05-03 A |  | 100% |  | start no earlier than 2024-05-03 |

| ID | WBS | Task | Duration | Start | Finish | Predecessors | Complete | Total float | Constraint |
| --- | --- | --- | --- | --- | --- | --- | --- | --- | --- |
| 281 | 1.3.6.2 | **Ver la información de los agentes de manera cuadriculada, con datos que no provienen de la base de datos.** | 9d | 2024-05-06 A | 2024-05-15 A |  | 100% |  |  |
| 282 |  | Generar el diseño de la cuadrícula | 3d | 2024-05-06 A | 2024-05-08 A |  | 100% |  | finish no earlier than 2024-05-08 |
| 283 |  | Generar las rutas para acceder a la base de datos | 1d | 2024-05-09 A | 2024-05-09 A |  | 100% |  | start no earlier than 2024-05-09 |
| 284 |  | Generar las tablas en la base de datos | 2d | 2024-05-09 A | 2024-05-11 A |  | 100% |  | finish no earlier than 2024-05-11 |
| 285 |  | Colocar datos de prueba para probar la funcionalidad | 2d | 2024-05-13 A | 2024-05-14 A |  | 100% |  | finish no earlier than 2024-05-14 |
| 286 |  | Asignar los colores adecuados para mostrar el funcionamiento de estas | 1d | 2024-05-15 A | 2024-05-15 A |  | 100% |  | start no earlier than 2024-05-15 |
| 287 | 1.3.6.3 | **La información que se muestra de los agentes proviene de la base de datos.** | 5d | 2024-05-04 A | 2024-05-08 A |  | 100% |  |  |
| 288 |  | Conectar la base de datos con el backend | 1d | 2024-05-04 A | 2024-05-04 A |  | 100% |  | start no earlier than 2024-05-04 |
| 289 |  | Rellenar la base de datos con información para generar pruebas de la funcionalidad | 2d | 2024-05-05 A | 2024-05-06 A |  | 100% |  | finish no earlier than 2024-05-06 |
| 290 |  | Colocar las referencias correspondientes a las rutas para la información de cada agente | 2d | 2024-05-07 A | 2024-05-08 A |  | 100% |  | start no earlier than 2024-05-07 |
| 291 | 1.3.7 | **En la pantalla de KPIs general se mostrara la resolución al primer contactoc(porcentaje), abandono de llamadas (porcentaje), nivel de servicio(porcentaje), tiempo promedio de llamada(métrica), velocidad media de respuesta(métrica), ocupación de centro de** | 7d | 2024-05-07 A | 2024-05-14 |  | 83% | 1d |  |
| 292 | 1.3.7.1 | **Se muestra con texto los diferentes apartados con el KPI que deberían de mostrar.** | 3d | 2024-05-07 A | 2024-05-09 A |  | 100% |  |  |
| 293 |  | Generar el acomodo responsivo de los apartados de los KPIs | 2d | 2024-05-07 A | 2024-05-08 A |  | 100% |  | finish no earlier than 2024-05-08 |
| 294 |  | Generar los contextos y clases para colocar los objetos de los KPIs | 2d | 2024-05-08 A | 2024-05-09 A |  | 100% |  | start no earlier than 2024-05-08 |
| 295 |  | Colocar en texto cada uno de los KPIs en su espacio correspondiente | 1d | 2024-05-09 A | 2024-05-09 A |  | 100% |  |  |
| 296 | 1.3.7.2 | **Las métricas y porcentajes mostrados son datos prueba** | 5d | 2024-05-09 A | 2024-05-14 |  | 81% | 1d |  |
| 297 |  | Crear las tablas necesarias para la información de los KPIs | 1d | 2024-05-10 A | 2024-05-10 A |  | 100% |  |  |
| 298 |  | Generar las rutas y referencias necesarias para obtener la información de la base de dato | 5d | 2024-05-09 A | 2024-05-14 |  | 80% | 1d | start no earlier than 2024-05-09 |
| 299 |  | Colocar datos prueba en cada KPI para mostrar la funcionalidad de los colores | 2d | 2024-05-09 A | 2024-05-11 A |  | 100% |  | finish no earlier than 2024-05-11 |
| 300 |  | Generar la conexión con Amazon Connect | 5d | 2024-05-09 A | 2024-05-14 |  | 70% | 1d | finish no earlier than 2024-05-10 |
| 301 | 1.3.7.3 | **Las métricas y porcentajes visualizados provienen de la base de datos y de Amazon Connect, según corresponda.** | 6d | 2024-05-08 A | 2024-05-14 |  | 75% | 1d |  |
| 302 |  | Llenar la base de datos con los datos necesarios | 1d | 2024-05-08 A | 2024-05-08 A |  | 100% |  |  |
| 303 |  | Colocar las referencias correspondientes para cada KPI respecto a la ruta para obtener la información correspondiente | 5d | 2024-05-09 A | 2024-05-14 |  | 70% | 1d | start no earlier than 2024-05-09 |
| 304 | 1.3.8 | **Al seleccionar uno de los KPI en la pantalla se podrán visualizar datos históricos por medio de gráficas para elegir el tiempo deseado, siendo 60 días el máximo atrás que se puede elegir.** | 10d | 2024-05-01 A | 2024-05-11 A |  | 100% |  |  |
| 305 | 1.3.8.1 | **Visualizar el filtro de búsqueda, con su filtro por defecto de 15 minutos y poder elegir una fecha que vaya máximo 60 días atrás.** | 8d | 2024-05-01 A | 2024-05-08 A |  | 100% |  |  |
| 306 |  | Colocar un botón de Ver más | 1d | 2024-05-01 A | 2024-05-01 A |  | 100% |  |  |
| 307 |  | Colocar el filtro de selección de búsqueda | 1d | 2024-05-02 A | 2024-05-02 A |  | 100% |  | start no earlier than 2024-05-02 |
| 308 |  | Generar la vista con la gráfica, en lugar de la métrica anteriormente visualizada | 1d | 2024-05-03 A | 2024-05-03 A |  | 100% |  | start no earlier than 2024-05-03 |
| 309 |  | Colocar gráficas con datos prueba para verificar la visualización | 1d | 2024-05-06 A | 2024-05-06 A |  | 100% |  | start no earlier than 2024-05-06 |
| 310 |  | Generar los queries necesarios para realizar la busqueda | 2d | 2024-05-07 A | 2024-05-08 A |  | 100% |  | finish no earlier than 2024-05-08 |
| 311 | 1.3.8.2 | **Se visualizan las gráficas correspondientes al KPI elegido, con su filtro por defecto.** | 8d | 2024-05-03 A | 2024-05-11 A |  | 100% |  |  |
| 312 |  | Se colocan las rutas adecuadas para poder hacer los queries necesarios | 2d | 2024-05-03 A | 2024-05-04 A |  | 100% |  |  |
| 313 |  | Se ingresan los datos necesarias para poder realizar las pruebas dentro de la base de datos | 2d | 2024-05-07 A | 2024-05-08 A |  | 100% |  | finish no earlier than 2024-05-08 |
| 314 |  | Se hace uso únicamente el llamado de información de los últimos 15 minutos | 3d | 2024-05-08 A | 2024-05-11 A |  | 100% |  | finish no earlier than 2024-05-11 |
| 315 | 1.3.8.3 | **La información mostrada en las gráficas corresponde al filtro elegido de búsqueda.** | 5d | 2024-05-06 A | 2024-05-10 A |  | 100% |  |  |
| 316 |  | Se realiza la prueba de selección del tiempo con la información correspondiente. | 5d | 2024-05-06 A | 2024-05-10 A |  | 100% |  |  |
| 317 |  | Se implementan los colores y diseño establecido. | 1d | 2024-05-07 A | 2024-05-07 A |  | 100% |  |  |
| 318 | 1.3.9 | **El supervisor puede acceder al perfil de cada agente desde un botón en el menú lateral. Podrá ver los datos generales del agente (nombre, imagen, horario laboral) y los KPIs de su atención de llamadas en un día específico (llamadas respondidas, abandonada** | 14d | 2024-05-01 A | 2024-05-15 |  | 85% | 0d |  |
| 319 | 1.3.9.1 | **Visualizar lo datos generales de los agentes.** | 6d | 2024-05-01 A | 2024-05-06 |  | 98% | 8d |  |
| 320 |  | Configurar el acceso a los datos de los agentes desde Amazon Connect. | 4d | 2024-05-01 A | 2024-05-04 A |  | 100% |  | start no earlier than 2024-04-30 |
| 321 |  | Extraer los datos de los agentes desde Connect. | 3d | 2024-05-04 A | 2024-05-06 A |  | 100% |  |  |
| 322 |  | Procesar los datos para su visualización. | 3d | 2024-05-01 A | 2024-05-03 |  | 90% | 11d | finish no earlier than 2024-05-03 |
| 323 |  | Diseñar la interfaz de usuario para mostrar los datos generales de los agentes. | 2d | 2024-05-05 A | 2024-05-06 A |  | 100% |  | finish no earlier than 2024-05-06 |
| 324 | 1.3.9.2 | **Consultar los KPIs de atención de llamadas.** | 7d | 2024-05-08 A | 2024-05-15 |  | 71% | 0d |  |
| 325 |  | Configurar la extracción de datos de los KPIs desde Connect. | 5d | 2024-05-08 A | 2024-05-13 |  | 60% | 2d | finish no earlier than 2024-05-13 |
| 326 |  | Desarrollar la lógica para consultar y calcular los KPIs (llamadas respondidas, abandonadas, duración promedio). | 3d | 2024-05-12 A | 2024-05-14 |  | 90% | 1d |  |
| 327 |  | Integrar la visualización de los KPIs en la interfaz de usuario. | 2d | 2024-05-14 A | 2024-05-15 |  | 70% | 0d |  |
| 328 | 1.3.10 | **El superviso puede acceder a un apartado en donde podrá contetar unas preguntas las cuales podrán evaluar el desempeño del agente. Y en cas de necesitar ser más objetivo durante su comentario, complementarlo con un comentario más detallado.** | 14.5d | 2024-04-30 | 2024-05-15 |  | 91% |  |  |
| 329 | 1.3.10.1 | **Redactar las preguntas necesarias que se pueda argumentar de manera clara y efectiva para describir el desempaño del agente.** | 11d | 2024-04-25 A | 2024-05-07 A |  | 100% |  |  |
| 330 |  | Redactar preguntas que ayuden a puntuar y a describir el trabajo del agente. | 1d | 2024-04-25 A | 2024-04-25 A |  | 100% |  |  |
| 331 |  | Agregar un apartado donde se puedan puntuar del 1 al 10 el desempeño del agente | 1d | 2024-05-07 A | 2024-05-07 A | 323 | 100% |  |  |
| 332 | 1.3.10.2 | **Diseñar el apartado de las preguntas de manera clara.** | 1d | 2024-05-08 A | 2024-05-08 A |  | 100% |  |  |
| 333 |  | Diseñar una interfaz donde se pueda ver la división clara de cada una de las preguntas. | 1d | 2024-05-08 A | 2024-05-08 A | 331 | 100% |  |  |
| 334 | 1.3.10.3 | **Agregar una sección de comentarios para cada una de las preguntas.** | 0.5d | 2024-05-09 A | 2024-05-09 A |  | 100% |  |  |
| 335 |  | Establecer de manera clara que apartado de comentarios corresponde a cada pregunta | 0.5d | 2024-05-09 A | 2024-05-09 A | 333 | 100% |  |  |
| 336 | 1.3.10.4 | **Guardar los datos de la encuesta al agente en la base de datos.** | 1d | 2024-05-09 A | 2024-05-10 A |  | 100% |  |  |
| 337 |  | Crear un post un método post donde se puedan subir los resultados y comentarios a la base de datos hacia su respectivo agente | 1d | 2024-05-09 A | 2024-05-10 A | 335 | 100% |  |  |
| 338 | 1.3.10.5 | **Enviar los datos de la encuesta al agente.** | 1d | 2024-05-10 A | 2024-05-12 |  | 50% | 3.5d |  |
| 339 |  | Crear un método get donde se pueda obtener los resultados y comentarios de los respectivos agentes | 1d | 2024-05-10 A | 2024-05-12 | 337 | 50% | 3.5d |  |

## Version 2 (saved 2024-05-14, file Qualicenter 85.mpp)

Last finish stays 2024-05-15. Complete tasks 193 → 196.

Changed:

| ID | Task | Finish | Complete | Total float |
| --- | --- | --- | --- | --- |
| 1 | **Sprint 85%** |  | 94% → 95% |  |
| 120 | **En la sección izquierda, de la pantalla del agente, se muestra una transcripción en tiempo real de la llamada en curso** | 2024-05-10 A | 99% → 100% |  |
| 224 | **Supervisor** |  | 90% → 92% |  |
| 235 | **En la sección designada para mostrar las llamadas activas, en la pantalla principal, por cada llamada activa se tendrá el nombre del agente, el nombre del cliente, el tiempo desde que comenzó la llamada y un análisis sentimental, el cuál a través de una f** |  | 70% → 96% |  |
| 236 | **Se recupera la información de una llamada** |  | 59% → 94% |  |
| 237 | Configurar endpoints que recuperen los datos en tiempo real de las llamadas activas |  | 70% → 50% | 3d → 7d |
| 239 | Verifica que la API recupere todos los datos | 2024-05-14 A | 50% → 100% | 1d → none |
| 240 | **Se visualiza el nombre del agente, el nombre del cliente, el tiempo acumulado y análisis sentimental** | 2024-05-14 A | 87% → 100% |  |
| 242 | Permitir que la interfaz se actualice a medida que cambian los datos | 2024-05-14 A | 80% → 100% | 1d → none |
| 243 | **Hay un botón que dice transcripción de la llamada** | 2024-05-14 A | 83% → 100% |  |
| 246 | Verifica que la API recupere todos los datos | 2024-05-14 A | 50% → 100% | 1d → none |

## Version 3 (saved 2024-05-14, file Qualicenter100.mpp)

Last finish 2024-05-15 → 2024-06-03 (+19d). Complete tasks 196 → 0.

Added:

| ID | Task | Duration | Start | Finish | Constraint | Resources |
| --- | --- | --- | --- | --- | --- | --- |
| 4 | <Tarea nueva> | 1d? | 2024-05-15 | 2024-05-15 |  | Gustavo |
| 5 | <Tarea nueva> | 1d? | 2024-05-15 | 2024-05-15 |  | Gustavo |
| 14 | <Tarea nueva> | 1d? | 2024-05-15 | 2024-05-15 |  | Gustavo |
| 24 | <Tarea nueva> | 1d? | 2024-05-15 | 2024-05-15 |  | Gustavo |
| 25 | <Tarea nueva> | 1d? | 2024-05-15 | 2024-05-15 |  | Gustavo |
| 26 | <Tarea nueva> | 1d? | 2024-05-15 | 2024-05-15 |  | Gustavo |
| 27 | <Tarea nueva> | 1d? | 2024-05-15 | 2024-05-15 |  | Gustavo |
| 28 | <Tarea nueva> | 1d? | 2024-05-15 | 2024-05-15 |  | Gustavo |
| 30 | <Tarea nueva> | 1d? | 2024-05-15 | 2024-05-15 |  | Angel |
| 31 | <Tarea nueva> | 1d? | 2024-05-15 | 2024-05-15 |  | Angel |
| 32 | <Tarea nueva> | 1d? | 2024-05-15 | 2024-05-15 |  | Angel |
| 33 | <Tarea nueva> | 1d? | 2024-05-15 | 2024-05-15 |  | Angel |
| 34 | <Tarea nueva> | 1d? | 2024-05-15 | 2024-05-15 |  | Angel |
| 37 | <Tarea nueva> | 1d? | 2024-05-15 | 2024-05-15 |  | Eduardo |
| 38 | <Tarea nueva> | 1d? | 2024-05-15 | 2024-05-15 |  | Eduardo |
| 39 | <Tarea nueva> | 1d? | 2024-05-15 | 2024-05-15 |  | Eduardo |
| 40 | <Tarea nueva> | 1d? | 2024-05-15 | 2024-05-15 |  | Eduardo |
| 41 | <Tarea nueva> | 1d? | 2024-05-15 | 2024-05-15 |  | Eduardo |
| 42 | <Tarea nueva> | 1d? | 2024-05-15 | 2024-05-15 |  | Eduardo |
| 44 | <Tarea nueva> | 1d? | 2024-05-15 | 2024-05-15 |  | Eduardo |
| 45 | <Tarea nueva> | 1d? | 2024-05-15 | 2024-05-15 |  | Eduardo |
| 46 | <Tarea nueva> | 1d? | 2024-05-15 | 2024-05-15 |  | Eduardo |
| 47 | <Tarea nueva> | 1d? | 2024-05-15 | 2024-05-15 |  | Eduardo |
| 48 | <Tarea nueva> | 1d? | 2024-05-15 | 2024-05-15 |  | Eduardo |
| 50 | <Tarea nueva> | 1d? | 2024-05-15 | 2024-05-15 |  | Abigail |
| 51 | <Tarea nueva> | 1d? | 2024-05-15 | 2024-05-15 |  | Abigail |
| 52 | <Tarea nueva> | 1d? | 2024-05-15 | 2024-05-15 |  | Abigail |
| 53 | <Tarea nueva> | 1d? | 2024-05-15 | 2024-05-15 |  | Abigail |
| 54 | <Tarea nueva> | 1d? | 2024-05-15 | 2024-05-15 |  | Abigail |
| 56 | <Tarea nueva> | 1d? | 2024-05-15 | 2024-05-15 |  | Eduardo |
| 57 | <Tarea nueva> | 1d? | 2024-05-15 | 2024-05-15 |  | Eduardo |
| 58 | <Tarea nueva> | 1d? | 2024-05-15 | 2024-05-15 |  | Eduardo |
| 59 | <Tarea nueva> | 1d? | 2024-05-15 | 2024-05-15 |  | Eduardo |
| 60 | <Tarea nueva> | 1d? | 2024-05-15 | 2024-05-15 |  | Eduardo |
| 62 | <Tarea nueva> | 1d? | 2024-05-15 | 2024-05-15 |  | Abigail |
| 63 | <Tarea nueva> | 1d? | 2024-05-15 | 2024-05-15 |  | Abigail |
| 64 | <Tarea nueva> | 1d? | 2024-05-15 | 2024-05-15 |  | Abigail |
| 65 | <Tarea nueva> | 1d? | 2024-05-15 | 2024-05-15 |  | Abigail |
| 69 | <Tarea nueva> | 1d? | 2024-05-15 | 2024-05-15 |  | Abigail |
| 70 | <Tarea nueva> | 1d? | 2024-05-15 | 2024-05-15 |  | Abigail |
| 71 | <Tarea nueva> | 1d? | 2024-05-15 | 2024-05-15 |  | Abigail |
| 73 | <Tarea nueva> | 1d? | 2024-05-15 | 2024-05-15 |  | Abigail |
| 74 | <Tarea nueva> | 1d? | 2024-05-15 | 2024-05-15 |  | Abigail |
| 75 | <Tarea nueva> | 1d? | 2024-05-15 | 2024-05-15 |  | Abigail |
| 76 | <Tarea nueva> | 1d? | 2024-05-15 | 2024-05-15 |  | Abigail |
| 77 | <Tarea nueva> | 1d? | 2024-05-15 | 2024-05-15 |  | Abigail |
| 82 | <Tarea nueva> | 1d? | 2024-05-15 | 2024-05-15 |  | Pablo |
| 83 | <Tarea nueva> | 1d? | 2024-05-15 | 2024-05-15 |  | Pablo |
| 91 | <Tarea nueva> | 1d? | 2024-05-15 | 2024-05-15 |  | Pablo |
| 92 | <Tarea nueva> | 1d? | 2024-05-15 | 2024-05-15 |  | Pablo |
| 94 | <Tarea nueva> | 1d? | 2024-05-15 | 2024-05-15 |  | Pablo |
| 101 | <Tarea nueva> | 1d? | 2024-05-15 | 2024-05-15 |  | Aldehil |
| 109 | <Tarea nueva> | 1d? | 2024-05-15 | 2024-05-15 |  | Iván |
| 111 | <Tarea nueva> | 1d? | 2024-05-15 | 2024-05-15 |  | Iván |
| 112 | <Tarea nueva> | 1d? | 2024-05-15 | 2024-05-15 |  | Iván |
| 128 | <Tarea nueva> | 1d? | 2024-05-15 | 2024-05-15 |  | Dani |
| 134 | <Tarea nueva> | 1d? | 2024-05-15 | 2024-05-15 |  | Angel - Pobol |
| 136 | <Tarea nueva> | 1d? | 2024-05-15 | 2024-05-15 |  | Angel - Pobol |
| 137 | <Tarea nueva> | 1d? | 2024-05-15 | 2024-05-15 |  | Angel - Pobol |
| 138 | <Tarea nueva> | 1d? | 2024-05-15 | 2024-05-15 |  | Angel - Pobol |
| 148 | <Tarea nueva> | 1d? | 2024-05-15 | 2024-05-15 |  | Aldehil |
| 154 | <Tarea nueva> | 1d? | 2024-05-15 | 2024-05-15 |  | Noh Ah |
| 159 | **Se muestra el KPI correspondiente a partir de un botón** | 6d | 2024-05-16 | 2024-05-23 |  | Ingrid |
| 160 | Generar conexión con Amazon Connect | 3d | 2024-05-16 | 2024-05-20 | finish no earlier than 2024-05-20 | Ingrid |
| 161 | Generar controllers para la información correcta de cada KPI | 3d | 2024-05-17 | 2024-05-21 | start no earlier than 2024-05-17 | Ingrid |
| 162 | Insertar lógica correspondiente en el Front end, botón y uso de react) | 5d | 2024-05-17 | 2024-05-23 | finish no earlier than 2024-05-23 | Ingrid |
| 163 | **Se muestra el KPI de manera automática y se actualiza cada 15 segundos** | 10d | 2024-05-20 | 2024-05-31 |  | Ingrid |
| 164 | Generar rutas para el pedido de cada uno de los requerimientos pedidos | 5d | 2024-05-20 | 2024-05-24 |  | Ingrid |
| 165 | Colocar la lógica a través de react para pedir la información cada 15 segundos de | 5d | 2024-05-23 | 2024-05-29 |  | Ingrid |
| 168 | **Se muestra la métrica del momento en la gráfica** | 12d | 2024-05-16 | 2024-05-31 |  | Ingrid |
| 169 | Crear tabla de KPIs | 3d | 2024-05-20 | 2024-05-22 | start no earlier than 2024-05-20 | Ingrid |
| 170 | Generar controllers para que cada KPI sea guardado en la base de datos | 3d | 2024-05-21 | 2024-05-23 | start no earlier than 2024-05-21 | Ingrid |
| 171 | Generar rutas para acceder a la métrica especificado del momento actual | 7d | 2024-05-16 | 2024-05-24 | finish no earlier than 2024-05-24 | Ingrid |
| 172 | Generar lógica para pedir la información de cada KPI en el momento para generar | 6d | 2024-05-24 | 2024-05-31 | start no earlier than 2024-05-24 | Ingrid |
| 173 | **Se muestra la métrica especificada por la fecha o momento seleccionado, por** | 14d | 2024-05-15 | 2024-06-03 |  | Ingrid |
| 174 | Se ingresa la lógica para la información de los últimos15 minutos desde la base de | 5d | 2024-05-16 | 2024-05-22 | start no earlier than 2024-05-16 | Ingrid |
| 175 | Se genera la gráfica correspondiente | 4d | 2024-05-15 | 2024-05-20 |  | Ingrid |
| 177 | Se prueban el pedido de información según se selecciona en el frontend y se | 5d | 2024-05-28 | 2024-06-03 | start no earlier than 2024-05-28 | Ingrid |
| 180 | <Tarea nueva> | 1d? | 2024-05-15 | 2024-05-15 |  | Noh Ah |

Removed: 4 Recibir la llamada con Amazon Connect.; 5 Crear la instancia de Amazon Connect en una cuenta de AWS.; 6 Reclamar un número de teléfono y asignarlo a la instancia; 7 Configurar la instancia de Amazon Connect para recibir llamadas entrantes con un flujo predeterminado.; 8 Tener el control de la llamada.; 9 Crear las cuentas de agentes y administradores, con sus atributos respectivos como nombres y horarios.; 10 Implementar funcionalidades de colas; 11 Implementar ruteos y prioridades de colas.; 12 Crear un flujo propio de control de llamadas; 13 Asignar el flujo al número reclamado y asignado a la instancia; 14 Indicarle a Connect iniciar el registro del tiempo de la llamada.; 15 Asignar permisos a Amazon Connect de acceso a Lambda mediante un perfil de IAM; 16 Implementar un atributo de Amazon Connect de duración de llamada para las llamadas finalizadas, el cual utilizará la API de Amazon Connect Flow para en cualquier momento obtener la duración total de una llamada finalizada.; 17 Adicionalmente para cada llamada capturar detalles importantes como el número del llamante, el tiempo y el asunto. Guardarlos como atributos en el flujo de llamada en la instancia de Amazon Connect.; 18 Iniciar un temporizador para cada llamada que se reciba, para así implementar una función Lambda en el flujo de llamadas, el cual podrá ser llamada en cualquier momento para obtener la duración en tiempo real de manera precisa para cada llamada.; 19 Recuperar el tiempo registrado por connect.; 20 Implementar en la interfaz de usuario la duración acumulada de la llamada para los agentes y administradores relevantes; 21 Realizar pruebas exhaustivas invocando al API desde la interfaz, para garantizar el seguimiento correcto de la duración y la recuperación de datos de llamada. Validar contra diferentes escenarios como transferencias de llamada; 23 Recuperar el número del cliente.; 24 Asignar un atributo en el flujo de Amazon Connect que guarde el número del cliente para cada llamada; 25 Comparar el número con los clientes para encontrar al cliente.; 26 Montar y llenar una base de datos para relacionar números telefónicos de los clientes a datos individuales como nombre y número de póliza; 27 Implementar una función Lambda en el flujo de la instancia de Amazon Connect, el cual comparará el número de un cliente guardado en un atributo con los números guardados en la base de datos.; 28 Recuperar la información de ese cliente.; 29 Dentro de la función Lambda en el flujo de la instancia de Amazon Connect, después de hacer un match con los datos de un cliente y su número, regresará los datos del cliente de la base de datos para así guardarlos como atributo en la instancia.; 30 Si todos los agentes están ocupados, notificarle al cliente que está en la cola de espera.; 31 Modificar las colas de espera de la instancia de Amazon Connect para que ocurran distintos escenarios si la cola está llena.; 32 Si la cola está llena o no hay agentes disponibles, entonces reproducir un audio que indique que no hay un agente disponible reproducido en un loop.; 33 Si la cola no está llena y hay agentes disponibles, rutear la llamada al flujo propio de la instancia; 35 Desplegar toda la información del cliente.; 36 Configurar el API de Amazon Connect y las funciones Lambda asignadas al flujo de llamada para recuperar datos del cliente; 37 Implementar una interfaz de usuario en la aplicación del agente para mostrar los datos del cliente, incluyendo nombre, edad, datos de póliza y tiempo acumulado de llamada.; 38 Generar una alerta en la pantalla del agente sobre una llamada entrante; 39 Configurar el API de Amazon Connect para crear una interfaz “Agent Workspace” dentro de la aplicación; 40 Generar una alerta en la pantalla del agente sobre una llamada entrante, utilizando mensajes emergentes y sonidos audibles.; 41 Establecer la conexión entre el agente y el cliente.; 42 Implementar la funcionalidad de conexión entre el agente y el cliente, utilizando las funcionalidades del API de Amazon Connect y la interfaz “Agent Workspace”.; 43 Asignar a cada perfil de Agente en la instancia de Amazon Connect un tiempo “After-Call-Work”; 44 Mostrar el temporizador “After-Call-Work” en la aplicación después de desconectar cada llamada.; 46 Inicio una llamada entre agente y cliente; 47 Configurar Amazon Connect par amanejar llamadas entrantes; 48 Hacer que el sistema pueda identificar usuarios y conectar las llamadas correctamente entre agente y cliente; 49 Integrar el API necesario para capturar el audio de la llamada en tiempo real; 50 Se registra el análisis sentimental del cliente; 51 Aprender a obtener el analisis sentimental; 52 Desarrollar el backend para enviar texto transcrito (del audio) al servicio de análisis de sentimientos; 53 Configurar la integración para que cada segmento de texto transcrito se envíe al servicio de análisis tan pronto como esté disponible.; 54 Se registra la transcripción en tiempo real; 55 Verificar si se necesita usar Amazon Transcribe y aprenderlo, o si basta con Amazon Comprehend; 56 Configurar Amazon Connect para enviar un audio; 57 Crear función para recibir y procesar el texto transcrito.; 60 Tener un panel visible donde se colocara el script.; 61 Realizar el front-end del panel donde se colocara el script.; 62 Colocar un script dummy en el panel; 63 Crear un script con datos dummy directo en el front-end; 64 Visualizar datos reales en el script.; 65 Crear una conexión a la Base de Datos para traer por la API los datos del cliente y colocarlos en tiempo real en el script.; 66 Colocar los campos de registro; 67 Crear y hacer funcionales los campos de registro de la información del cliente; 69 Visualiza un apartado con datos dummy del cliente; 70 Los datos dummy del cliente se visualizan en el Frontend del panel; 71 Visualiza un apartado con los datos reales del cliente en tiempo real; 72 Se crea una conexión a la base de datos y los datos del cliente se visualizan en tiempo real; 74 Espacio para escribir la dirección del cliente:; 75 Crear archivo CSS; 76 Crear archivo JS; 77 Diseñar el componente en el espacio designado de la aplicación; 78 Programar la funcionalidad del FrontEnd; 80 Visualiza un apartado con datos dummy del cliente; 81 Los datos dummy del cliente se visualizan en el Frontend del panel; 82 Visualiza un apartado con los datos reales del cliente en tiempo rea; 83 Se crea una conexión a la base de datos.; 84 Dependiendo de la póliza del cliente con un condicional despliega información sobre sus autos; 86 Diseñar y posicionar los botones correctamente:; 87 Crear archivo CSS; 88 Crear archivo JS; 89 Diseñar los componentes en el espacio designado de la aplicación; 91 Recuperar el número del cliente:; 92 API para recuperar el número del cliente; 93 Conexión de la funcionalidad del botón con el BackEnd; 94 Recuperar la dirección del cliente; 95 Funciónalidad que reciba la dirección desde el FrontEnd; 96 Mandar un SMS con la alerta; 97 Configurar instancia Amazon SNS; 98 API para mandar el mensaje; 99 Función Lambda para mandar el mensaje; 101 Recuperar el número del cliente:; 102 API para recuperar el número del cliente; 103 Conexión de la funcionalidad del botón con el BackEnd; 104 Recuperar la dirección del cliente; 105 Funciónalidad que reciba la dirección desde el FrontEnd; 106 Mandar un SMS con la alerta; 107 Configurar instancia Amazon SNS; 108 API para mandar el mensaje; 109 Función Lambda para mandar el mensaje; 111 Ser capaz de generar una liga de un servicio de mapas (Como google maps) que contenga una dirección.; 112 Investigar al respecto, ya sea una API u otra forma de saberlo.; 113 Generar enlaces a partir de un script que reciba como input una dirección y retorne un enlace.; 114 Ser capaz de enviar mensajes de texto a través de un script de JS.; 115 Investigar sobre alguna librería o API que me permita enviar mensajes a un número dado.; 116 Escribir un código capaz de enviar mensajes a un número dado.; 117 Incluir un mensaje predeterminado e incluir el enlace alcanzado con el milestone; 118 Enviar automáticamente mensajes al ingresar la dirección desde la página durante la llamada.; 119 A partir de la finalización del requerimiento 3 con el ingreso de la dirección en la página final, enlazar el script de mensaje de la milestone 2 con la funcionalidad de un botón de submit.; 121 Se recupera la transcripción registrada de la llamada; 122 Recuperar la transcripción de la llamada; 123 Desarrollar un sistema de bufferización para almacenar temporalmente las transcripciones mientras son procesadas y antes de ser mostradas.; 124 Se muestra la transcripción de la llamada; 125 Diseñar la interfaz donde se mostrarán las transcripciones; 126 Crear una aplicación en React para crear los componentes funcionales necesarios y para actualizaciones en tiempo real; 127 La transcripción mostrada esté sincronizada con el audio de la llamada, actualizando la pantalla a medida que se disponga; 128 Crear API endpoints para recuperar las transcripciones desde el almacenamiento temporal o buffer y enviarlas al frontend de la aplicación del agente.; 129 Se anima la transcripción para que sea claramente legible; 130 Crear y diseñar el archivo CSS o bibliotecas de JavaScript para animar el scroll del texto; 132 Visualizar la llamada al conectar Amazon Connect con la página.; 133 Una vez finalizado el funcionamiento y flujo de nuestra instancia de Connect, incluirla en nuestra página web en las pantallas correspondientes.; 134 Verificar el funcionamiento deseado de la llamada al realizar pruebas.; 135 Observar el comportamiento del flujo de la llamada establecido.; 136 Utilizar eficientemente los botones incluidos en Amazon Connect para finalizar y silenciar llamadas.; 137 Al ver la llamada, se visualizan los botones de colgar y silenciar.; 138 los botones cumplen con su función.; 140 Mostrar el botón de ayuda en la pantalla principal del agente; 141 Implementar la interfaz de usuario para incluir el botón de ayuda en la pantalla principal.; 142 Verificar que el botón sea visible y esté correctamente ubicado.; 143 Confirmar que el botón responda a eventos de tap o clic.; 144 Agregar un controlador de eventos al botón de ayuda.; 145 Cuando el usuario toque el botón, enviar un mensaje a la consola para indicar que se ha activado el botón de ayuda.; 162 El ícono se muestra con sus 3 colores (verde, amarillo, rojo).; 163 Se crea el componente para el ícono.; 164 Se posiciona el componente dentro de la página.; 165 El componente se puede mostrar en 3 colores (verde, rojo, amarillo).; 166 El componente no presenta ningún fallo.; 167 El componente se ha vinculado con éxito a consultas en la base de datos y puede comunicarse con ella.; 168 Se implementa función para hacer que el componente cambie de color.; 169 Se establecen parámetros dentro de la función según la información que se va a adquirir.; 170 Se crea una rutina para recibir la información pertinente de la base de datos.; 171 Se reciben los datos que necesita la función sin errores.; 172 El componente cumple con todas sus funcionalidades al usar datos pre-fabricados.; 173 Se generan datos pre-fabricados de prueba. 3.2 La función del componente recibe los datos.; 174 La función del componente hace que el ícono cambie de color a partir de los datos.; 175 No hay errores en el color mostrado.; 176 El componente cumple con todas sus funcionalidades en una llamada de prueba en tiempo real.; 177 Se realizan llamadas en tiempo real.; 178 El componente recibe información adecuadamente.; 179 El componente cambia de color adecuadamente.; 180 No hay errores en el color mostrado.; 182 El componente se muestra con sus 3 colores (verde, amarillo, rojo).; 183 Se crea el componente para el contador de tiempo de la llamada.; 184 Se posiciona el componente dentro de la página.; 185 El componente se puede mostrar en 3 colores (verde, rojo, amarillo).; 186 El componente no presenta ningún fallo.; 187 El componente se ha vincluado con éxito a consultas en la base de datos y se comunica con ella.; 188 Se implementa función para hacer que el componente cambie de color.; 189 Se establecen parámetros dentro de la función según la información que se va a adquirir.; 190 Se crea una rutina para recibir la información pertinente de la base de datos.; 191 Se reciben los datos que necesita la función sin errores.; 192 El componente despliega el tiempo de la llamada exitósamente.; 193 Se realizan llamadas de prueba.; 194 La función del componente recibe los datos.; 195 La función del componente hace que muestre el tiempo actual de la llamada.; 196 No hay errores en el tiempo mostrado.; 197 El color del componente cambia de acuerdo al tiempo de la llamada y cuánto se ha acercado al límite en una llamada en tiempo real.; 198 Se realizan llamadas de prueba.; 199 El componente recibe información adecuadamente.; 200 El componente cambia de color adecuadamente (verde si está debajo de 2 minutos y medio, amarillo di se está en 2 minutos y medio hasta 3, rojo si se ha pasado de 3).; 201 No hay errores en el tiempo o color mostrado.; 203 Diseñar un botón que describa correctamente la sección.; 204 Agregar dentro del la interfaz del agente un botón con la descripción del apartado.; 205 El botón debe de seguir la fuente y los colores de la empresa.; 206 Recuperar los datos y comentarios de la evaluación del supervisor.; 207 Acceder a la base de datos para jalar los resultados de la encuesta del respectivo agente; 208 Mostrar los datos y comentarios del supervisor de una forma clara.; 209 Mostrar los puntajes en un apartado de la pantalla; 210 Mostrar los comentarios específicos a la par de los puntajes; 212 Creación de la pantalla para el centro de notificaciones.; 214 Desarrollar la funcionalidad básica de la pantalla de notificaciones.; 215 Implementación del cuadro de mensaje para mostrar el texto del supervisor.; 216 Diseñar la apariencia del cuadro de mensaje.; 217 Programar la funcionalidad para mostrar el texto del supervisor en el cuadro de mensaje.; 218 Integración de texto de sugerencia o ayuda con datos dummy en la pantalla de notificaciones.; 219 Establecer un canal de comunicación para recibir el texto del supervisor.; 220 Desarrollar la lógica para dirigir el texto del supervisor a la pantalla de notificaciones.; 221 Implementación exitosa de los mensajes dummy en el centro de notificaciones.; 222 Probar la visualización de los mensajes en el centro de notificaciones.; 223 Probar el funcionamiento del cuadro del centro de notificaciones.; 228 Implementar y probar los algoritmos para garantizar su precisión y eficacia.; 229 Desarrollo completo de los algoritmos para análisis sentimental del cliente, cálculo de duración acumulada de la llamada y detección de solicitud de asistencia del agente.; 230 Recuperar información del estado de la solicitud de asistencia.; 231 Generar funciones de cálculo de duración de llamada, calculo del análisis sentimental del agente y detección solicitud de asistencia e iniciar pruebas de visualización.; 232 Diseño finalizado de la interfaz de usuario para visualizar las llamadas activas con prioridad.; 233 Diseñar la disposición y la apariencia de la interfaz de usuario.; 234 Crear prototipos y realizar pruebas de usabilidad para asegurar una experiencia de usuario óptima.; 236 Se recupera la información de una llamada; 237 Configurar endpoints que recuperen los datos en tiempo real de las llamadas activas; 238 Utilizar Amazon Connect para actualizar los datos continuamente; 239 Verifica que la API recupere todos los datos; 240 Se visualiza el nombre del agente, el nombre del cliente, el tiempo acumulado y análisis sentimental; 241 Crear una aplicacion React con los respectivos componentes; 242 Permitir que la interfaz se actualice a medida que cambian los datos; 243 Hay un botón que dice transcripción de la llamada; 244 Crear y diseñar el componente en React; 245 Obtener datos actualizados de la transcripción; 246 Verifica que la API recupere todos los datos; 250 Utilizar estos datos para cambiar dinámicamente el color del ícono en la interfaz de; 275 Diseñar la interfaz de usuario en la pantalla principal para mostrar el nombre del cliente y el tiempo de espera de cada llamada.; 291 En la pantalla de KPIs general se mostrara la resolución al primer contactoc(porcentaje), abandono de llamadas (porcentaje), nivel de servicio(porcentaje), tiempo promedio de llamada(métrica), velocidad media de respuesta(métrica), ocupación de centro de; 300 Generar la conexión con Amazon Connect; 315 La información mostrada en las gráficas corresponde al filtro elegido de búsqueda.; 317 Se implementan los colores y diseño establecido.; 319 Visualizar lo datos generales de los agentes.; 320 Configurar el acceso a los datos de los agentes desde Amazon Connect.; 321 Extraer los datos de los agentes desde Connect.; 322 Procesar los datos para su visualización.; 323 Diseñar la interfaz de usuario para mostrar los datos generales de los agentes.; 324 Consultar los KPIs de atención de llamadas.; 325 Configurar la extracción de datos de los KPIs desde Connect.; 326 Desarrollar la lógica para consultar y calcular los KPIs (llamadas respondidas, abandonadas, duración promedio).; 327 Integrar la visualización de los KPIs en la interfaz de usuario.; 329 Redactar las preguntas necesarias que se pueda argumentar de manera clara y efectiva para describir el desempaño del agente.; 330 Redactar preguntas que ayuden a puntuar y a describir el trabajo del agente.; 331 Agregar un apartado donde se puedan puntuar del 1 al 10 el desempeño del agente; 332 Diseñar el apartado de las preguntas de manera clara.; 333 Diseñar una interfaz donde se pueda ver la división clara de cada una de las preguntas.; 334 Agregar una sección de comentarios para cada una de las preguntas.; 335 Establecer de manera clara que apartado de comentarios corresponde a cada pregunta; 336 Guardar los datos de la encuesta al agente en la base de datos.; 337 Crear un post un método post donde se puedan subir los resultados y comentarios a la base de datos hacia su respectivo agente; 338 Enviar los datos de la encuesta al agente.; 339 Crear un método get donde se pueda obtener los resultados y comentarios de los respectivos agentes

Changed:

| ID | Task | Start | Finish | Duration | Complete | Total float | Predecessors | Other |
| --- | --- | --- | --- | --- | --- | --- | --- | --- |
| 1 | **Sprint 100%** | 2024-04-24 A → 2024-05-15 (+21d) | 2024-05-15 → 2024-06-03 (+19d) | 19d → 14d? | 95% → 0% | 0d → none |  | was named Sprint 85% |
| 2 | **Cliente** | 2024-04-24 A → 2024-05-15 (+21d) | 2024-05-14 A → 2024-05-15 (+1d) | 17.6d → 0d | 100% → 0% | none → 14d |  |  |
| 3 | **El sistema debe ser capaz de registrar el tiempo acumulado de la llamada desde el momento en que el cliente marca al número de atención.** | 2024-04-29 A → 2024-05-15 (+16d) | 2024-05-14 A → 2024-05-15 (+1d) | 14.6d → 0d | 100% → 0% | none → 14d |  |  |
| 6 | <Tarea nueva> | 2024-05-05 A → 2024-05-15 (+10d) | 2024-05-05 A → 2024-05-15 (+10d) | 1d → 1d? | 100% → 0% |  | 9 → none | was named Verificar que el texto se almacene correctamente en una variable o estructura de datos.; resources Aldehil → Gustavo |
| 7 | <Tarea nueva> | 2024-05-05 A → 2024-05-15 (+10d) | 2024-05-05 A → 2024-05-15 (+10d) | 1d → 1d? | 100% → 0% |  | 9 → none | was named Implementar la lógica para capturar el texto ingresado por el usuario en el cuadro detexto.; resources Aldehil → Gustavo |
| 8 | <Tarea nueva> | 2024-05-05 A → 2024-05-15 (+10d) | 2024-05-06 A → 2024-05-15 (+9d) | 2d → 1d? | 100% → 0% |  |  | was named Guardar un mensaje escrito por el usuario en el cuadro de texto:; resources Aldehil → Gustavo |
| 9 | <Tarea nueva> | 2024-05-03 A → 2024-05-15 (+12d) | 2024-05-04 A → 2024-05-15 (+11d) | 2d → 1d? | 100% → 0% |  | Cuando el usuario toque el botón, enviar un mensaje a la consola para indicar que se ha activado el botón de ayuda. → none | was named Diseñar la interfaz de la ventana emergente para incluir un cuadro de texto y un botón de enviar.; resources Aldehil → Gustavo |
| 10 | <Tarea nueva> | 2024-05-03 A → 2024-05-15 (+12d) | 2024-05-03 A → 2024-05-15 (+12d) | 1d → 1d? | 100% → 0% |  | Cuando el usuario toque el botón, enviar un mensaje a la consola para indicar que se ha activado el botón de ayuda. → none | was named Crear una ventana emergente que se muestre al tocar el botón de ayuda.; resources Aldehil → Gustavo |
| 11 | <Tarea nueva> | 2024-05-03 A → 2024-05-15 (+12d) | 2024-05-04 A → 2024-05-15 (+11d) | 2d → 1d? | 100% → 0% |  |  | was named Desplegar una ventana emergente al darle tap al botón:; resources Aldehil → Gustavo |
| 12 | <Tarea nueva> | 2024-05-06 A → 2024-05-15 (+9d) | 2024-05-06 A → 2024-05-15 (+9d) | 1d → 1d? | 100% → 0% |  | 6 → none | was named Al tocar el botón de enviar, enviar el mensaje almacenado en la consola.; resources Aldehil → Gustavo |
| 13 | <Tarea nueva> | 2024-05-06 A → 2024-05-15 (+9d) | 2024-05-06 A → 2024-05-15 (+9d) | 1d → 1d? | 100% → 0% |  | 6 → none | was named Agregar un controlador de eventos al botón de enviar en la ventana emergente.; resources Aldehil → Gustavo |
| 15 | **El sistema debe buscar un agente disponible para atender la llamada, si no hay uno entonces se deberá colocar la llamada en una cola de esperal. . El sistema debe identificar al cliente mediante su número de teléfono, si el cliente está registrado con una** | 2024-04-29 A → 2024-05-15 (+16d) | 2024-05-14 A → 2024-05-15 (+1d) | 14.5d → 0d | 100% → 0% | none → 14d |  |  |
| 16 | <Tarea nueva> | 2024-05-09 A → 2024-05-15 (+6d) | 2024-05-09 A → 2024-05-15 (+6d) | 1d → 1d? | 100% → 0% |  | 20 → none | was named Escribir la lógica para insertar el mensaje en la base de datos haciendo uso del endpoint.; resources Aldehil → Gustavo |
| 17 | <Tarea nueva> | 2024-05-09 A → 2024-05-15 (+6d) | 2024-05-09 A → 2024-05-15 (+6d) | 1d → 1d? | 100% → 0% |  | 20 → none | was named Configurar la conexión al endpoint, en la aplicación; resources Aldehil → Gustavo |
| 18 | <Tarea nueva> | 2024-05-07 A → 2024-05-15 (+8d) | 2024-05-09 A → 2024-05-15 (+6d) | 3d → 1d? | 100% → 0% |  |  | was named Registrar el mensaje guardado en la base de datos:; resources Aldehil → Gustavo |
| 19 | <Tarea nueva> | 2024-05-10 A → 2024-05-15 (+5d) | 2024-05-10 → 2024-05-15 (+5d) | 1d → 1d? | 50% → 0% | 4d → none | 16 → none | was named Mostrar el mensaje de confirmación en la pantalla principal del agente una vez que se utilice el botón de enviar.; resources Aldehil → Gustavo |
| 20 | <Tarea nueva> | 2024-05-07 A → 2024-05-15 (+8d) | 2024-05-08 A → 2024-05-15 (+7d) | 2d → 1d? | 100% → 0% |  | 12 → none | was named Configurar el controlador en el API para insertar el mensaje en la BD.; resources Aldehil → Gustavo |
| 21 | <Tarea nueva> | 2024-05-10 A → 2024-05-15 (+5d) | 2024-05-10 → 2024-05-15 (+5d) | 1d → 1d? | 50% → 0% | 4d → none |  | was named Desplegar un mensaje de confirmación al terminar este proceso:; resources Aldehil → Gustavo |
| 22 | **El sistema debe mostrar al agente los datos del cliente, incluyendo nombre, edad, datos de póliza y tiempo acumulado de llamada .l agente debe recibir una notificación de la llamada entrante junto con una cuenta regresiva antes de que pueda volver a reali** | 2024-05-03 A → 2024-05-15 (+12d) | 2024-05-14 A → 2024-05-15 (+1d) | 10.5d → 0d | 100% → 0% | none → 14d | Asignar el flujo al número reclamado y asignado a la instancia → none |  |
| 23 | <Tarea nueva> | 2024-05-10 A → 2024-05-15 (+5d) | 2024-05-10 → 2024-05-15 (+5d) | 1d → 1d? | 50% → 0% | 4d → none | 16 → none | was named Diseñar un mensaje de confirmación que se muestre al usuario después de guardar el mensaje en la base de datos.; resources Aldehil → Gustavo |
| 29 | **Se registra, por llamada, el analisis sentimental y la transcripción en tiempo real cuando la conexión entre el cliente y el agente comienza** | 2024-04-24 A → 2024-05-15 (+21d) | 2024-05-10 A → 2024-05-15 (+5d) | 15d → 0d | 100% → 0% | none → 14d |  |  |
| 35 | **Agente** | 2024-04-25 A → 2024-05-15 (+20d) |  | 18d → 1d | 96% → 0% | 0d → none |  |  |
| 36 | **El agente visualiza un script del dialogo que va a tener con el cliente:** | 2024-04-25 A → 2024-05-15 (+20d) |  | 18d → 0d | 98% → 0% | 0d → 14d |  |  |
| 43 | **Para que el agente, durante la llamada, conozca la información del cliente, existe un apartado de información del cliente que será desplegado tal y como se especifica EN EL REQUERIMIENTO NUMERO 3 DE HERRAMIENTAS EXTERNAS** | 2024-04-29 A → 2024-05-15 (+16d) | 2024-05-04 A → 2024-05-15 (+11d) | 6d → 0d | 100% → 0% | none → 14d |  |  |
| 49 | **Para facilitar el envío de los diferentes servicios (grúa, ambulancia y ajustador), el agente tiene un espacio en su pantalla principal para ingresar la ubicación del cliente para que el envío de los servicios se hagan a esa dirección.** | 2024-04-29 A → 2024-05-15 (+16d) | 2024-05-03 A → 2024-05-15 (+12d) | 5d → 0d | 100% → 0% | none → 14d |  |  |
| 55 | **Con los datos del cliente y a partir de sus pólizas, se despliega un menú que muestra los vehículos registrados del cliente.** | 2024-04-25 A → 2024-05-15 (+20d) |  | 18d → 0d | 94% → 0% | 0d → 14d |  |  |
| 61 | **En caso de necesitar proveer una ayuda rápida al cliente, el agente tiene una sección en su pantalla principal con 2 botones, uno para mandar ambulancia y otro para enviar grúa.** | 2024-05-04 A → 2024-05-15 (+11d) | 2024-05-04 A → 2024-05-15 (+11d) | 1d → 0d | 100% → 0% | none → 14d | Programar la funcionalidad del FrontEnd → none |  |
| 66 | <Tarea nueva> | 2024-05-05 A → 2024-05-15 (+10d) | 2024-05-05 A → 2024-05-15 (+10d) | 1d → 1d? | 100% → 0% |  |  | was named Implementar la lógica para generar datos dummy que indiquen el estado de un agente; resources Aldehil → Abigail |
| 67 | **Durante su conversación con el cliente, el agente le pregunta al cliente si necesita el servicio de una grúa, si el cliente dice que sí, deberá oprimir el botón "Mandar Grúa", este botón mandará una alerta con la ubicación del cliente y el agente le dirá** | 2024-05-05 A → 2024-05-15 (+10d) | 2024-05-14 A → 2024-05-15 (+1d) | 9d → 0d | 100% → 0% | none → 14d | Diseñar los componentes en el espacio designado de la aplicación → none |  |
| 68 | <Tarea nueva> | 2024-05-05 → 2024-05-15 (+10d) | 2024-05-05 A → 2024-05-15 (+10d) | 1d → 1d? | 100% → 0% |  |  | was named Cambiar los colores de un ícono a partir de datos dummies:; resources Aldehil → Abigail |
| 72 | **Durante su conversación con el cliente, el agente le pregunta al cliente si necesita asistencia médica, si el cliente dice que sí, deberá oprimir el botón "Mandar Ambulancia", este botón mandará una alerta con la ubicación del cliente y el agente le dirá** | 2024-05-05 A → 2024-05-15 (+10d) | 2024-05-14 A → 2024-05-15 (+1d) | 9d → 0d | 100% → 0% | none → 14d | Diseñar los componentes en el espacio designado de la aplicación → none |  |
| 78 | **Cuando se selecciona la opción de enviar ayuda (requerimiento 5, 6), automáticamente se manda un mensaje de texto al número del cliente en llamada con la alerta de ayuda en camino.** | 2024-05-04 A → 2024-05-15 (+11d) | 2024-05-14 → 2024-05-15 (+1d) | 10d → 0d | 93% → 0% | 1d → 14d |  |  |
| 79 | <Tarea nueva> | 2024-05-06 A → 2024-05-15 (+9d) | 2024-05-06 A → 2024-05-15 (+9d) | 1d → 1d? | 100% → 0% |  |  | was named Crear un botón de responder y desplegar una ventana emergente al darle tap:; resources Aldehil → Pablo |
| 80 | <Tarea nueva> | 2024-05-06 A → 2024-05-15 (+9d) | 2024-05-06 A → 2024-05-15 (+9d) | 1d → 1d? | 100% → 0% |  | 88 → none | was named Agregar un botón de responder a la ventana emergente creada en el milestone 4.; resources Aldehil → Pablo |
| 81 | <Tarea nueva> | 2024-05-06 A → 2024-05-15 (+9d) | 2024-05-06 A → 2024-05-15 (+9d) | 1d → 1d? | 100% → 0% |  | 88 → none | was named Implementar un controlador de eventos para este botón que abra otra ventana emergente al presionarlo.; resources Aldehil → Pablo |
| 84 | **En la sección izquierda, de la pantalla del agente, se muestra una transcripción en tiempo real de la llamada en curso** | 2024-04-30 A → 2024-05-15 (+15d) | 2024-05-10 A → 2024-05-15 (+5d) | 11d → 0d | 100% → 0% |  |  |  |
| 85 | <Tarea nueva> | 2024-05-14 → 2024-05-15 (+1d) | 2024-05-14 → 2024-05-15 (+1d) | 1d → 1d? |  | 1d → none | 86 → none | was named Integrar estos botones en la ventana emergente creada en el milestone 4.; resources Aldehil → Angel |
| 86 | <Tarea nueva> | 2024-05-13 → 2024-05-15 (+2d) | 2024-05-13 → 2024-05-15 (+2d) | 1d → 1d? |  | 1d → none | Crear y diseñar el componente en React → none | was named Identificar y reutilizar el código y los elementos de interfaz de usuario del requerimiento 2 que correspondan a los botones necesarios.; resources Aldehil → Angel |
| 87 | <Tarea nueva> | 2024-05-13 → 2024-05-15 (+2d) | 2024-05-14 → 2024-05-15 (+1d) | 2d → 1d? |  | 1d → none |  | was named Reutilizar los botones del requerimiento 2 y desplegarlos en la misma ventana emergente:; resources Aldehil → Angel |
| 88 | <Tarea nueva> | 2024-05-05 A → 2024-05-15 (+10d) | 2024-05-05 A → 2024-05-15 (+10d) | 1d → 1d? | 100% → 0% |  | 18 → none | was named Diseñar la interfaz de la ventana emergente para mostrar el mensaje recuperado del agente.; resources Aldehil → Angel |
| 89 | <Tarea nueva> | 2024-05-05 A → 2024-05-15 (+10d) | 2024-05-05 A → 2024-05-15 (+10d) | 1d → 1d? | 100% → 0% |  |  | was named Implementar un controlador de eventos para que el ícono de ayuda abra una ventana emergente al presionarlo.; resources Aldehil → Angel |
| 90 | **Al estar dentro de una llamada con el cliente, el agente puede ver los botones que le dan la opción de silenciar o colgar la llamada. Al silenciarla, el cliente no será posible de escuchar al agente hasta que este deshabilite esta opción. Al colgar la lla** | 2024-05-02 A → 2024-05-15 (+13d) | 2024-05-06 → 2024-05-15 (+9d) | 4d → 0d | 98% → 0% | 8.9d → 14d |  |  |
| 93 | <Tarea nueva> | 2024-04-30 A → 2024-05-15 (+15d) | 2024-05-10 A → 2024-05-15 (+5d) | 11d → 1d? | 100% → 0% |  |  | was named Poder recuperar un mensaje escrito por el supervisor a través del cuadro de texto, una vez que se le de a enviar:; resources Aldehil → Pablo |
| 95 | <Tarea nueva> | 2024-05-05 A → 2024-05-15 (+10d) | 2024-05-07 A → 2024-05-15 (+8d) | 3d → 1d? | 100% → 0% |  |  | was named Desplegar una ventana emergente al dar tap sobre el ícono de ayuda:; resources Aldehil → Pablo |
| 96 | **Botón de solicitud de ayuda en la pantalla principal. Al dar tap sobre él se desplegará un cuadro de texto para ingresar la descripción del problema y un botón que enviará la solicitud de ayuda, y un mensaje de confirmación al dar tap sobre el botón.** | 2024-05-01 A → 2024-05-15 (+14d) | 2024-05-14 → 2024-05-15 (+1d) | 13d → 0d | 96% → 0% | 1d → 14d | Diseñar el componente en el espacio designado de la aplicación → none |  |
| 97 | <Tarea nueva> | 2024-04-30 A → 2024-05-15 (+15d) | 2024-05-07 A → 2024-05-15 (+8d) | 1d → 1d? | 100% → 0% |  | 81 → none | was named Implementar la lógica para mostrar este mensaje de confirmación en la interfaz de usuario. |
| 98 | <Tarea nueva> | 2024-04-30 A → 2024-05-15 (+15d) | 2024-05-07 A → 2024-05-15 (+8d) | 1d → 1d? | 100% → 0% |  | 81 → none | was named Diseñar un mensaje de confirmación que se muestre al supervisor una vez que el mensaje haya sido correctamente guardado en la base de datos. |
| 99 | <Tarea nueva> | 2024-05-07 A → 2024-05-15 (+8d) | 2024-05-08 A → 2024-05-15 (+7d) | 2d → 1d? | 100% → 0% |  | 81 → none | was named Escribir la lógica para insertar el mensaje escrito por el supervisor en la base de datos al presionar el botón de enviar a través del endpoint configurado en la actividad anterior. |
| 100 | <Tarea nueva> | 2024-04-30 A → 2024-05-15 (+15d) | 2024-05-07 A → 2024-05-15 (+8d) | 7.5d → 1d? | 100% → 0% |  |  | was named Mostrar un mensaje de confirmación al finalizar este proceso: |
| 102 | **Ícono que cambia de color de acuerdo a los resultados del análisis sentimental del cliente. Se mantiene en verde si el cliente está feliz y tranquilo, amarillo si empieza a ponerse impaciente, y rojo si está enojado o frustrado.** | 2024-04-30 A → 2024-05-15 (+15d) | 2024-05-05 A → 2024-05-15 (+10d) | 6d → 0d | 100% → 0% | none → 14d | Configurar la instancia de Amazon Connect para recibir llamadas entrantes con un flujo predeterminado. → none |  |
| 103 | <Tarea nueva> | 2024-05-07 A → 2024-05-15 (+8d) | 2024-05-07 A → 2024-05-15 (+8d) | 1d → 1d? | 100% → 0% |  | 81 → none | was named Configurar el controlador en el API para insertar el mensaje en la BD.; resources Aldehil → Iván |
| 104 | <Tarea nueva> | 2024-04-30 A → 2024-05-15 (+15d) | 2024-04-30 A → 2024-05-15 (+15d) | 1d → 1d? | 100% → 0% |  | 81 → none | was named Capturar el texto ingresado por el supervisor en el cuadro de texto al presionar el botón de enviar.; resources Aldehil → Iván |
| 105 | <Tarea nueva> | 2024-04-30 A → 2024-05-15 (+15d) | 2024-04-30 A → 2024-05-15 (+15d) | 1d → 1d? | 100% → 0% |  | 81 → none | was named Configurar un controlador de eventos para el botón de enviar.; resources Aldehil → Iván |
| 106 | <Tarea nueva> | 2024-05-07 A → 2024-05-15 (+8d) | 2024-05-08 A → 2024-05-15 (+7d) | 2d → 1d? | 100% → 0% |  |  | was named Registrar el mensaje guardado en la base de datos:; resources Aldehil → Iván |
| 107 | <Tarea nueva> | 2024-05-07 A → 2024-05-15 (+8d) | 2024-05-07 A → 2024-05-15 (+8d) | 1d → 1d? | 100% → 0% |  | 81 → none | was named Configurar la conexión al endpoint, en la aplicación.; resources Aldehil → Iván |
| 108 | **Apartado de tiempo que muestra la duración de la llamada en tiempo real. Cambia de color de acuerdo a que tan cercano está al límite pre-establecido. Verde si está debajo del límite (2 minutos y medio o menos), amarillo si empieza a acercarse (2 minutos y** | 2024-04-30 A → 2024-05-15 (+15d) | 2024-05-15 A → 2024-05-15 | 15d → 0d | 100% → 0% | none → 14d |  |  |
| 110 | <Tarea nueva> | 2024-04-26 A → 2024-05-15 (+19d) | 2024-05-03 A → 2024-05-15 (+12d) | 6d → 1d? | 100% → 0% |  |  | was named Ver el menú lateral con las opciones de navegación del supervisor. Generar el diseño del menú; resources Ingrid → Iván |
| 113 | <Tarea nueva> | 2024-05-10 A → 2024-05-15 (+5d) | 2024-05-10 A → 2024-05-15 (+5d) | 1d → 1d? | 100% → 0% |  | 81 → none | was named Implementar la interfaz de usuario para incluir un cuadro de texto y un botón de enviar en la ventana emergente creada en el requerimiento 3 del supervisor.; constraint finish no earlier than 2024-05-10 → none; resources Aldehil → Iván |
| 114 | **El agente podrá acceder a un apartado en donde podrá verificar la evaluación y en caso de haberlos esccrito comentarios específicos de su supervisor** | 2024-04-30 A → 2024-05-15 (+15d) |  | 15d → 0d | 95% → 0% |  |  |  |
| 115 | <Tarea nueva> | 2024-05-05 A → 2024-05-15 (+10d) | 2024-05-06 A → 2024-05-15 (+9d) | 2d → 1d? | 100% → 0% |  |  | was named Rellenar la base de datos con información para generar pruebas de la funcionalidad; constraint finish no earlier than 2024-05-06 → none; resources Ingrid → Gerardo |
| 116 | <Tarea nueva> | 2024-05-15 A → 2024-05-15 | 2024-05-15 A → 2024-05-15 | 1d → 1d? | 100% → 0% |  |  | was named Asignar los colores adecuados para mostrar el funcionamiento de estas; constraint start no earlier than 2024-05-15 → none; resources Ingrid → Gerardo |
| 117 | <Tarea nueva> | 2024-05-04 A → 2024-05-15 (+11d) | 2024-05-08 A → 2024-05-15 (+7d) | 5d → 1d? | 100% → 0% |  |  | was named La información que se muestra de los agentes proviene de la base de datos.; resources Ingrid → Gerardo |
| 118 | <Tarea nueva> | 2024-05-04 A → 2024-05-15 (+11d) | 2024-05-04 A → 2024-05-15 (+11d) | 1d → 1d? | 100% → 0% |  |  | was named Conectar la base de datos con el backend; constraint start no earlier than 2024-05-04 → none; resources Ingrid → Gerardo |
| 119 | <Tarea nueva> | 2024-05-07 A → 2024-05-15 (+8d) | 2024-05-08 A → 2024-05-15 (+7d) | 2d → 1d? | 100% → 0% |  |  | was named Colocar las referencias correspondientes a las rutas para la información de cada agente; constraint start no earlier than 2024-05-07 → none; resources Ingrid → Gerardo |
| 120 | **Los agentes podrán ver las respuestas a sus solicitudes de ayuda, enviadas por el supervisor, en un centro de notificaciones en la pantalla principal. Para poder aplicar las medidas sugeridas por el supervisor.** | 2024-04-30 A → 2024-05-15 (+15d) |  | 15d → 0d | 50% → 0% |  |  |  |
| 121 | <Tarea nueva> | 2024-05-06 A → 2024-05-15 (+9d) | 2024-05-08 A → 2024-05-15 (+7d) | 3d → 1d? | 100% → 0% |  |  | was named Generar el diseño de la cuadrícula; constraint finish no earlier than 2024-05-08 → none; resources Ingrid → Dani |
| 122 | <Tarea nueva> | 2024-05-06 A → 2024-05-15 (+9d) | 2024-05-15 A → 2024-05-15 | 9d → 1d? | 100% → 0% |  |  | was named Ver la información de los agentes de manera cuadriculada, con datos que no provienen de la base de datos.; resources Ingrid → Dani |
| 123 | <Tarea nueva> | 2024-05-09 A → 2024-05-15 (+6d) | 2024-05-09 A → 2024-05-15 (+6d) | 1d → 1d? | 100% → 0% |  |  | was named Generar las rutas para acceder a la base de datos; constraint start no earlier than 2024-05-09 → none; resources Ingrid → Dani |
| 124 | <Tarea nueva> | 2024-05-09 A → 2024-05-15 (+6d) | 2024-05-11 A → 2024-05-15 (+4d) | 2d → 1d? | 100% → 0% |  |  | was named Generar las tablas en la base de datos; constraint finish no earlier than 2024-05-11 → none; resources Ingrid → Dani |
| 125 | <Tarea nueva> | 2024-05-13 A → 2024-05-15 (+2d) | 2024-05-14 A → 2024-05-15 (+1d) | 2d → 1d? | 100% → 0% |  |  | was named Colocar datos de prueba para probar la funcionalidad; constraint finish no earlier than 2024-05-14 → none; resources Ingrid → Dani |

| ID | Task | Start | Finish | Duration | Complete | Total float | Other |
| --- | --- | --- | --- | --- | --- | --- | --- |
| 126 | **Supervisor** | 2024-04-25 A → 2024-05-15 (+20d) | 2024-05-15 → 2024-06-03 (+19d) | 18d → 14d | 92% → 0% | 0d → none |  |
| 127 | **En la pantalla principal, se mostrará un listado de llamadas activas que serán escaladas, ordenadas por prioridad, donde se evaluara principalmente el estado emocional del cliente. Por ejemplo: Si el cliente se encuentra estresado, la llamada con el agent** | 2024-04-29 A → 2024-05-15 (+16d) | 2024-05-06 A → 2024-05-15 (+9d) | 8d → 0d | 100% → 0% |  |  |
| 129 | <Tarea nueva> | 2024-05-07 A → 2024-05-15 (+8d) | 2024-05-09 A → 2024-05-15 (+6d) | 3d → 1d? | 100% → 0% |  | was named Se muestra con texto los diferentes apartados con el KPI que deberían de mostrar.; resources Ingrid → Dani |
| 130 | <Tarea nueva> | 2024-04-26 A → 2024-05-15 (+19d) | 2024-04-30 A → 2024-05-15 (+15d) | 3d → 1d? | 100% → 0% |  | was named Crear las referencias a las páginas del menú; constraint finish no earlier than 2024-04-30 → none; resources Ingrid → Dani |
| 131 | <Tarea nueva> | 2024-05-01 A → 2024-05-15 (+14d) | 2024-05-02 A → 2024-05-15 (+13d) | 2d → 1d? | 100% → 0% |  | was named Colocar las referencias; constraint finish no earlier than 2024-05-02 → none; resources Ingrid → Dani |
| 132 | <Tarea nueva> | 2024-05-03 A → 2024-05-15 (+12d) | 2024-05-03 A → 2024-05-15 (+12d) | 1d → 1d? | 100% → 0% |  | was named Realizar el diseño adecuado al resto de la interfaz; constraint start no earlier than 2024-05-03 → none; resources Ingrid → Dani |
| 133 | **En la sección designada para mostrar las llamadas activas, en la pantalla principal, por cada llamada activa se tendrá el nombre del agente, el nombre del cliente, el tiempo desde que comenzó la llamada y un análisis sentimental, el cuál a través de una f** | 2024-05-07 A → 2024-05-15 (+8d) | 2024-05-14 → 2024-05-15 (+1d) | 7d → 0d | 96% → 0% |  |  |
| 135 | <Tarea nueva> | 2024-05-09 A → 2024-05-15 (+6d) | 2024-05-14 → 2024-05-15 (+1d) | 5d → 1d? | 70% → 0% | 1d → none | was named Colocar las referencias correspondientes para cada KPI respecto a la ruta para obtener la información correspondiente; constraint start no earlier than 2024-05-09 → none; resources Ingrid → Angel - Pobol |
| 139 | **Por cada llamada activa, ícono que cambia de color si un agente pide ayuda, al presionarlo, se mostrara el problema escrito por el agente y los datos del cliente, un botón para responder directamente, así como un botón para acceder a la transcripción de l** | 2024-05-05 → 2024-05-15 (+10d) |  | 10d → 0d | 75% → 0% |  |  |
| 140 | <Tarea nueva> | 2024-05-10 A → 2024-05-15 (+5d) | 2024-05-10 A → 2024-05-15 (+5d) | 1d → 1d? | 100% → 0% |  | was named Crear las tablas necesarias para la información de los KPIs; resources Ingrid → Aldehil |
| 141 | <Tarea nueva> | 2024-05-09 A → 2024-05-15 (+6d) | 2024-05-14 → 2024-05-15 (+1d) | 5d → 1d? | 80% → 0% | 1d → none | was named Generar las rutas y referencias necesarias para obtener la información de la base de dato; constraint start no earlier than 2024-05-09 → none; resources Ingrid → Aldehil |
| 142 | <Tarea nueva> | 2024-05-09 A → 2024-05-15 (+6d) | 2024-05-11 A → 2024-05-15 (+4d) | 2d → 1d? | 100% → 0% |  | was named Colocar datos prueba en cada KPI para mostrar la funcionalidad de los colores; constraint finish no earlier than 2024-05-11 → none; resources Ingrid → Aldehil |
| 143 | <Tarea nueva> | 2024-05-08 A → 2024-05-15 (+7d) | 2024-05-14 → 2024-05-15 (+1d) | 6d → 1d? | 75% → 0% | 1d → none | was named Las métricas y porcentajes visualizados provienen de la base de datos y de Amazon Connect, según corresponda.; resources Ingrid → Aldehil |
| 144 | <Tarea nueva> | 2024-05-08 A → 2024-05-15 (+7d) | 2024-05-08 A → 2024-05-15 (+7d) | 1d → 1d? | 100% → 0% |  | was named Llenar la base de datos con los datos necesarios; resources Ingrid → Aldehil |
| 145 | **Al dar tap sobre el botón de responder del requerimiento 3, se desplegará una ventana con un cuadro de texto para escribir la respuesta, y un botón para enviarla. Y un mensaje de confirmación al finalizar.** | 2024-04-30 A → 2024-05-15 (+15d) | 2024-05-10 A → 2024-05-15 (+5d) | 11d → 0d | 100% → 0% | none → 14d |  |
| 146 | <Tarea nueva> | 2024-05-08 A → 2024-05-15 (+7d) | 2024-05-09 A → 2024-05-15 (+6d) | 2d → 1d? | 100% → 0% |  | was named Generar los contextos y clases para colocar los objetos de los KPIs; constraint start no earlier than 2024-05-08 → none; resources Ingrid → Aldehil |
| 147 | <Tarea nueva> | 2024-05-07 A → 2024-05-15 (+8d) | 2024-05-08 A → 2024-05-15 (+7d) | 2d → 1d? | 100% → 0% |  | was named Generar el acomodo responsivo de los apartados de los KPIs; constraint finish no earlier than 2024-05-08 → none; resources Ingrid → Aldehil |
| 149 | <Tarea nueva> | 2024-05-09 A → 2024-05-15 (+6d) | 2024-05-09 A → 2024-05-15 (+6d) | 1d → 1d? | 100% → 0% |  | was named Colocar en texto cada uno de los KPIs en su espacio correspondiente; resources Ingrid → Aldehil |
| 150 | <Tarea nueva> | 2024-05-09 A → 2024-05-15 (+6d) | 2024-05-14 → 2024-05-15 (+1d) | 5d → 1d? | 81% → 0% | 1d → none | was named Las métricas y porcentajes mostrados son datos prueba; resources Ingrid → Aldehil |
| 151 | <Tarea nueva> | 2024-05-06 A → 2024-05-15 (+9d) | 2024-05-10 A → 2024-05-15 (+5d) | 5d → 1d? | 100% → 0% |  | was named Se realiza la prueba de selección del tiempo con la información correspondiente.; resources Ingrid → Aldehil |
| 152 | **En la pantalla principal se visualizará el nombre del cliente y el tiempo de espera de manera cronológica, con las llamadas que tienen más tiempo de espera ubicadas en la parte superior de la lista.** | 2024-04-29 A → 2024-05-15 (+16d) | 2024-05-04 A → 2024-05-15 (+11d) | 6d → 0d | 100% → 0% | none → 14d |  |
| 153 | <Tarea nueva> | 2024-05-01 A → 2024-05-15 (+14d) | 2024-05-02 A → 2024-05-15 (+13d) | 2d → 1d? | 100% → 0% |  | was named Recuperar los datos del analisis sentimental y duración de la llamada de Amazon Connect; resources Dani → Noh Ah |
| 155 | <Tarea nueva> | 2024-04-30 A → 2024-05-15 (+15d) | 2024-04-30 A → 2024-05-15 (+15d) | 0.5d → 1d? | 100% → 0% |  | was named Diseñar la interfaz de usuario para el centro de notificaciones.; resources Dani → Noh Ah |
| 156 | <Tarea nueva> | 2024-04-29 A → 2024-05-15 (+16d) | 2024-05-03 A → 2024-05-15 (+12d) | 5d → 1d? | 100% → 0% |  | was named Extraer datos de llamadas en espera desde Connect.; constraint start no earlier than 2024-04-29 → none |
| 157 | <Tarea nueva> | 2024-05-01 A → 2024-05-15 (+14d) | 2024-05-08 A → 2024-05-15 (+7d) | 8d → 1d? | 100% → 0% |  | was named Visualizar el filtro de búsqueda, con su filtro por defecto de 15 minutos y poder elegir una fecha que vaya máximo 60 días atrás.; resources Ingrid → Noh Ah |
| 158 | **La pantalla principal contara con un menú lateral en el que se visualicen las pantallas de navegación. En la pantalla principal se muestran los agentes del grupo, cada uno con un indicador acerca de su estado (disponible, en llamada, descanso o ausente).** | 2024-04-26 A → 2024-05-16 (+20d) | 2024-05-15 A → 2024-05-31 (+16d) | 17d → 12d | 100% → 0% |  |  |
| 166 | Cambiar el color de las métricas de acuerdo al número desplegado | 2024-05-01 A → 2024-05-29 (+28d) | 2024-05-01 A → 2024-05-31 (+30d) | 1d → 3d | 100% → 0% |  | was named Investigar y seleccionar algoritmos adecuados para cada tarea.; constraint start no earlier than 2024-05-01 → none; resources Dani → Ingrid |
| 167 | **Al seleccionar uno de los KPI en la pantalla se podrán visualizar datos históricos por medio de gráficas para elegir el tiempo deseado, siendo 60 días el máximo atrás que se puede elegir.** | 2024-05-01 A → 2024-05-15 (+14d) | 2024-05-11 A → 2024-06-03 (+23d) | 10d → 14d | 100% → 0% | none → 0d |  |
| 176 | Se generan las peticiones correspondientes para agrupar la información de los KPIs, según corresponda a la elección de tiempo | 2024-04-29 A → 2024-05-15 (+16d) | 2024-05-04 A → 2024-05-20 (+16d) | 6d → 4d | 100% → 0% | none → 10d | was named Visualizar el nombre del cliente y el tiempo de espera de cada llamada en espera en la pantalla principal.; resources Noh Ah → Ingrid |
| 178 | **El supervisor puede acceder al perfil de cada agente desde un botón en el menú lateral. Podrá ver los datos generales del agente (nombre, imagen, horario laboral) y los KPIs de su atención de llamadas en un día específico (llamadas respondidas, abandonada** | 2024-05-01 A → 2024-05-15 (+14d) |  | 14d → 0d | 85% → 0% | 0d → 14d |  |
| 179 | <Tarea nueva> | 2024-05-01 A → 2024-05-15 (+14d) | 2024-05-01 A → 2024-05-15 (+14d) | 1d → 1d? | 100% → 0% |  | was named Colocar un botón de Ver más; resources Ingrid → Noh Ah |
| 181 | <Tarea nueva> | 2024-05-02 A → 2024-05-15 (+13d) | 2024-05-02 A → 2024-05-15 (+13d) | 1d → 1d? | 100% → 0% |  | was named Colocar el filtro de selección de búsqueda; constraint start no earlier than 2024-05-02 → none; resources Ingrid → Noh Ah |
| 182 | <Tarea nueva> | 2024-05-03 A → 2024-05-15 (+12d) | 2024-05-03 A → 2024-05-15 (+12d) | 1d → 1d? | 100% → 0% |  | was named Generar la vista con la gráfica, en lugar de la métrica anteriormente visualizada; constraint start no earlier than 2024-05-03 → none; resources Ingrid → Noh Ah |
| 183 | <Tarea nueva> | 2024-05-06 A → 2024-05-15 (+9d) | 2024-05-06 A → 2024-05-15 (+9d) | 1d → 1d? | 100% → 0% |  | was named Colocar gráficas con datos prueba para verificar la visualización; constraint start no earlier than 2024-05-06 → none; resources Ingrid → Noh Ah |
| 184 | **El superviso puede acceder a un apartado en donde podrá contetar unas preguntas las cuales podrán evaluar el desempeño del agente. Y en cas de necesitar ser más objetivo durante su comentario, complementarlo con un comentario más detallado.** | 2024-04-30 → 2024-05-15 (+15d) |  | 14.5d → 0d | 91% → 0% |  |  |
| 185 | <Tarea nueva> | 2024-05-08 A → 2024-05-15 (+7d) | 2024-05-11 A → 2024-05-15 (+4d) | 3d → 1d? | 100% → 0% |  | was named Se hace uso únicamente el llamado de información de los últimos 15 minutos; constraint finish no earlier than 2024-05-11 → none; resources Ingrid → Gerardo |
| 186 | <Tarea nueva> | 2024-05-07 A → 2024-05-15 (+8d) | 2024-05-08 A → 2024-05-15 (+7d) | 2d → 1d? | 100% → 0% |  | was named Se ingresan los datos necesarias para poder realizar las pruebas dentro de la base de datos; constraint finish no earlier than 2024-05-08 → none; resources Ingrid → Gerardo |
| 187 | <Tarea nueva> | 2024-05-03 A → 2024-05-15 (+12d) | 2024-05-04 A → 2024-05-15 (+11d) | 2d → 1d? | 100% → 0% |  | was named Se colocan las rutas adecuadas para poder hacer los queries necesarios; resources Ingrid → Gerardo |
| 188 | <Tarea nueva> | 2024-05-03 A → 2024-05-15 (+12d) | 2024-05-11 A → 2024-05-15 (+4d) | 8d → 1d? | 100% → 0% |  | was named Se visualizan las gráficas correspondientes al KPI elegido, con su filtro por defecto.; resources Ingrid → Gerardo |
| 189 | <Tarea nueva> | 2024-05-07 A → 2024-05-15 (+8d) | 2024-05-08 A → 2024-05-15 (+7d) | 2d → 1d? | 100% → 0% |  | was named Generar los queries necesarios para realizar la busqueda; constraint finish no earlier than 2024-05-08 → none; resources Ingrid → Gerardo |

## Version 4 (saved 2024-05-15, file Qualicenter 85.mpp)

Last finish 2024-06-03 → 2024-05-15 (-19d). Complete tasks 0 → 217.

Added:

| ID | Task | Duration | Start | Finish | Predecessors | Constraint | Resources |
| --- | --- | --- | --- | --- | --- | --- | --- |
| 4 | **Recibir la llamada con Amazon Connect.** | 1d | 2024-04-29 A | 2024-04-29 A |  |  | Gustavo |
| 5 | Crear la instancia de Amazon Connect en una cuenta de AWS. | 1d | 2024-04-29 A | 2024-04-29 A |  | start no earlier than 2024-04-29 | Gustavo |
| 6 | Reclamar un número de teléfono y asignarlo a la instancia | 0d | 2024-04-29 A | 2024-04-29 A |  | start no earlier than 2024-04-29 | Gustavo |
| 7 | Configurar la instancia de Amazon Connect para recibir llamadas entrantes con un flujo predeterminado. | 1d | 2024-04-29 A | 2024-04-29 A | 6 |  | Gustavo |
| 8 | **Tener el control de la llamada.** | 2.1d | 2024-04-30 A | 2024-05-02 A |  |  | Gustavo |
| 9 | Crear las cuentas de agentes y administradores, con sus atributos respectivos como nombres y horarios. | 0.5d | 2024-04-30 A | 2024-04-30 A | 7 |  | Gustavo |
| 10 | Implementar funcionalidades de colas | 0.5d | 2024-04-30 A | 2024-04-30 A | 9 |  | Gustavo |
| 11 | Implementar ruteos y prioridades de colas. | 0d | 2024-04-30 A | 2024-04-30 A | 10 |  | Gustavo |
| 12 | Crear un flujo propio de control de llamadas | 1d | 2024-05-01 A | 2024-05-01 A | 11 |  | Gustavo |
| 13 | Asignar el flujo al número reclamado y asignado a la instancia | 0.1d | 2024-05-02 A | 2024-05-02 A | 12 |  | Gustavo |
| 14 | **Indicarle a Connect iniciar el registro del tiempo de la llamada.** | 7.5d | 2024-05-02 A | 2024-05-09 A | 13 |  | Gustavo |
| 15 | Asignar permisos a Amazon Connect de acceso a Lambda mediante un perfil de IAM | 0.5d | 2024-05-02 A | 2024-05-02 A | 13 |  | Gustavo |
| 16 | Implementar un atributo de Amazon Connect de duración de llamada para las llamadas finalizadas, el cual utilizará la API de Amazon Connect Flow para en cualquier momento obtener la duración total de una llamada finalizada. | 3d | 2024-05-02 A | 2024-05-05 A | 15 |  | Gustavo |
| 17 | Adicionalmente para cada llamada capturar detalles importantes como el número del llamante, el ID de llamada y tiempo. Guardarlos como atributos en el flujo de llamada en la instancia de Amazon Connect. | 0d | 2024-05-06 A | 2024-05-06 A | 16 |  | Gustavo |
| 18 | Iniciar un temporizador para cada llamada que se reciba, para así implementar una función Lambda en el flujo de llamadas, el cual podrá ser llamada en cualquier momento para obtener la duración en tiempo real de manera precisa para cada llamada. | 3d | 2024-05-06 A | 2024-05-09 A | 17 |  | Gustavo |
| 19 | **Recuperar el tiempo registrado por connect.** | 4d | 2024-05-09 A | 2024-05-14 A |  |  | Gustavo |
| 20 | Implementar en la interfaz de usuario la duración acumulada de la llamada para los agentes y administradores relevantes | 3d | 2024-05-09 A | 2024-05-13 A | 18 |  | Gustavo |
| 21 | Realizar pruebas exhaustivas invocando al API desde la interfaz, para garantizar el seguimiento correcto de la duración y la recuperación de datos de llamada. Validar contra diferentes escenarios como transferencias de llamada | 1d | 2024-05-13 A | 2024-05-14 A | 20 |  | Gustavo |
| 23 | **Recuperar el número del cliente.** | 1d | 2024-04-29 A | 2024-04-29 A |  |  | Gustavo |
| 24 | Asignar un atributo en el flujo de Amazon Connect que guarde el número del cliente para cada llamada | 1d | 2024-04-29 A | 2024-04-29 A |  |  | Gustavo |
| 25 | **Comparar el número con los clientes para encontrar al cliente.** | 5d | 2024-05-03 A | 2024-05-07 A | 13 |  | Gustavo |
| 26 | Montar y llenar una base de datos para relacionar números telefónicos de los clientes a datos individuales como nombre y número de póliza | 2d | 2024-05-03 A | 2024-05-04 A | 13 |  | Gustavo |
| 27 | Implementar una función Lambda en el flujo de la instancia de Amazon Connect, el cual comparará el número de un cliente guardado en un atributo con los números guardados en la base de datos. | 1d | 2024-05-07 A | 2024-05-07 A | 26 |  | Gustavo |
| 28 | **Recuperar la información de ese cliente.** | 1d | 2024-05-10 A | 2024-05-10 A |  |  | Gustavo |
| 29 | Dentro de la función Lambda en el flujo de la instancia de Amazon Connect, después de hacer un match con los datos de un cliente y su número, regresará los datos del cliente de la base de datos para así guardarlos como atributo en la instancia. | 1d | 2024-05-10 A | 2024-05-10 A | 27 |  | Gustavo |
| 30 | **Si todos los agentes están ocupados, notificarle al cliente que está en la cola de espera.** | 0.5d | 2024-05-14 A | 2024-05-14 A |  |  | Gustavo |
| 31 | Modificar las colas de espera de la instancia de Amazon Connect para que ocurran distintos escenarios si la cola está llena. | 0d | 2024-05-14 A | 2024-05-14 A | 29 |  | Gustavo |
| 32 | Si la cola está llena o no hay agentes disponibles, entonces reproducir un audio que indique que no hay un agente disponible reproducido en un loop. | 0d | 2024-05-14 A | 2024-05-14 A | 31 |  | Gustavo |
| 33 | Si la cola no está llena y hay agentes disponibles, rutear la llamada al flujo propio de la instancia | 0.5d | 2024-05-14 A | 2024-05-14 A | 32 |  | Gustavo |
| 35 | **Desplegar toda la información del cliente.** | 4d | 2024-05-03 A | 2024-05-06 A | 13 |  | Gustavo |
| 36 | Configurar el API de Amazon Connect y las funciones Lambda asignadas al flujo de llamada para recuperar datos del cliente | 1d | 2024-05-03 A | 2024-05-03 A | 13 |  | Gustavo |
| 37 | Implementar una interfaz de usuario en la aplicación del agente para mostrar los datos del cliente, incluyendo nombre, edad, datos de póliza y tiempo acumulado de llamada. | 1d | 2024-05-06 A | 2024-05-06 A | 36 |  | Gustavo |
| 38 | **Generar una alerta en la pantalla del agente sobre una llamada entrante** | 3.5d | 2024-05-09 A | 2024-05-13 A |  |  | Gustavo |
| 39 | Configurar el API de Amazon Connect para crear una interfaz “Agent Workspace” dentro de la aplicación | 1d | 2024-05-09 A | 2024-05-09 A | 37 |  | Gustavo |
| 40 | Generar una alerta en la pantalla del agente sobre una llamada entrante, utilizando mensajes emergentes y sonidos audibles. | 0.5d | 2024-05-13 A | 2024-05-13 A | 39 |  | Gustavo |
| 41 | **Establecer la conexión entre el agente y el cliente.** | 1d | 2024-05-13 A | 2024-05-14 A |  |  | Gustavo |
| 42 | Implementar la funcionalidad de conexión entre el agente y el cliente, utilizando las funcionalidades del API de Amazon Connect y la interfaz “Agent Workspace”. | 0.5d | 2024-05-13 A | 2024-05-13 A | 40 |  | Gustavo |
| 43 | Asignar a cada perfil de Agente en la instancia de Amazon Connect un tiempo “After-Call-Work” | 0d | 2024-05-14 A | 2024-05-14 A | 42 |  | Gustavo |
| 44 | Mostrar el temporizador “After-Call-Work” en la aplicación después de desconectar cada llamada. | 0.5d | 2024-05-14 A | 2024-05-14 A | 43 |  | Gustavo |
| 46 | **Inicio una llamada entre agente y cliente** | 8d | 2024-04-24 A | 2024-05-03 A |  |  | Angel |
| 47 | Configurar Amazon Connect par amanejar llamadas entrantes | 5d | 2024-04-24 A | 2024-04-30 A |  |  | Angel |
| 48 | Hacer que el sistema pueda identificar usuarios y conectar las llamadas correctamente entre agente y cliente | 1d | 2024-05-01 A | 2024-05-01 A | 47 |  | Angel |
| 49 | Integrar el API necesario para capturar el audio de la llamada en tiempo real | 1d | 2024-05-03 A | 2024-05-03 A |  |  | Angel |
| 50 | **Se registra el análisis sentimental del cliente** | 6d | 2024-05-03 A | 2024-05-08 A |  |  | Angel |
| 51 | Aprender a obtener el analisis sentimental | 1d | 2024-05-03 A | 2024-05-03 A |  |  | Angel |
| 52 | Desarrollar el backend para enviar texto transcrito (del audio) al servicio de análisis de sentimientos | 3d | 2024-05-06 A | 2024-05-08 A |  |  | Angel |
| 53 | Configurar la integración para que cada segmento de texto transcrito se envíe al servicio de análisis tan pronto como esté disponible. | 2d | 2024-05-07 A | 2024-05-08 A |  |  | Angel |
| 54 | **Se registra la transcripción en tiempo real** | 3d | 2024-05-08 A | 2024-05-10 A |  |  | Angel |
| 55 | Verificar si se necesita usar Amazon Transcribe y aprenderlo, o si basta con Amazon Comprehend | 1d | 2024-05-08 A | 2024-05-08 A |  |  | Angel |
| 56 | Configurar Amazon Connect para enviar un audio | 1d | 2024-05-09 A | 2024-05-09 A | 55 |  | Angel |
| 57 | Crear función para recibir y procesar el texto transcrito. | 1d | 2024-05-10 A | 2024-05-10 A | 56 |  | Angel |
| 60 | **Tener un panel visible donde se colocara el script.** | 2d | 2024-04-25 A | 2024-04-26 A |  |  | Eduardo |
| 61 | Realizar el front-end del panel donde se colocara el script. | 2d | 2024-04-25 A | 2024-04-26 A |  |  | Eduardo |
| 62 | **Colocar un script dummy en el panel** | 2d | 2024-04-30 A | 2024-05-01 A |  |  | Eduardo |
| 63 | Crear un script con datos dummy directo en el front-end | 2d | 2024-04-30 A | 2024-05-01 A | 61 |  | Eduardo |
| 64 | **Visualizar datos reales en el script.** | 8d | 2024-05-03 A | 2024-05-10 A |  |  | Eduardo |
| 65 | Crear una conexión a la Base de Datos para traer por la API los datos del cliente y colocarlos en tiempo real en el script. | 8d | 2024-05-03 A | 2024-05-10 A | 63 |  | Eduardo |
| 66 | **Colocar los campos de registro** | 4d | 2024-05-12 A | 2024-05-15 A |  |  | Eduardo |
| 67 | Crear y hacer funcionales los campos de registro de la información del cliente | 4d | 2024-05-12 A | 2024-05-15 A | 65 |  | Eduardo |
| 69 | **Visualiza un apartado con datos dummy del cliente** | 3d | 2024-04-29 A | 2024-05-01 A |  |  | Eduardo |
| 70 | Los datos dummy del cliente se visualizan en el Frontend del panel | 3d | 2024-04-29 A | 2024-05-01 A |  |  | Eduardo |
| 71 | **Visualiza un apartado con los datos reales del cliente en tiempo real** | 3d | 2024-05-02 A | 2024-05-04 A |  |  | Eduardo |
| 72 | Se crea una conexión a la base de datos y los datos del cliente se visualizan en tiempo real | 3d | 2024-05-02 A | 2024-05-04 A | 70 |  | Eduardo |
| 74 | **Espacio para escribir la dirección del cliente:** | 5d | 2024-04-29 A | 2024-05-03 A |  |  | Abigail |
| 75 | Crear archivo CSS | 0.5d | 2024-04-29 A | 2024-04-29 A |  |  | Abigail |
| 76 | Crear archivo JS | 0.5d | 2024-04-29 A | 2024-04-29 A | 75 |  | Abigail |
| 77 | Diseñar el componente en el espacio designado de la aplicación | 1d | 2024-04-30 A | 2024-04-30 A | 76 |  | Abigail |
| 78 | Programar la funcionalidad del FrontEnd | 3d | 2024-05-01 A | 2024-05-03 A | 77 |  | Abigail |
| 80 | **Visualiza un apartado con datos dummy del cliente** | 4d | 2024-04-25 A | 2024-04-30 A |  |  | Eduardo |
| 81 | Los datos dummy del cliente se visualizan en el Frontend del panel | 4d | 2024-04-25 A | 2024-04-30 A |  |  | Eduardo |
| 82 | **Visualiza un apartado con los datos reales del cliente en tiempo rea** | 12d | 2024-05-03 A | 2024-05-15 A |  |  | Eduardo |
| 83 | Se crea una conexión a la base de datos. | 6d | 2024-05-03 A | 2024-05-08 A |  |  | Eduardo |
| 84 | Dependiendo de la póliza del cliente con un condicional despliega información sobre sus autos | 6d | 2024-05-09 A | 2024-05-15 A | 83 |  | Eduardo |
| 86 | **Diseñar y posicionar los botones correctamente:** | 1d | 2024-05-04 A | 2024-05-04 A |  |  | Abigail |
| 87 | Crear archivo CSS | 0.5d | 2024-05-04 A | 2024-05-04 A |  |  | Abigail |
| 88 | Crear archivo JS | 0.3d | 2024-05-04 A | 2024-05-04 A | 87 |  | Abigail |
| 89 | Diseñar los componentes en el espacio designado de la aplicación | 0.2d | 2024-05-04 A | 2024-05-04 A | 88 |  | Abigail |
| 91 | **Recuperar el número del cliente:** | 2d | 2024-05-05 A | 2024-05-06 A |  |  | Abigail |
| 92 | API para recuperar el número del cliente | 1d | 2024-05-05 A | 2024-05-05 A |  |  | Abigail |
| 93 | Conexión de la funcionalidad del botón con el BackEnd | 1d | 2024-05-06 A | 2024-05-06 A | 92 |  | Abigail |
| 94 | **Recuperar la dirección del cliente** | 1d | 2024-05-07 A | 2024-05-07 A |  |  | Abigail |
| 95 | Funciónalidad que reciba la dirección desde el FrontEnd | 1d | 2024-05-07 A | 2024-05-07 A | 93 |  | Abigail |
| 96 | **Mandar un SMS con la alerta** | 6d | 2024-05-08 A | 2024-05-14 A |  |  | Abigail |
| 97 | Configurar instancia Amazon SNS | 2d | 2024-05-08 A | 2024-05-09 A | 95 |  | Abigail |
| 98 | API para mandar el mensaje | 2d | 2024-05-10 A | 2024-05-12 A | 97 |  | Abigail |
| 99 | Función Lambda para mandar el mensaje | 2d | 2024-05-13 A | 2024-05-14 A | 98 |  | Abigail |
| 101 | **Recuperar el número del cliente:** | 2d | 2024-05-05 A | 2024-05-06 A |  |  | Abigail |
| 102 | API para recuperar el número del cliente | 1d | 2024-05-05 A | 2024-05-05 A |  |  | Abigail |
| 103 | Conexión de la funcionalidad del botón con el BackEnd | 1d | 2024-05-06 A | 2024-05-06 A | 102 |  | Abigail |
| 104 | **Recuperar la dirección del cliente** | 1d | 2024-05-07 A | 2024-05-07 A |  |  | Abigail |
| 105 | Funciónalidad que reciba la dirección desde el FrontEnd | 1d | 2024-05-07 A | 2024-05-07 A | 103 |  | Abigail |
| 106 | **Mandar un SMS con la alerta** | 6d | 2024-05-08 A | 2024-05-14 A |  |  | Abigail |
| 107 | Configurar instancia Amazon SNS | 2d | 2024-05-08 A | 2024-05-09 A | 105 |  | Abigail |
| 108 | API para mandar el mensaje | 2d | 2024-05-10 A | 2024-05-12 A | 107 |  | Abigail |
| 109 | Función Lambda para mandar el mensaje | 2d | 2024-05-13 A | 2024-05-14 A | 108 |  | Abigail |
| 111 | **Ser capaz de generar una liga de un servicio de mapas (Como google maps) que contenga una dirección.** | 1d | 2024-05-04 A | 2024-05-04 A |  |  | Pablo |
| 112 | Investigar al respecto, ya sea una API u otra forma de saberlo. | 1d | 2024-05-04 A | 2024-05-04 A | 73 |  | Pablo |
| 113 | Generar enlaces a partir de un script que reciba como input una dirección y retorne un enlace. | 1d | 2024-05-04 A | 2024-05-04 A | 73 |  | Pablo |
| 114 | **Ser capaz de enviar mensajes de texto a través de un script de JS.** | 2d | 2024-05-04 A | 2024-05-05 A |  |  | Pablo |
| 115 | Investigar sobre alguna librería o API que me permita enviar mensajes a un número dado. | 1d | 2024-05-04 A | 2024-05-04 A | 73 |  | Pablo |
| 116 | Escribir un código capaz de enviar mensajes a un número dado. | 1d | 2024-05-05 A | 2024-05-05 A | 115 |  | Pablo |
| 117 | Incluir un mensaje predeterminado e incluir el enlace alcanzado con el milestone | 1d | 2024-05-05 A | 2024-05-05 A | 115 |  | Pablo |
| 118 | **Notificar al agente del registro adecuado de la dirección por medio de un banner** | 3d | 2024-04-25 A | 2024-04-29 A |  |  | Pablo |
| 119 | Colocar un boton de submit junto al campo de ingreso de dirección | 2d | 2024-04-25 A | 2024-04-26 A |  |  | Pablo |
| 120 | Aceptar dirección unicamente en caso de haber información en el campo de ingreso | 2d | 2024-04-25 A | 2024-04-26 A |  |  | Pablo |
| 121 | Desabilitar los botones de grua y ambulancia hasta que sea registrada la dirección | 3d | 2024-04-25 A | 2024-04-29 A |  |  | Pablo |
| 122 | Mostrar un banner de 5 segundos que notifique del correcto registro de la dirección y de su url | 1d | 2024-04-29 A | 2024-04-29 A |  | start no earlier than 2024-04-29 | Pablo |
| 124 | **Se recupera la transcripción registrada de la llamada** | 8d | 2024-04-30 A | 2024-05-07 A |  |  | Angel |
| 125 | Recuperar la transcripción de la llamada | 1d | 2024-04-30 A | 2024-04-30 A |  |  | Angel |
| 126 | Desarrollar un sistema de bufferización para almacenar temporalmente las transcripciones mientras son procesadas y antes de ser mostradas. | 6d | 2024-05-01 A | 2024-05-06 A | 125 |  | Angel |
| 127 | **Se muestra la transcripción de la llamada** | 10d | 2024-04-30 A | 2024-05-09 A |  |  | Angel |
| 128 | Diseñar la interfaz donde se mostrarán las transcripciones | 1d | 2024-04-30 A | 2024-04-30 A |  |  | Angel |
| 129 | Crear una aplicación en React para crear los componentes funcionales necesarios y para actualizaciones en tiempo real | 1d | 2024-05-01 A | 2024-05-01 A | 128 |  | Angel |
| 130 | La transcripción mostrada esté sincronizada con el audio de la llamada, actualizando la pantalla a medida que se disponga | 8d | 2024-05-02 A | 2024-05-09 A | 129 | finish no earlier than 2024-05-09 | Angel |
| 131 | Crear API endpoints para recuperar las transcripciones desde el almacenamiento temporal o buffer y enviarlas al frontend de la aplicación del agente. | 9d | 2024-05-01 A | 2024-05-09 A | 125 | finish no earlier than 2024-05-09 | Angel |
| 132 | **Se anima la transcripción para que sea claramente legible** | 2d | 2024-05-03 A | 2024-05-04 A |  |  | Angel |
| 133 | Crear y diseñar el archivo CSS o bibliotecas de JavaScript para animar el scroll del texto | 2d | 2024-05-03 A | 2024-05-04 A |  |  | Angel |
| 135 | **Visualizar la llamada al conectar Amazon Connect con la página.** | 3d | 2024-05-02 A | 2024-05-05 A |  |  | Pablo |
| 136 | Una vez finalizado el funcionamiento y flujo de nuestra instancia de Connect, incluirla en nuestra página web en las pantallas correspondientes. | 1d | 2024-05-02 A | 2024-05-03 A | 8 |  | Pablo |
| 137 | Verificar el funcionamiento deseado de la llamada al realizar pruebas. | 1d | 2024-05-03 A | 2024-05-04 A | 136 |  | Pablo |
| 138 | Observar el comportamiento del flujo de la llamada establecido. | 1d | 2024-05-04 A | 2024-05-05 A | 137 |  | Pablo |
| 139 | **Utilizar eficientemente los botones incluidos en Amazon Connect para finalizar y silenciar llamadas.** | 1d | 2024-05-05 A | 2024-05-06 A |  |  | Pablo |
| 140 | Al ver la llamada, se visualizan los botones de colgar y silenciar. | 1d | 2024-05-05 A | 2024-05-06 A | 138 |  | Pablo |
| 141 | los botones cumplen con su función. | 1d | 2024-05-05 A | 2024-05-06 A | 138 |  | Pablo |
| 143 | **Mostrar el botón de ayuda en la pantalla principal del agente** | 13d | 2024-05-01 A | 2024-05-14 A |  |  | Aldehil |
| 144 | Implementar la interfaz de usuario para incluir el botón de ayuda en la pantalla principal. | 9d | 2024-05-01 A | 2024-05-14 A |  |  | Aldehil |
| 145 | Verificar que el botón sea visible y esté correctamente ubicado. | 0d | 2024-05-01 A | 2024-05-01 A | 144 |  | Aldehil |
| 146 | Confirmar que el botón responda a eventos de tap o clic. | 0d | 2024-05-01 A | 2024-05-01 A | 145 |  | Aldehil |
| 147 | Agregar un controlador de eventos al botón de ayuda. | 1d | 2024-05-02 A | 2024-05-02 A | 146 |  | Aldehil |
| 148 | Cuando el usuario toque el botón, enviar un mensaje a la consola para indicar que se ha activado el botón de ayuda. | 0d | 2024-05-02 A | 2024-05-02 A | 147 |  | Aldehil |
| 165 | **El ícono se muestra con sus 3 colores (verde, amarillo, rojo).** | 1d | 2024-04-30 A | 2024-04-30 A |  |  | Iván |
| 166 | Se crea el componente para el ícono. | 1d | 2024-04-30 A | 2024-04-30 A | 7 |  | Iván |
| 167 | Se posiciona el componente dentro de la página. | 1d | 2024-04-30 A | 2024-04-30 A | 7 |  | Iván |
| 168 | El componente se puede mostrar en 3 colores (verde, rojo, amarillo). | 1d | 2024-04-30 A | 2024-04-30 A | 7 |  | Iván |
| 169 | El componente no presenta ningún fallo. | 1d | 2024-04-30 A | 2024-04-30 A | 7 |  | Iván |
| 170 | **El componente se ha vinculado con éxito a consultas en la base de datos y puede comunicarse con ella.** | 2d | 2024-05-01 A | 2024-05-02 A |  |  | Iván |
| 171 | Se implementa función para hacer que el componente cambie de color. | 0.5d | 2024-05-01 A | 2024-05-01 A | 169 |  | Iván |
| 172 | Se establecen parámetros dentro de la función según la información que se va a adquirir. | 1d | 2024-05-01 A | 2024-05-01 A | 169 |  | Iván |
| 173 | Se crea una rutina para recibir la información pertinente de la base de datos. | 1d | 2024-05-02 A | 2024-05-02 A | 172 |  | Iván |
| 174 | Se reciben los datos que necesita la función sin errores. | 1d | 2024-05-02 A | 2024-05-02 A | 172 |  | Iván |
| 175 | **El componente cumple con todas sus funcionalidades al usar datos pre-fabricados.** | 1d | 2024-05-03 A | 2024-05-03 A |  |  | Iván |
| 176 | Se generan datos pre-fabricados de prueba. 3.2 La función del componente recibe los datos. | 1d | 2024-05-03 A | 2024-05-03 A | 174 |  | Iván |
| 177 | La función del componente hace que el ícono cambie de color a partir de los datos. | 1d | 2024-05-03 A | 2024-05-03 A | 174 |  | Iván |
| 178 | No hay errores en el color mostrado. | 1d | 2024-05-03 A | 2024-05-03 A | 174 |  | Iván |
| 179 | **El componente cumple con todas sus funcionalidades en una llamada de prueba en tiempo real.** | 2d | 2024-05-04 A | 2024-05-05 A |  |  | Iván |
| 180 | Se realizan llamadas en tiempo real. | 1d | 2024-05-04 A | 2024-05-04 A | 178 |  | Iván |
| 181 | El componente recibe información adecuadamente. | 1d | 2024-05-05 A | 2024-05-05 A | 180 |  | Iván |
| 182 | El componente cambia de color adecuadamente. | 1d | 2024-05-05 A | 2024-05-05 A | 180 |  | Iván |
| 183 | No hay errores en el color mostrado. | 1d | 2024-05-05 A | 2024-05-05 A | 180 |  | Iván |
| 185 | **El componente se muestra con sus 3 colores (verde, amarillo, rojo).** | 2d | 2024-04-30 A | 2024-05-01 A |  |  | Iván |
| 186 | Se crea el componente para el contador de tiempo de la llamada. | 1d | 2024-04-30 A | 2024-04-30 A |  | start no earlier than 2024-04-30 | Iván |
| 187 | Se posiciona el componente dentro de la página. | 1d | 2024-05-01 A | 2024-05-01 A | 186 |  | Iván |
| 188 | El componente se puede mostrar en 3 colores (verde, rojo, amarillo). | 1d | 2024-05-01 A | 2024-05-01 A | 186 |  | Iván |
| 189 | El componente no presenta ningún fallo. | 1d | 2024-05-01 A | 2024-05-01 A | 186 |  | Iván |
| 190 | **El componente se ha vincluado con éxito a consultas en la base de datos y se comunica con ella.** | 4d | 2024-05-02 A | 2024-05-05 A |  |  | Iván |
| 191 | Se implementa función para hacer que el componente cambie de color. | 1d | 2024-05-02 A | 2024-05-02 A | 189 |  | Iván |
| 192 | Se establecen parámetros dentro de la función según la información que se va a adquirir. | 1d | 2024-05-03 A | 2024-05-03 A | 191 |  | Iván |
| 193 | Se crea una rutina para recibir la información pertinente de la base de datos. | 1d | 2024-05-04 A | 2024-05-04 A | 192 |  | Iván |
| 194 | Se reciben los datos que necesita la función sin errores. | 1d | 2024-05-05 A | 2024-05-05 A | 193 |  | Iván |
| 195 | **El componente despliega el tiempo de la llamada exitósamente.** | 4d | 2024-05-06 A | 2024-05-09 A |  |  | Iván |
| 196 | Se realizan llamadas de prueba. | 1d | 2024-05-06 A | 2024-05-06 A | 194 |  | Iván |
| 197 | La función del componente recibe los datos. | 1d | 2024-05-07 A | 2024-05-07 A | 196 |  | Iván |
| 198 | La función del componente hace que muestre el tiempo actual de la llamada. | 1d | 2024-05-08 A | 2024-05-08 A | 197 |  | Iván |
| 199 | No hay errores en el tiempo mostrado. | 1d | 2024-05-09 A | 2024-05-09 A | 198 |  | Iván |
| 200 | **El color del componente cambia de acuerdo al tiempo de la llamada y cuánto se ha acercado al límite en una llamada en tiempo real.** | 4d | 2024-05-12 A | 2024-05-15 A |  |  | Iván |
| 201 | Se realizan llamadas de prueba. | 1d | 2024-05-12 A | 2024-05-12 A | 199 | start no earlier than 2024-05-12 | Iván |
| 202 | El componente recibe información adecuadamente. | 1d | 2024-05-13 A | 2024-05-13 A | 201 |  | Iván |
| 203 | El componente cambia de color adecuadamente (verde si está debajo de 2 minutos y medio, amarillo di se está en 2 minutos y medio hasta 3, rojo si se ha pasado de 3). | 1d | 2024-05-14 A | 2024-05-14 A | 202 |  | Iván |
| 204 | No hay errores en el tiempo o color mostrado. | 1d | 2024-05-15 A | 2024-05-15 A | 203 |  | Iván |
| 206 | **Diseñar un botón que describa correctamente la sección.** | 1d | 2024-04-30 A | 2024-04-30 A | 241 |  | Gerardo |
| 207 | Agregar dentro del la interfaz del agente un botón con la descripción del apartado. | 0.5d | 2024-04-30 A | 2024-04-30 A |  |  | Gerardo |
| 208 | El botón debe de seguir la fuente y los colores de la empresa. | 0.5d | 2024-04-30 A | 2024-04-30 A | 207 |  | Gerardo |
| 209 | **Recuperar los datos y comentarios de la evaluación del supervisor.** | 1d | 2024-05-01 A | 2024-05-01 A |  |  | Gerardo |
| 210 | Acceder a la base de datos para jalar los resultados de la encuesta del respectivo agente | 1d | 2024-05-01 A | 2024-05-01 A | 208 |  | Gerardo |
| 211 | **Mostrar los datos apartados de una forma clara.** | 7d | 2024-05-03 A | 2024-05-09 A |  |  | Gerardo |
| 212 | Mostrar el apartado de puntaje en pantalla | 1d | 2024-05-03 A | 2024-05-03 A |  |  | Gerardo |
| 213 | Mostrar el apartado de los comentarios en pantalla | 1d | 2024-05-09 A | 2024-05-09 A | 212 | finish no earlier than 2024-05-09 | Gerardo |
| 215 | **Creación de la pantalla para el centro de notificaciones.** | 0.5d | 2024-04-30 A | 2024-04-30 A |  |  | Dani |
| 217 | Desarrollar la funcionalidad básica de la pantalla de notificaciones. | 0.5d | 2024-04-30 A | 2024-04-30 A |  |  | Dani |
| 218 | **Implementación del cuadro de mensaje para mostrar el texto del supervisor.** | 1d | 2024-05-15 A | 2024-05-15 A |  |  | Dani |
| 219 | Diseñar la apariencia del cuadro de mensaje. | 0.5d | 2024-05-15 A | 2024-05-15 A | 223 |  | Dani |
| 220 | Programar la funcionalidad para mostrar el texto del supervisor en el cuadro de mensaje. | 0.5d | 2024-05-15 A | 2024-05-15 A | 219 |  | Dani |
| 221 | **Integración de texto de sugerencia o ayuda con datos dummy en la pantalla de notificaciones.** | 2d | 2024-05-13 A | 2024-05-14 A |  |  | Dani |
| 222 | Establecer un canal de comunicación para recibir el texto del supervisor. | 1d | 2024-05-13 A | 2024-05-13 A | 226 |  | Dani |
| 223 | Desarrollar la lógica para dirigir el texto del supervisor a la pantalla de notificaciones. | 1d | 2024-05-14 A | 2024-05-14 A | 222 |  | Dani |
| 224 | **Implementación exitosa de los mensajes dummy en el centro de notificaciones.** | 1d | 2024-05-09 A | 2024-05-09 A |  |  | Dani |
| 225 | Probar la visualización de los mensajes en el centro de notificaciones. | 1d | 2024-05-09 A | 2024-05-09 A | 271 |  | Dani |
| 226 | Probar el funcionamiento del cuadro del centro de notificaciones. | 1d | 2024-05-09 A | 2024-05-09 A | 271 |  | Dani |
| 231 | Implementar y probar los algoritmos para garantizar su precisión y eficacia. | 1d | 2024-05-02 A | 2024-05-02 A | 230 |  | Dani |
| 232 | **Desarrollo completo de los algoritmos para análisis sentimental del cliente, cálculo de duración acumulada de la llamada y detección de solicitud de asistencia del agente.** | 1d | 2024-05-03 A | 2024-05-03 A |  |  | Dani |
| 233 | Recuperar información del estado de la solicitud de asistencia. | 1d | 2024-05-03 A | 2024-05-03 A | 231 |  | Dani |
| 234 | Generar funciones de cálculo de duración de llamada, calculo del análisis sentimental del agente y detección solicitud de asistencia e iniciar pruebas de visualización. | 1d | 2024-05-03 A | 2024-05-03 A | 231 |  | Dani |
| 235 | **Diseño finalizado de la interfaz de usuario para visualizar las llamadas activas con prioridad.** | 1d | 2024-05-04 A | 2024-05-04 A |  |  | Dani |
| 236 | Diseñar la disposición y la apariencia de la interfaz de usuario. | 1d | 2024-05-04 A | 2024-05-04 A | 234 |  | Dani |
| 237 | Crear prototipos y realizar pruebas de usabilidad para asegurar una experiencia de usuario óptima. | 1d | 2024-05-04 A | 2024-05-04 A | 234 |  | Dani |
| 239 | **Se recupera la información de una llamada** | 7d | 2024-05-07 A | 2024-05-14 |  |  | Angel - Pobol |
| 240 | Configurar endpoints que recuperen los datos en tiempo real de las llamadas activas | 1d | 2024-05-07 A | 2024-05-07 | 126 | finish no earlier than 2024-05-07 | Angel - Pobol |
| 241 | Utilizar Amazon Connect para actualizar los datos continuamente | 1d | 2024-05-08 A | 2024-05-08 A | 240 |  | Angel - Pobol |
| 242 | Verifica que la API recupere todos los datos | 6d | 2024-05-08 A | 2024-05-14 A | 240 | finish no earlier than 2024-05-14 | Angel - Pobol |
| 243 | **Se visualiza el nombre del agente, el nombre del cliente, el tiempo acumulado y análisis sentimental** | 5d | 2024-05-09 A | 2024-05-14 A |  |  | Angel - Pobol |
| 244 | Crear una aplicacion React con los respectivos componentes | 1d | 2024-05-09 A | 2024-05-09 A |  |  | Angel - Pobol |
| 245 | Permitir que la interfaz se actualice a medida que cambian los datos | 2d | 2024-05-09 A | 2024-05-14 A |  | finish no earlier than 2024-05-14 | Angel - Pobol |
| 246 | **Hay un botón que dice transcripción de la llamada** | 3d | 2024-05-12 A | 2024-05-14 A |  |  | Angel - Pobol |
| 247 | Crear y diseñar el componente en React | 1d | 2024-05-12 A | 2024-05-12 A |  |  | Angel - Pobol |
| 248 | Obtener datos actualizados de la transcripción | 1d | 2024-05-12 A | 2024-05-12 A |  |  | Angel - Pobol |
| 249 | Verifica que la API recupere todos los datos | 1d | 2024-05-14 A | 2024-05-14 A |  | finish no earlier than 2024-05-14 | Angel - Pobol |
| 253 | Utilizar estos datos para cambiar dinámicamente el color del ícono en la interfaz de | 1d | 2024-04-25 A | 2024-04-25 A |  |  |  |
| 278 | Diseñar la interfaz de usuario en la pantalla principal para mostrar el nombre del cliente y el tiempo de espera de cada llamada. | 1d | 2024-05-04 A | 2024-05-04 A |  | start no earlier than 2024-05-04 | Noh Ah |
| 294 | **En la pantalla de KPIs general se mostrara la resolución al primer contactoc(porcentaje), abandono de llamadas (porcentaje), nivel de servicio(porcentaje), tiempo promedio de llamada(métrica), velocidad media de respuesta(métrica), ocupación de centro de** | 7d | 2024-05-07 A | 2024-05-14 A |  |  | Ingrid |
| 303 | Generar la conexión con Amazon Connect | 5d | 2024-05-09 A | 2024-05-14 A |  | finish no earlier than 2024-05-10 | Ingrid |
| 318 | **La información mostrada en las gráficas corresponde al filtro elegido de búsqueda.** | 5d | 2024-05-06 A | 2024-05-10 A |  |  | Ingrid |
| 320 | Se implementan los colores y diseño establecido. | 1d | 2024-05-07 A | 2024-05-07 A |  |  | Ingrid |
| 322 | **Visualizar lo datos generales de los agentes.** | 6d | 2024-05-01 A | 2024-05-06 A |  |  | Noh Ah |
| 323 | Configurar el acceso a los datos de los agentes desde Amazon Connect. | 4d | 2024-05-01 A | 2024-05-04 A |  | start no earlier than 2024-04-30 | Noh Ah |
| 324 | Extraer los datos de los agentes desde Connect. | 3d | 2024-05-04 A | 2024-05-06 A |  |  | Noh Ah |
| 325 | Diseñar la interfaz de usuario para mostrar los datos generales de los agentes. | 2d | 2024-05-05 A | 2024-05-06 A |  | finish no earlier than 2024-05-06 | Noh Ah |
| 326 | **Consultar los KPIs de atención de llamadas.** | 6d | 2024-05-08 A | 2024-05-14 A |  |  | Noh Ah |
| 327 | Configurar la extracción de datos de los KPIs desde Connect. | 5d | 2024-05-08 A | 2024-05-13 A |  | finish no earlier than 2024-05-13 | Noh Ah |
| 328 | Desarrollar la lógica para consultar y calcular los KPIs (llamadas respondidas, abandonadas, duración promedio). | 3d | 2024-05-12 A | 2024-05-14 A |  |  | Noh Ah |
| 330 | **Redactar las preguntas necesarias que se pueda argumentar de manera clara y efectiva para describir el desempaño del agente.** | 11d | 2024-04-25 A | 2024-05-07 A |  |  | Gerardo |
| 331 | Redactar preguntas que ayuden a puntuar y a describir el trabajo del agente. | 1d | 2024-04-25 A | 2024-04-25 A |  |  | Gerardo |
| 332 | Agregar un apartado donde se puedan puntuar del 1 al 10 el desempeño del agente | 1d | 2024-05-07 A | 2024-05-07 A | 325 |  | Gerardo |
| 333 | **Diseñar el apartado de las preguntas de manera clara.** | 1d | 2024-05-08 A | 2024-05-08 A |  |  | Gerardo |
| 334 | Diseñar una interfaz donde se pueda ver la división clara de cada una de las preguntas. | 1d | 2024-05-08 A | 2024-05-08 A | 332 |  | Gerardo |
| 335 | **Agregar una sección de comentarios para cada una de las preguntas.** | 0.5d | 2024-05-09 A | 2024-05-09 A |  |  | Gerardo |
| 336 | Establecer de manera clara que apartado de comentarios corresponde a cada pregunta | 0.5d | 2024-05-09 A | 2024-05-09 A | 334 |  | Gerardo |
| 337 | Guardar los datos de la encuesta al agente en la base de datos. | 1d | 2024-05-09 A | 2024-05-10 A |  |  | Gerardo |

Removed: 4 <Tarea nueva>; 5 <Tarea nueva>; 14 <Tarea nueva>; 24 <Tarea nueva>; 25 <Tarea nueva>; 26 <Tarea nueva>; 27 <Tarea nueva>; 28 <Tarea nueva>; 30 <Tarea nueva>; 31 <Tarea nueva>; 32 <Tarea nueva>; 33 <Tarea nueva>; 34 <Tarea nueva>; 37 <Tarea nueva>; 38 <Tarea nueva>; 39 <Tarea nueva>; 40 <Tarea nueva>; 41 <Tarea nueva>; 42 <Tarea nueva>; 44 <Tarea nueva>; 45 <Tarea nueva>; 46 <Tarea nueva>; 47 <Tarea nueva>; 48 <Tarea nueva>; 50 <Tarea nueva>; 51 <Tarea nueva>; 52 <Tarea nueva>; 53 <Tarea nueva>; 54 <Tarea nueva>; 56 <Tarea nueva>; 57 <Tarea nueva>; 58 <Tarea nueva>; 59 <Tarea nueva>; 60 <Tarea nueva>; 62 <Tarea nueva>; 63 <Tarea nueva>; 64 <Tarea nueva>; 65 <Tarea nueva>; 69 <Tarea nueva>; 70 <Tarea nueva>; 71 <Tarea nueva>; 73 <Tarea nueva>; 74 <Tarea nueva>; 75 <Tarea nueva>; 76 <Tarea nueva>; 77 <Tarea nueva>; 82 <Tarea nueva>; 83 <Tarea nueva>; 91 <Tarea nueva>; 92 <Tarea nueva>; 94 <Tarea nueva>; 101 <Tarea nueva>; 109 <Tarea nueva>; 111 <Tarea nueva>; 112 <Tarea nueva>; 128 <Tarea nueva>; 134 <Tarea nueva>; 136 <Tarea nueva>; 137 <Tarea nueva>; 138 <Tarea nueva>; 148 <Tarea nueva>; 154 <Tarea nueva>; 159 Se muestra el KPI correspondiente a partir de un botón; 160 Generar conexión con Amazon Connect; 161 Generar controllers para la información correcta de cada KPI; 162 Insertar lógica correspondiente en el Front end, botón y uso de react); 163 Se muestra el KPI de manera automática y se actualiza cada 15 segundos; 164 Generar rutas para el pedido de cada uno de los requerimientos pedidos; 165 Colocar la lógica a través de react para pedir la información cada 15 segundos de; 168 Se muestra la métrica del momento en la gráfica; 169 Crear tabla de KPIs; 170 Generar controllers para que cada KPI sea guardado en la base de datos; 171 Generar rutas para acceder a la métrica especificado del momento actual; 172 Generar lógica para pedir la información de cada KPI en el momento para generar; 173 Se muestra la métrica especificada por la fecha o momento seleccionado, por; 174 Se ingresa la lógica para la información de los últimos15 minutos desde la base de; 175 Se genera la gráfica correspondiente; 177 Se prueban el pedido de información según se selecciona en el frontend y se; 180 <Tarea nueva>

Changed:

| ID | Task | Start | Finish | Duration | Complete | Total float | Predecessors | Other |
| --- | --- | --- | --- | --- | --- | --- | --- | --- |
| 1 | **Sprint 85%** | 2024-05-15 → 2024-04-24 A (-21d) | 2024-06-03 → 2024-05-15 (-19d) | 14d? → 19d | 0% → 99% | none → 0d |  | was named Sprint 100% |
| 2 | **Cliente** | 2024-05-15 → 2024-04-24 A (-21d) | 2024-05-15 → 2024-05-14 A (-1d) | 0d → 17.6d | 0% → 100% | 14d → none |  |  |
| 3 | **El sistema debe ser capaz de registrar el tiempo acumulado de la llamada desde el momento en que el agente conteste la llamada** | 2024-05-15 → 2024-04-29 A (-16d) | 2024-05-15 → 2024-05-14 A (-1d) | 0d → 14.6d | 0% → 100% | 14d → none |  | was named El sistema debe ser capaz de registrar el tiempo acumulado de la llamada desde el momento en que el cliente marca al número de atención. |
| 22 | **El sistema debe buscar un agente disponible para atender la llamada, si no hay uno entonces se deberá colocar la llamada en una cola de esperal. . El sistema debe identificar al cliente mediante su número de teléfono, si el cliente está registrado con una** | 2024-05-15 → 2024-04-29 A (-16d) | 2024-05-15 → 2024-05-14 A (-1d) | 0d → 14.5d | 0% → 100% | 14d → none |  |  |
| 34 | **El sistema debe mostrar al agente los datos del cliente, incluyendo nombre, edad, datos de póliza y tiempo acumulado de llamada .l agente debe recibir una notificación de la llamada entrante junto con una cuenta regresiva antes de que pueda volver a reali** | 2024-05-15 → 2024-05-03 A (-12d) | 2024-05-15 → 2024-05-14 A (-1d) | 0d → 10.5d | 0% → 100% | 14d → none | none → 13 |  |
| 45 | **Se registra, por llamada, el analisis sentimental y la transcripción en tiempo real cuando la conexión entre el cliente y el agente comienza** | 2024-05-15 → 2024-04-24 A (-21d) | 2024-05-15 → 2024-05-10 A (-5d) | 0d → 15d | 0% → 100% | 14d → none |  |  |
| 58 | **Agente** | 2024-05-15 → 2024-04-25 A (-20d) | 2024-05-15 A | 1d → 18d | 0% → 100% |  |  |  |
| 59 | **El agente visualiza un script del dialogo que va a tener con el cliente:** | 2024-05-15 → 2024-04-25 A (-20d) | 2024-05-15 A | 0d → 18d | 0% → 100% | 14d → none |  |  |
| 68 | **Para que el agente, durante la llamada, conozca la información del cliente, existe un apartado de información del cliente que será desplegado tal y como se especifica EN EL REQUERIMIENTO NUMERO 3 DE HERRAMIENTAS EXTERNAS** | 2024-05-15 → 2024-04-29 A (-16d) | 2024-05-15 → 2024-05-04 A (-11d) | 0d → 6d | 0% → 100% | 14d → none |  |  |
| 73 | **Para facilitar el envío de los diferentes servicios (grúa, ambulancia y ajustador), el agente tiene un espacio en su pantalla principal para ingresar la ubicación del cliente para que el envío de los servicios se hagan a esa dirección.** | 2024-05-15 → 2024-04-29 A (-16d) | 2024-05-15 → 2024-05-03 A (-12d) | 0d → 5d | 0% → 100% | 14d → none |  |  |
| 79 | **Con los datos del cliente y a partir de sus pólizas, se despliega un menú que muestra los vehículos registrados del cliente.** | 2024-05-15 → 2024-04-25 A (-20d) | 2024-05-15 A | 0d → 18d | 0% → 100% | 14d → none |  |  |
| 85 | **En caso de necesitar proveer una ayuda rápida al cliente, el agente tiene una sección en su pantalla principal con 2 botones, uno para mandar ambulancia y otro para enviar grúa.** | 2024-05-15 → 2024-05-04 A (-11d) | 2024-05-15 → 2024-05-04 A (-11d) | 0d → 1d | 0% → 100% | 14d → none | none → 78 |  |
| 90 | **Durante su conversación con el cliente, el agente le pregunta al cliente si necesita el servicio de una grúa, si el cliente dice que sí, deberá oprimir el botón "Mandar Grúa", este botón mandará una alerta con la ubicación del cliente y el agente le dirá** | 2024-05-15 → 2024-05-05 A (-10d) | 2024-05-15 → 2024-05-14 A (-1d) | 0d → 9d | 0% → 100% | 14d → none | none → 89 |  |
| 100 | **Durante su conversación con el cliente, el agente le pregunta al cliente si necesita asistencia médica, si el cliente dice que sí, deberá oprimir el botón "Mandar Ambulancia", este botón mandará una alerta con la ubicación del cliente y el agente le dirá** | 2024-05-15 → 2024-05-05 A (-10d) | 2024-05-15 → 2024-05-14 A (-1d) | 0d → 9d | 0% → 100% | 14d → none | none → 89 |  |
| 110 | **Cuando se selecciona la opción de enviar ayuda (requerimiento 5, 6), automáticamente se manda un mensaje de texto al número del cliente en llamada con la alerta de ayuda en camino.** | 2024-05-15 → 2024-04-25 A (-20d) | 2024-05-15 → 2024-05-05 A (-10d) | 0d → 9d | 0% → 100% | 14d → none |  |  |
| 123 | **En la sección izquierda, de la pantalla del agente, se muestra una transcripción en tiempo real de la llamada en curso** | 2024-05-15 → 2024-04-30 A (-15d) | 2024-05-15 → 2024-05-10 A (-5d) | 0d → 11d | 0% → 100% |  |  |  |
| 134 | **Al estar dentro de una llamada con el cliente, el agente puede ver los botones que le dan la opción de silenciar o colgar la llamada. Al silenciarla, el cliente no será posible de escuchar al agente hasta que este deshabilite esta opción. Al colgar la lla** | 2024-05-15 → 2024-05-02 A (-13d) | 2024-05-15 → 2024-05-06 A (-9d) | 0d → 4d | 0% → 100% | 14d → none |  |  |
| 142 | **Botón de solicitud de ayuda en la pantalla principal. Al dar tap sobre él se desplegará un cuadro de texto para ingresar la descripción del problema y un botón que enviará la solicitud de ayuda, y un mensaje de confirmación al dar tap sobre el botón.** | 2024-05-15 → 2024-05-01 A (-14d) | 2024-05-15 → 2024-05-14 A (-1d) | 0d → 13d | 0% → 100% | 14d → none | none → 77 |  |
| 149 | **Desplegar una ventana emergente al darle tap al botón:** | 2024-05-15 → 2024-05-03 A (-12d) | 2024-05-15 → 2024-05-04 A (-11d) | 1d? → 2d | 0% → 100% |  |  | was named <Tarea nueva>; resources Gustavo → Aldehil |
| 150 | Crear una ventana emergente que se muestre al tocar el botón de ayuda. | 2024-05-15 → 2024-05-03 A (-12d) | 2024-05-15 → 2024-05-03 A (-12d) | 1d? → 1d | 0% → 100% |  | none → 148 | was named <Tarea nueva>; resources Gustavo → Aldehil |
| 151 | Diseñar la interfaz de la ventana emergente para incluir un cuadro de texto y un botón de enviar. | 2024-05-15 → 2024-05-03 A (-12d) | 2024-05-15 → 2024-05-04 A (-11d) | 1d? → 2d | 0% → 100% |  | none → 148 | was named <Tarea nueva>; resources Gustavo → Aldehil |
| 152 | **Guardar un mensaje escrito por el usuario en el cuadro de texto:** | 2024-05-15 → 2024-05-05 A (-10d) | 2024-05-15 → 2024-05-06 A (-9d) | 1d? → 2d | 0% → 100% |  |  | was named <Tarea nueva>; resources Gustavo → Aldehil |
| 153 | Implementar la lógica para capturar el texto ingresado por el usuario en el cuadro detexto. | 2024-05-15 → 2024-05-05 A (-10d) | 2024-05-15 → 2024-05-05 A (-10d) | 1d? → 1d | 0% → 100% |  | none → 151 | was named <Tarea nueva>; resources Gustavo → Aldehil |
| 154 | Verificar que el texto se almacene correctamente en una variable o estructura de datos. | 2024-05-15 → 2024-05-05 A (-10d) | 2024-05-15 → 2024-05-05 A (-10d) | 1d? → 1d | 0% → 100% |  | none → 151 | was named <Tarea nueva>; resources Gustavo → Aldehil |
| 155 | Agregar un controlador de eventos al botón de enviar en la ventana emergente. | 2024-05-15 → 2024-05-06 A (-9d) | 2024-05-15 → 2024-05-06 A (-9d) | 1d? → 1d | 0% → 100% |  | none → 154 | was named <Tarea nueva>; resources Gustavo → Aldehil |
| 156 | Al tocar el botón de enviar, enviar el mensaje almacenado en la consola. | 2024-05-15 → 2024-05-06 A (-9d) | 2024-05-15 → 2024-05-06 A (-9d) | 1d? → 1d | 0% → 100% |  | none → 154 | was named <Tarea nueva>; resources Gustavo → Aldehil |
| 157 | **Registrar el mensaje guardado en la base de datos:** | 2024-05-15 → 2024-05-07 A (-8d) | 2024-05-15 → 2024-05-09 A (-6d) | 1d? → 3d | 0% → 100% |  |  | was named <Tarea nueva>; resources Gustavo → Aldehil |
| 158 | Configurar el controlador en el API para insertar el mensaje en la BD. | 2024-05-15 → 2024-05-07 A (-8d) | 2024-05-15 → 2024-05-08 A (-7d) | 1d? → 2d | 0% → 100% |  | none → 156 | was named <Tarea nueva>; resources Gustavo → Aldehil |
| 159 | Configurar la conexión al endpoint, en la aplicación | 2024-05-15 → 2024-05-09 A (-6d) | 2024-05-15 → 2024-05-09 A (-6d) | 1d? → 1d | 0% → 100% |  | none → 158 | was named <Tarea nueva>; resources Gustavo → Aldehil |
| 160 | Escribir la lógica para insertar el mensaje en la base de datos haciendo uso del endpoint. | 2024-05-15 → 2024-05-09 A (-6d) | 2024-05-15 → 2024-05-09 A (-6d) | 1d? → 1d | 0% → 100% |  | none → 158 | was named <Tarea nueva>; resources Gustavo → Aldehil |
| 161 | **Desplegar un mensaje de confirmación al terminar este proceso:** | 2024-05-15 → 2024-05-10 A (-5d) | 2024-05-15 → 2024-05-10 A (-5d) | 1d? → 1d | 0% → 100% |  |  | was named <Tarea nueva>; resources Gustavo → Aldehil |
| 162 | Diseñar un mensaje de confirmación que se muestre al usuario después de guardar el mensaje en la base de datos. | 2024-05-15 → 2024-05-10 A (-5d) | 2024-05-15 → 2024-05-10 A (-5d) | 1d? → 1d | 0% → 100% |  | none → 160 | was named <Tarea nueva>; resources Gustavo → Aldehil |
| 163 | Mostrar el mensaje de confirmación en la pantalla principal del agente una vez que se utilice el botón de enviar. | 2024-05-15 → 2024-05-10 A (-5d) | 2024-05-15 → 2024-05-10 A (-5d) | 1d? → 1d | 0% → 100% |  | none → 160 | was named <Tarea nueva>; resources Gustavo → Aldehil |
| 164 | **Ícono que cambia de color de acuerdo a los resultados del análisis sentimental del cliente. Se mantiene en verde si el cliente está feliz y tranquilo, amarillo si empieza a ponerse impaciente, y rojo si está enojado o frustrado.** | 2024-05-15 → 2024-04-30 A (-15d) | 2024-05-15 → 2024-05-05 A (-10d) | 0d → 6d | 0% → 100% | 14d → none | none → 7 |  |
| 184 | **Apartado de tiempo que muestra la duración de la llamada en tiempo real. Cambia de color de acuerdo a que tan cercano está al límite pre-establecido. Verde si está debajo del límite (2 minutos y medio o menos), amarillo si empieza a acercarse (2 minutos y** | 2024-05-15 → 2024-04-30 A (-15d) | 2024-05-15 A | 0d → 15d | 0% → 100% | 14d → none |  |  |
| 205 | **El agente podrá acceder a un apartado en donde podrá verificar la evaluación y en caso de haberlos esccrito comentarios específicos de su supervisor** | 2024-05-15 → 2024-04-30 A (-15d) | 2024-05-15 A | 0d → 15d | 0% → 100% |  |  |  |
| 214 | **Los agentes podrán ver las respuestas a sus solicitudes de ayuda, enviadas por el supervisor, en un centro de notificaciones en la pantalla principal. Para poder aplicar las medidas sugeridas por el supervisor.** | 2024-05-15 → 2024-04-30 A (-15d) | 2024-05-15 A | 0d → 15d | 0% → 100% |  |  |  |
| 216 | Diseñar la interfaz de usuario para el centro de notificaciones. | 2024-05-15 → 2024-04-30 A (-15d) | 2024-05-15 → 2024-04-30 A (-15d) | 1d? → 0.5d | 0% → 100% |  |  | was named <Tarea nueva>; resources Noh Ah → Dani |
| 227 | **Supervisor** | 2024-05-15 → 2024-04-25 A (-20d) | 2024-06-03 → 2024-05-15 (-19d) | 14d → 18d | 0% → 99% | none → 0d |  |  |
| 228 | **En la pantalla principal, se mostrará un listado de llamadas activas que serán escaladas, ordenadas por prioridad, donde se evaluara principalmente el estado emocional del cliente. Por ejemplo: Si el cliente se encuentra estresado, la llamada con el agent** | 2024-05-15 → 2024-04-29 A (-16d) | 2024-05-15 → 2024-05-06 A (-9d) | 0d → 8d | 0% → 100% |  |  |  |
| 229 | **Recuperar los datos del analisis sentimental y duración de la llamada de Amazon Connect** | 2024-05-15 → 2024-05-01 A (-14d) | 2024-05-15 → 2024-05-02 A (-13d) | 1d? → 2d | 0% → 100% |  |  | was named <Tarea nueva>; resources Noh Ah → Dani |
| 230 | Investigar y seleccionar algoritmos adecuados para cada tarea. | 2024-05-29 → 2024-05-01 A (-28d) | 2024-05-31 → 2024-05-01 A (-30d) | 3d → 1d | 0% → 100% |  |  | was named Cambiar el color de las métricas de acuerdo al número desplegado; constraint none → start no earlier than 2024-05-01; resources Ingrid → Dani |
| 238 | **En la sección designada para mostrar las llamadas activas, en la pantalla principal, por cada llamada activa se tendrá el nombre del agente, el nombre del cliente, el tiempo desde que comenzó la llamada y un análisis sentimental, el cuál a través de una f** | 2024-05-15 → 2024-05-07 A (-8d) | 2024-05-15 → 2024-05-14 (-1d) | 0d → 7d | 0% → 94% |  |  |  |
| 250 | **Por cada llamada activa, ícono que cambia de color si un agente pide ayuda, al presionarlo, se mostrara el problema escrito por el agente y los datos del cliente, un botón para responder directamente, así como un botón para acceder a la transcripción de l** | 2024-05-15 → 2024-05-05 (-10d) | 2024-05-15 A | 0d → 10d | 0% → 100% |  |  |  |
| 251 | **Cambiar los colores de un ícono a partir de datos dummies:** | 2024-05-15 → 2024-05-05 (-10d) | 2024-05-15 → 2024-05-05 A (-10d) | 1d? → 1d | 0% → 100% |  |  | was named <Tarea nueva>; resources Abigail → Aldehil |
| 252 | Implementar la lógica para generar datos dummy que indiquen el estado de un agente | 2024-05-15 → 2024-05-05 A (-10d) | 2024-05-15 → 2024-05-05 A (-10d) | 1d? → 1d | 0% → 100% |  |  | was named <Tarea nueva>; resources Abigail → Aldehil |
| 254 | **Desplegar una ventana emergente al dar tap sobre el ícono de ayuda:** | 2024-05-15 → 2024-05-05 A (-10d) | 2024-05-15 → 2024-05-07 A (-8d) | 1d? → 3d | 0% → 100% |  |  | was named <Tarea nueva>; resources Pablo → Aldehil |
| 255 | Implementar un controlador de eventos para que el ícono de ayuda abra una ventana emergente al presionarlo. | 2024-05-15 → 2024-05-05 A (-10d) | 2024-05-15 → 2024-05-05 A (-10d) | 1d? → 1d | 0% → 100% |  |  | was named <Tarea nueva>; resources Angel → Aldehil |
| 256 | Diseñar la interfaz de la ventana emergente para mostrar el mensaje recuperado del agente. | 2024-05-15 → 2024-05-05 A (-10d) | 2024-05-15 → 2024-05-05 A (-10d) | 1d? → 1d | 0% → 100% |  | none → 157 | was named <Tarea nueva>; resources Angel → Aldehil |
| 257 | **Reutilizar los botones del requerimiento 2 y desplegarlos en la misma ventana emergente:** | 2024-05-15 → 2024-05-13 A (-2d) | 2024-05-15 → 2024-05-14 A (-1d) | 1d? → 2d | 0% → 100% |  |  | was named <Tarea nueva>; resources Angel → Aldehil |
| 258 | Identificar y reutilizar el código y los elementos de interfaz de usuario del requerimiento 2 que correspondan a los botones necesarios. | 2024-05-15 → 2024-05-13 A (-2d) | 2024-05-15 → 2024-05-13 A (-2d) | 1d? → 1d | 0% → 100% |  | none → 247 | was named <Tarea nueva>; resources Angel → Aldehil |
| 259 | Integrar estos botones en la ventana emergente creada en el milestone 4. | 2024-05-15 → 2024-05-14 A (-1d) | 2024-05-15 → 2024-05-14 A (-1d) | 1d? → 1d | 0% → 100% |  | none → 258 | was named <Tarea nueva>; resources Angel → Aldehil |
| 260 | **Crear un botón de responder y desplegar una ventana emergente al darle tap:** | 2024-05-15 → 2024-05-06 A (-9d) | 2024-05-15 → 2024-05-06 A (-9d) | 1d? → 1d | 0% → 100% |  |  | was named <Tarea nueva>; resources Pablo → Aldehil |
| 261 | Agregar un botón de responder a la ventana emergente creada en el milestone 4. | 2024-05-15 → 2024-05-06 A (-9d) | 2024-05-15 → 2024-05-06 A (-9d) | 1d? → 1d | 0% → 100% |  | none → 256 | was named <Tarea nueva>; resources Pablo → Aldehil |
| 262 | Implementar un controlador de eventos para este botón que abra otra ventana emergente al presionarlo. | 2024-05-15 → 2024-05-06 A (-9d) | 2024-05-15 → 2024-05-06 A (-9d) | 1d? → 1d | 0% → 100% |  | none → 256 | was named <Tarea nueva>; resources Pablo → Aldehil |
| 263 | **Al dar tap sobre el botón de responder del requerimiento 3, se desplegará una ventana con un cuadro de texto para escribir la respuesta, y un botón para enviarla. Y un mensaje de confirmación al finalizar.** | 2024-05-15 → 2024-04-30 A (-15d) | 2024-05-15 → 2024-05-10 A (-5d) | 0d → 11d | 0% → 100% | 14d → none |  |  |
| 264 | **Poder recuperar un mensaje escrito por el supervisor a través del cuadro de texto, una vez que se le de a enviar:** | 2024-05-15 → 2024-04-30 A (-15d) | 2024-05-15 → 2024-05-10 A (-5d) | 1d? → 11d | 0% → 100% |  |  | was named <Tarea nueva>; resources Pablo → Aldehil |
| 265 | Implementar la interfaz de usuario para incluir un cuadro de texto y un botón de enviar en la ventana emergente creada en el requerimiento 3 del supervisor. | 2024-05-15 → 2024-05-10 A (-5d) | 2024-05-15 → 2024-05-10 A (-5d) | 1d? → 1d | 0% → 100% |  | none → 262 | was named <Tarea nueva>; constraint none → finish no earlier than 2024-05-10; resources Iván → Aldehil |
| 266 | Configurar un controlador de eventos para el botón de enviar. | 2024-05-15 → 2024-04-30 A (-15d) | 2024-05-15 → 2024-04-30 A (-15d) | 1d? → 1d | 0% → 100% |  | none → 262 | was named <Tarea nueva>; resources Iván → Aldehil |
| 267 | Capturar el texto ingresado por el supervisor en el cuadro de texto al presionar el botón de enviar. | 2024-05-15 → 2024-04-30 A (-15d) | 2024-05-15 → 2024-04-30 A (-15d) | 1d? → 1d | 0% → 100% |  | none → 262 | was named <Tarea nueva>; resources Iván → Aldehil |
| 268 | **Registrar el mensaje guardado en la base de datos:** | 2024-05-15 → 2024-05-07 A (-8d) | 2024-05-15 → 2024-05-08 A (-7d) | 1d? → 2d | 0% → 100% |  |  | was named <Tarea nueva>; resources Iván → Aldehil |
| 269 | Configurar el controlador en el API para insertar el mensaje en la BD. | 2024-05-15 → 2024-05-07 A (-8d) | 2024-05-15 → 2024-05-07 A (-8d) | 1d? → 1d | 0% → 100% |  | none → 262 | was named <Tarea nueva>; resources Iván → Aldehil |
| 270 | Configurar la conexión al endpoint, en la aplicación. | 2024-05-15 → 2024-05-07 A (-8d) | 2024-05-15 → 2024-05-07 A (-8d) | 1d? → 1d | 0% → 100% |  | none → 262 | was named <Tarea nueva>; resources Iván → Aldehil |
| 271 | Escribir la lógica para insertar el mensaje escrito por el supervisor en la base de datos al presionar el botón de enviar a través del endpoint configurado en la actividad anterior. | 2024-05-15 → 2024-05-07 A (-8d) | 2024-05-15 → 2024-05-08 A (-7d) | 1d? → 2d | 0% → 100% |  | none → 262 | was named <Tarea nueva> |
| 272 | **Mostrar un mensaje de confirmación al finalizar este proceso:** | 2024-05-15 → 2024-04-30 A (-15d) | 2024-05-15 → 2024-05-07 A (-8d) | 1d? → 7.5d | 0% → 100% |  |  | was named <Tarea nueva> |
| 273 | Diseñar un mensaje de confirmación que se muestre al supervisor una vez que el mensaje haya sido correctamente guardado en la base de datos. | 2024-05-15 → 2024-04-30 A (-15d) | 2024-05-15 → 2024-05-07 A (-8d) | 1d? → 1d | 0% → 100% |  | none → 262 | was named <Tarea nueva> |
| 274 | Implementar la lógica para mostrar este mensaje de confirmación en la interfaz de usuario. | 2024-05-15 → 2024-04-30 A (-15d) | 2024-05-15 → 2024-05-07 A (-8d) | 1d? → 1d | 0% → 100% |  | none → 262 | was named <Tarea nueva> |
| 275 | **En la pantalla principal se visualizará el nombre del cliente y el tiempo de espera de manera cronológica, con las llamadas que tienen más tiempo de espera ubicadas en la parte superior de la lista.** | 2024-05-15 → 2024-04-29 A (-16d) | 2024-05-15 → 2024-05-04 A (-11d) | 0d → 6d | 0% → 100% | 14d → none |  |  |
| 276 | **Visualizar el nombre del cliente y el tiempo de espera de cada llamada en espera en la pantalla principal.** | 2024-05-15 → 2024-04-29 A (-16d) | 2024-05-20 → 2024-05-04 A (-16d) | 4d → 6d | 0% → 100% | 10d → none |  | was named Se generan las peticiones correspondientes para agrupar la información de los KPIs, según corresponda a la elección de tiempo; resources Ingrid → Noh Ah |
| 277 | Extraer datos de llamadas en espera desde Connect. | 2024-05-15 → 2024-04-29 A (-16d) | 2024-05-15 → 2024-05-03 A (-12d) | 1d? → 5d | 0% → 100% |  |  | was named <Tarea nueva>; constraint none → start no earlier than 2024-04-29 |

| ID | Task | Start | Finish | Duration | Complete | Total float | Other |
| --- | --- | --- | --- | --- | --- | --- | --- |
| 279 | **La pantalla principal contara con un menú lateral en el que se visualicen las pantallas de navegación. En la pantalla principal se muestran los agentes del grupo, cada uno con un indicador acerca de su estado (disponible, en llamada, descanso o ausente).** | 2024-05-16 → 2024-04-26 A (-20d) | 2024-05-31 → 2024-05-15 A (-16d) | 12d → 17d | 0% → 100% |  |  |
| 280 | **Ver el menú lateral con las opciones de navegación del supervisor. Generar el diseño del menú** | 2024-05-15 → 2024-04-26 A (-19d) | 2024-05-15 → 2024-05-03 A (-12d) | 1d? → 6d | 0% → 100% |  | was named <Tarea nueva>; resources Iván → Ingrid |
| 281 | Crear las referencias a las páginas del menú | 2024-05-15 → 2024-04-26 A (-19d) | 2024-05-15 → 2024-04-30 A (-15d) | 1d? → 3d | 0% → 100% |  | was named <Tarea nueva>; constraint none → finish no earlier than 2024-04-30; resources Dani → Ingrid |
| 282 | Colocar las referencias | 2024-05-15 → 2024-05-01 A (-14d) | 2024-05-15 → 2024-05-02 A (-13d) | 1d? → 2d | 0% → 100% |  | was named <Tarea nueva>; constraint none → finish no earlier than 2024-05-02; resources Dani → Ingrid |
| 283 | Realizar el diseño adecuado al resto de la interfaz | 2024-05-15 → 2024-05-03 A (-12d) | 2024-05-15 → 2024-05-03 A (-12d) | 1d? → 1d | 0% → 100% |  | was named <Tarea nueva>; constraint none → start no earlier than 2024-05-03; resources Dani → Ingrid |
| 284 | **Ver la información de los agentes de manera cuadriculada, con datos que no provienen de la base de datos.** | 2024-05-15 → 2024-05-06 A (-9d) | 2024-05-15 A | 1d? → 9d | 0% → 100% |  | was named <Tarea nueva>; resources Dani → Ingrid |
| 285 | Generar el diseño de la cuadrícula | 2024-05-15 → 2024-05-06 A (-9d) | 2024-05-15 → 2024-05-08 A (-7d) | 1d? → 3d | 0% → 100% |  | was named <Tarea nueva>; constraint none → finish no earlier than 2024-05-08; resources Dani → Ingrid |
| 286 | Generar las rutas para acceder a la base de datos | 2024-05-15 → 2024-05-09 A (-6d) | 2024-05-15 → 2024-05-09 A (-6d) | 1d? → 1d | 0% → 100% |  | was named <Tarea nueva>; constraint none → start no earlier than 2024-05-09; resources Dani → Ingrid |
| 287 | Generar las tablas en la base de datos | 2024-05-15 → 2024-05-09 A (-6d) | 2024-05-15 → 2024-05-11 A (-4d) | 1d? → 2d | 0% → 100% |  | was named <Tarea nueva>; constraint none → finish no earlier than 2024-05-11; resources Dani → Ingrid |
| 288 | Colocar datos de prueba para probar la funcionalidad | 2024-05-15 → 2024-05-13 A (-2d) | 2024-05-15 → 2024-05-14 A (-1d) | 1d? → 2d | 0% → 100% |  | was named <Tarea nueva>; constraint none → finish no earlier than 2024-05-14; resources Dani → Ingrid |
| 289 | Asignar los colores adecuados para mostrar el funcionamiento de estas | 2024-05-15 A | 2024-05-15 A | 1d? → 1d | 0% → 100% |  | was named <Tarea nueva>; constraint none → start no earlier than 2024-05-15; resources Gerardo → Ingrid |
| 290 | **La información que se muestra de los agentes proviene de la base de datos.** | 2024-05-15 → 2024-05-04 A (-11d) | 2024-05-15 → 2024-05-08 A (-7d) | 1d? → 5d | 0% → 100% |  | was named <Tarea nueva>; resources Gerardo → Ingrid |
| 291 | Conectar la base de datos con el backend | 2024-05-15 → 2024-05-04 A (-11d) | 2024-05-15 → 2024-05-04 A (-11d) | 1d? → 1d | 0% → 100% |  | was named <Tarea nueva>; constraint none → start no earlier than 2024-05-04; resources Gerardo → Ingrid |
| 292 | Rellenar la base de datos con información para generar pruebas de la funcionalidad | 2024-05-15 → 2024-05-05 A (-10d) | 2024-05-15 → 2024-05-06 A (-9d) | 1d? → 2d | 0% → 100% |  | was named <Tarea nueva>; constraint none → finish no earlier than 2024-05-06; resources Gerardo → Ingrid |
| 293 | Colocar las referencias correspondientes a las rutas para la información de cada agente | 2024-05-15 → 2024-05-07 A (-8d) | 2024-05-15 → 2024-05-08 A (-7d) | 1d? → 2d | 0% → 100% |  | was named <Tarea nueva>; constraint none → start no earlier than 2024-05-07; resources Gerardo → Ingrid |
| 295 | **Se muestra con texto los diferentes apartados con el KPI que deberían de mostrar.** | 2024-05-15 → 2024-05-07 A (-8d) | 2024-05-15 → 2024-05-09 A (-6d) | 1d? → 3d | 0% → 100% |  | was named <Tarea nueva>; resources Dani → Ingrid |
| 296 | Generar el acomodo responsivo de los apartados de los KPIs | 2024-05-15 → 2024-05-07 A (-8d) | 2024-05-15 → 2024-05-08 A (-7d) | 1d? → 2d | 0% → 100% |  | was named <Tarea nueva>; constraint none → finish no earlier than 2024-05-08; resources Aldehil → Ingrid |
| 297 | Generar los contextos y clases para colocar los objetos de los KPIs | 2024-05-15 → 2024-05-08 A (-7d) | 2024-05-15 → 2024-05-09 A (-6d) | 1d? → 2d | 0% → 100% |  | was named <Tarea nueva>; constraint none → start no earlier than 2024-05-08; resources Aldehil → Ingrid |
| 298 | Colocar en texto cada uno de los KPIs en su espacio correspondiente | 2024-05-15 → 2024-05-09 A (-6d) | 2024-05-15 → 2024-05-09 A (-6d) | 1d? → 1d | 0% → 100% |  | was named <Tarea nueva>; resources Aldehil → Ingrid |
| 299 | **Las métricas y porcentajes mostrados son datos prueba** | 2024-05-15 → 2024-05-09 A (-6d) | 2024-05-15 → 2024-05-14 A (-1d) | 1d? → 5d | 0% → 100% |  | was named <Tarea nueva>; resources Aldehil → Ingrid |
| 300 | Crear las tablas necesarias para la información de los KPIs | 2024-05-15 → 2024-05-10 A (-5d) | 2024-05-15 → 2024-05-10 A (-5d) | 1d? → 1d | 0% → 100% |  | was named <Tarea nueva>; resources Aldehil → Ingrid |
| 301 | Generar las rutas y referencias necesarias para obtener la información de la base de dato | 2024-05-15 → 2024-05-09 A (-6d) | 2024-05-15 → 2024-05-14 A (-1d) | 1d? → 5d | 0% → 100% |  | was named <Tarea nueva>; constraint none → start no earlier than 2024-05-09; resources Aldehil → Ingrid |
| 302 | Colocar datos prueba en cada KPI para mostrar la funcionalidad de los colores | 2024-05-15 → 2024-05-09 A (-6d) | 2024-05-15 → 2024-05-11 A (-4d) | 1d? → 2d | 0% → 100% |  | was named <Tarea nueva>; constraint none → finish no earlier than 2024-05-11; resources Aldehil → Ingrid |
| 304 | **Las métricas y porcentajes visualizados provienen de la base de datos y de Amazon Connect, según corresponda.** | 2024-05-15 → 2024-05-08 A (-7d) | 2024-05-15 → 2024-05-14 A (-1d) | 1d? → 6d | 0% → 100% |  | was named <Tarea nueva>; resources Aldehil → Ingrid |
| 305 | Llenar la base de datos con los datos necesarios | 2024-05-15 → 2024-05-08 A (-7d) | 2024-05-15 → 2024-05-08 A (-7d) | 1d? → 1d | 0% → 100% |  | was named <Tarea nueva>; resources Aldehil → Ingrid |
| 306 | Colocar las referencias correspondientes para cada KPI respecto a la ruta para obtener la información correspondiente | 2024-05-15 → 2024-05-09 A (-6d) | 2024-05-15 → 2024-05-14 A (-1d) | 1d? → 5d | 0% → 100% |  | was named <Tarea nueva>; constraint none → start no earlier than 2024-05-09; resources Angel - Pobol → Ingrid |
| 307 | **Al seleccionar uno de los KPI en la pantalla se podrán visualizar datos históricos por medio de gráficas para elegir el tiempo deseado, siendo 60 días el máximo atrás que se puede elegir.** | 2024-05-15 → 2024-05-01 A (-14d) | 2024-06-03 → 2024-05-11 A (-23d) | 14d → 10d | 0% → 100% | 0d → none |  |
| 308 | **Visualizar el filtro de búsqueda, con su filtro por defecto de 15 minutos y poder elegir una fecha que vaya máximo 60 días atrás.** | 2024-05-15 → 2024-05-01 A (-14d) | 2024-05-15 → 2024-05-08 A (-7d) | 1d? → 8d | 0% → 100% |  | was named <Tarea nueva>; resources Noh Ah → Ingrid |
| 309 | Colocar un botón de Ver más | 2024-05-15 → 2024-05-01 A (-14d) | 2024-05-15 → 2024-05-01 A (-14d) | 1d? → 1d | 0% → 100% |  | was named <Tarea nueva>; resources Noh Ah → Ingrid |
| 310 | Colocar el filtro de selección de búsqueda | 2024-05-15 → 2024-05-02 A (-13d) | 2024-05-15 → 2024-05-02 A (-13d) | 1d? → 1d | 0% → 100% |  | was named <Tarea nueva>; constraint none → start no earlier than 2024-05-02; resources Noh Ah → Ingrid |
| 311 | Generar la vista con la gráfica, en lugar de la métrica anteriormente visualizada | 2024-05-15 → 2024-05-03 A (-12d) | 2024-05-15 → 2024-05-03 A (-12d) | 1d? → 1d | 0% → 100% |  | was named <Tarea nueva>; constraint none → start no earlier than 2024-05-03; resources Noh Ah → Ingrid |
| 312 | Colocar gráficas con datos prueba para verificar la visualización | 2024-05-15 → 2024-05-06 A (-9d) | 2024-05-15 → 2024-05-06 A (-9d) | 1d? → 1d | 0% → 100% |  | was named <Tarea nueva>; constraint none → start no earlier than 2024-05-06; resources Noh Ah → Ingrid |
| 313 | Generar los queries necesarios para realizar la busqueda | 2024-05-15 → 2024-05-07 A (-8d) | 2024-05-15 → 2024-05-08 A (-7d) | 1d? → 2d | 0% → 100% |  | was named <Tarea nueva>; constraint none → finish no earlier than 2024-05-08; resources Gerardo → Ingrid |
| 314 | **Se visualizan las gráficas correspondientes al KPI elegido, con su filtro por defecto.** | 2024-05-15 → 2024-05-03 A (-12d) | 2024-05-15 → 2024-05-11 A (-4d) | 1d? → 8d | 0% → 100% |  | was named <Tarea nueva>; resources Gerardo → Ingrid |
| 315 | Se colocan las rutas adecuadas para poder hacer los queries necesarios | 2024-05-15 → 2024-05-03 A (-12d) | 2024-05-15 → 2024-05-04 A (-11d) | 1d? → 2d | 0% → 100% |  | was named <Tarea nueva>; resources Gerardo → Ingrid |
| 316 | Se ingresan los datos necesarias para poder realizar las pruebas dentro de la base de datos | 2024-05-15 → 2024-05-07 A (-8d) | 2024-05-15 → 2024-05-08 A (-7d) | 1d? → 2d | 0% → 100% |  | was named <Tarea nueva>; constraint none → finish no earlier than 2024-05-08; resources Gerardo → Ingrid |
| 317 | Se hace uso únicamente el llamado de información de los últimos 15 minutos | 2024-05-15 → 2024-05-08 A (-7d) | 2024-05-15 → 2024-05-11 A (-4d) | 1d? → 3d | 0% → 100% |  | was named <Tarea nueva>; constraint none → finish no earlier than 2024-05-11; resources Gerardo → Ingrid |
| 319 | Se realiza la prueba de selección del tiempo con la información correspondiente. | 2024-05-15 → 2024-05-06 A (-9d) | 2024-05-15 → 2024-05-10 A (-5d) | 1d? → 5d | 0% → 100% |  | was named <Tarea nueva>; resources Aldehil → Ingrid |
| 321 | **El supervisor puede acceder al perfil de cada agente desde un botón en el menú lateral. Podrá ver los datos generales del agente (nombre, imagen, horario laboral) y los KPIs de su atención de llamadas en un día específico (llamadas respondidas, abandonada** | 2024-05-15 → 2024-05-01 A (-14d) | 2024-05-15 → 2024-05-14 A (-1d) | 0d → 13d | 0% → 100% | 14d → none |  |
| 329 | **El superviso puede acceder a un apartado en donde podrá contetar unas preguntas las cuales podrán evaluar el desempeño del agente. Y en cas de necesitar ser más objetivo durante su comentario, complementarlo con un comentario más detallado.** | 2024-05-15 → 2024-04-30 (-15d) | 2024-05-15 A | 0d → 14.5d | 0% → 100% |  |  |
